	Activity ID	Activity Name	T+1 Start (BL1)	T+1 Finish (BL1)	T-0 Start (BL0)	T-0 Finish (BL0)	rsrc_id	rsrc_name	no_change_start	no_change_finish	moved_out_start	moved_out_finish	T-0 Start (BL0)	T-0 Finish (BL0)
1	 001.0 ALT1d	Proposed Alternative (WEC) - SS Weld Inspectability - Process and submit to NRC	2016-10-20	2016-11-04	2016-10-20	2016-12-16	PSE21	Troficanto-PSE	False	False	False	True	False	False
2	 004.0 Open Item 1	Maintenance Rule Procedure Benchmarking (Duke)	2016-11-01	2016-11-21	2016-11-07	2016-11-21	PSE29	McLellan-PSE	True	True	False	False	True	True
3	 004.0 Open Item 2	Maintenance Rule Procedure Benchmarking (XCel)	2016-11-22	2016-12-14	2016-11-11	2016-12-05	PSE29	McLellan-PSE	True	False	False	False	True	False
4	 004.0 Open Item 5	Add Ops MRule training (if any) to NND-OR-0001 Rev5 Enclosure E	2016-11-02	2016-11-22	2016-11-09	2016-11-29	PSE29	McLellan-PSE	True	True	False	False	True	True
5	 004.0 Open Item 6	PSE/LIC determine best inspection expectations	2016-11-02	2016-11-22	2016-11-09	2016-11-29	PSE29	McLellan-PSE	True	True	False	False	True	True
6	 004.0 PAD20	Program Development 50% Review Actions Closed	2016-09-15	2016-11-01	2016-09-15	2016-12-05	PSE29	McLellan-PSE	False	False	False	True	False	False
7	 006.0 Dev 4	Training Material Developed and Approved	2016-11-17	2016-11-17	2016-12-19	2016-12-19	DE09	Young-DE	False	False	True	True	False	False
8	 006.0 Dev 6	Conduct Program Development Complete Review	2016-11-17	2016-11-17	2016-12-19	2016-12-19	DE09	Young-DE	False	False	True	True	False	False
9	 006.0 Dev 7	Program Development Complete Review Actions Closed	2016-11-18	2016-12-12	2016-12-20	2017-01-12	DE09	Young-DE	False	False	True	False	False	False
10	 009.0 Open Item 001	Track Unit 1 SureSense (OLM) Software Deployment	2016-11-01	2016-11-21	2016-11-01	2016-11-21	PSE03	Ramage-PSE	True	True	False	False	True	True
11	 009.0 PAD20	Program Development 50% Review Actions Closed	2016-10-18	2016-11-07	2016-10-18	2016-11-22	PSE03	Ramage-PSE	False	True	False	False	False	True
12	 009.0 PDEV02	Program Procedures Developed and Approved (Procedures Owned by Other Stakeholders)	2017-08-14	2017-08-14	2016-11-15	2016-11-15	PSE03	Ramage-PSE	False	False	False	False	True	True
13	 012.0 PAD20	Program Development 50% Review Actions Closed	2016-09-14	2016-11-01	2016-09-14	2016-12-01	PSE11	Jacome-PSE	False	False	False	True	False	False
14	 012.0 PAD21	Open Items from Program Development 50% Review Identified in Schedule	2016-09-14	2016-11-01	2016-09-14	2016-12-01	PSE11	Jacome-PSE	False	False	False	True	False	False
15	 013.0 PDEV01	Program Procedures Developed and Approved (Procedures Owned by Program Developer)	2016-11-22	2016-11-22	2016-12-09	2016-12-09	PSE22	Garrett-PSE	False	False	True	True	False	False
16	 015.0 PDEV03	Program Specific Training Material and Qualifications Developed and Approved	2016-11-15	2016-11-15	2016-12-15	2016-12-15	PSE17	Metzger-PSE	False	False	True	True	False	False
17	 018.0 Open Item 1	Review Design Report on Holder Tubes	2016-10-07	2016-11-17	2016-10-07	2017-02-01	PSE06	Terry-PSE	False	False	False	True	False	False
18	 018.0 Open Item 2	Who will load the capsules and when?	2016-10-07	2016-11-17	2016-10-07	2017-02-01	PSE06	Terry-PSE	False	False	False	True	False	False
19	 018.0 Open Item 3	A materials engineer will be needed to review capsule report	2016-10-07	2016-11-17	2016-10-07	2016-11-15	PSE06	Terry-PSE	False	True	False	False	False	True
20	 018.0 Open Item 4	Confirm there is a bracket in the SFP to hand capsule tool	2016-10-07	2016-11-17	2016-10-07	2017-02-01	PSE06	Terry-PSE	False	False	False	True	False	False
21	 018.0 Open Item 5	Will a Transport Can be supplied for the capsules?	2016-10-07	2016-11-17	2016-10-07	2017-02-01	PSE06	Terry-PSE	False	False	False	True	False	False
22	 018.0 PIMP09	Open Items Closed	2016-11-18	2016-11-18	2016-11-30	2016-11-30	PSE06	Terry-PSE	True	True	False	False	True	True
23	 020.0 PDEV09	"Draft ""Program Development Phase Completion Document"""	2016-10-26	2016-11-15	2016-10-26	2016-11-09	PSE02	Shank-PSE	False	True	False	False	False	True
24	 020.0 PDEV10	Conduct Program Development Complete Review	2016-11-16	2016-11-16	2016-11-10	2016-11-10	PSE02	Shank-PSE	True	True	False	False	True	True
25	 020.0 PDEV11	Program Development Complete Review Actions Closed	2016-11-17	2016-12-09	2016-11-18	2016-12-12	PSE02	Shank-PSE	True	False	False	False	True	False
26	 020.0 PDEV12	Open Items from Program Development Complete Review Identified in Schedule	2016-11-17	2016-11-23	2016-11-18	2016-11-30	PSE02	Shank-PSE	True	True	False	False	True	True
27	 021.0 Open Item 1	Trending/Ovation - How will leak rates be documented and kept track of?	2016-10-14	2016-11-28	2016-10-14	2016-11-15	PSE06	Terry-PSE	False	True	False	False	False	True
28	 021.0 Open Item 3	The impacts of changing the amount of unidentified from 1gpm to .5gpm	2016-10-07	2016-11-17	2016-10-07	2016-11-15	PSE06	Terry-PSE	False	True	False	False	False	True
29	 024.0 DEV14	Provide PM activities and frequencies for FPP SSC’s	2016-11-01	2017-05-22	2016-12-01	2017-06-20	PSE34	FP-PSE	False	False	True	False	False	False
30	 024.0 DEV2	Coordinate purchase orders for resources with Procurement	2016-06-15	2016-11-01	2016-06-15	2016-12-01	PSE34	FP-PSE	False	False	False	True	False	False
31	 024.0 DEV227	Provide acceptance criteria/program health criteria for monitoring tests inspections	2016-11-01	2017-05-22	2016-12-01	2017-06-20	PSE34	FP-PSE	False	False	True	False	False	False
32	 024.0 DEV228	Identify and Provide program SSC trending and reporting requirements (walkdowns, failure mechanisms)	2016-11-01	2017-09-26	2016-12-01	2017-10-24	PSE34	FP-PSE	False	False	True	False	False	False
33	 024.0 DEV229	Provide benchmark plan for maintaining program excellence standards	2016-11-01	2017-09-26	2016-12-01	2017-10-24	PSE34	FP-PSE	False	False	True	False	False	False
34	 024.0 DEV231	Coordinate with Training & Maintenance to Develop & Implement Maintenance Training for FPS System	2016-11-01	2016-11-07	2016-12-01	2016-12-07	PSE34	FP-PSE	False	False	True	True	False	False
35	 024.0 DEV232	Coordinate with Training & ERU to Develop & Implement Inspection and Testing Training for FPS System	2016-11-01	2016-11-07	2017-03-01	2017-03-07	ERU2	ERU	False	False	True	True	False	False
36	 024.0 DEV233	Coordinate with Training to Develop & Implement General Engineering Population Training	2016-11-01	2017-02-03	2016-12-01	2017-03-03	PSE34	FP-PSE	False	False	True	False	False	False
37	 024.0 DEV234	Coordinate with Training & ERU to Develop and Implement Fire Brigade Training	2016-11-01	2017-02-03	2017-03-01	2017-05-31	ERU2	ERU	False	False	True	False	False	False
38	 024.0 DEV7	Provide post maintenance testing criteria for maintenance activities	2016-11-01	2017-06-06	2016-12-01	2017-07-05	PSE34	FP-PSE	False	False	True	False	False	False
39	 024.0 DP9	Identify supporting content and inputs for development of FPP Training Procedures	2016-06-27	2016-11-01	2016-06-27	2017-03-31	ERU2	ERU	False	False	False	True	False	False
40	 037.3180	NND-AP-0006 for Security Trainers	2016-11-01	2016-12-06	2016-11-04	2017-01-18	N1	NPS	True	False	False	False	True	False
41	 037.3756	Implement New Range Improvement	2016-11-14	2017-02-28	2016-11-14	2017-02-28	N1	NPS	True	False	False	False	True	False
42	 042.0 Open 001	PSE/Maintenance Procure SG Special Tooling	2016-11-01	2016-11-21	2017-02-01	2017-02-21	PSE19	McCorvey-PSE	False	False	True	True	False	False
43	 062.0 PIMP03	Personnel Qualified to Support Program	2016-11-02	2016-11-02	2016-11-29	2016-11-29	E46	Van Sicklen-F&A	True	True	False	False	True	True
44	 062.0 PIMP11	Program Gaps Resolved	2016-10-31	2016-11-23	2016-10-31	2016-11-30	E46	Van Sicklen-F&A	False	True	False	False	False	True
45	 097.0 PDEV01	Program Procedures Developed and Approved (Procedures Owned by Program Developer)	2016-11-03	2016-11-03	2016-12-01	2016-12-01	PSE07	Free-PSE	False	False	True	True	False	False
46	 097.0 PDEV09	"Draft ""Program Development Phase Completion Document"""	2016-11-03	2016-11-21	2016-11-28	2016-11-30	PSE07	Free-PSE	True	True	False	False	True	True
47	 097.0 PDEV10	Conduct Program Development Complete Review	2016-11-22	2016-11-30	2016-12-01	2016-12-07	PSE07	Free-PSE	False	False	True	True	False	False
48	 099.0 Open Item 001	Work with Design Engineering to ensure Welding Records/Documentation included on standard Infor Turnover punchlist	2016-11-08	2016-12-21	2016-11-01	2016-11-01	PSE07	Free-PSE	True	False	False	False	True	True
49	 099.0 Open Item 002	Maintenance to Determine Maintenanace Training Need Date for Qualified Welders	2016-11-08	2016-11-30	2016-11-04	2016-11-28	MMR	Mech supv	True	True	False	False	True	True
50	 099.0 Open Item 003	Gap Analysis of VCS Unit 1 qualified WPSs	2016-11-08	2017-02-06	2016-11-01	2017-01-30	PSE07	Free-PSE	True	False	False	False	True	False
51	 099.0 Open Item 004	LAR - Confirm no impact on Program/Procedures or make changes as necessary			2016-11-01	2016-11-18	PSE07	Free-PSE	False	False	False	False	True	True
52	 099.0 Open Item 005	LIC Commitments - Ensure listed commitments for 099.0 are reviewed, documented, confirmed			2016-11-01	2016-11-18	PSE07	Free-PSE	False	False	False	False	True	True
53	 099.0 Open Item 006	Review ITAACs assigned to PSE for Welding Program impact			2016-11-01	2016-11-18	PSE07	Free-PSE	False	False	False	False	True	True
54	 099.0 PAD20	Program Development 50% Review Actions Closed	2016-10-31	2016-11-09	2016-10-31	2016-11-09	PSE07	Free-PSE	False	True	False	False	False	True
55	 099.0 PIMP05 U3	Software Procured and Implemented	2016-11-01	2016-11-01	2017-03-13	2017-03-13	PSE07	Free-PSE	False	False	True	True	False	False
56	 106.0 Open Item 1	Verify Rotork applicability for MOV Program	2016-11-02	2016-11-22	2016-11-15	2016-11-23	PSE16	Felch-PSE	True	True	False	False	True	True
57	 106.0 PAD20	Program Development 50% Review Actions Closed	2016-09-08	2016-11-01	2016-09-08	2016-11-10	PSE16	Felch-PSE	False	True	False	False	False	True
58	 106.0 PAD21	Open Items from Program Development 50% Review Identified in Schedule	2016-09-08	2016-11-01	2016-09-08	2016-11-10	PSE16	Felch-PSE	False	True	False	False	False	True
59	 106.0 PIMP07	Purchase Requisitions for Implementation Generated	2016-11-02	2016-11-22	2016-12-01	2016-12-21	PSE16	Felch-PSE	False	False	True	True	False	False
60	 106.0 PIMP08	Procurements Closed (incl. Spare Parts)	2016-11-23	2016-11-23	2016-12-22	2016-12-22	PSE16	Felch-PSE	False	False	True	True	False	False
61	 107.0 EP35	AOV Program - Expert Panel #9 Attachment Review	2016-10-31	2016-11-07	2016-10-31	2016-11-07	PSE06	Terry-PSE	False	True	False	False	False	True
62	 107.0 EP36	AOV Program - Incorporate Expert Panel #9 Comments	2016-11-08	2016-11-09	2016-11-07	2016-11-09	PSE06	Terry-PSE	True	True	False	False	True	True
63	 107.0 EP37	AOV Program - Expert Panel #9 Meeting	2016-11-10	2016-11-10	2016-11-10	2016-11-10	PSE16	Felch-PSE	True	True	False	False	True	True
64	 107.0 EP38	AOV Program - Prepare Expert Panel #10 Attachments	2016-11-10	2016-11-17	2016-11-15	2016-11-21	PSE06	Terry-PSE	True	True	False	False	True	True
65	 107.0 EP39	AOV Program - Expert Panel #10 Attachment Review	2016-11-18	2016-11-28	2016-11-23	2016-11-28	PSE06	Terry-PSE	True	True	False	False	True	True
66	 107.0 EP40	AOV Program - Incorporate Expert Panel #10 Comments	2016-11-29	2016-11-30	2016-11-29	2016-11-30	PSE06	Terry-PSE	True	True	False	False	True	True
67	 107.0 EP42	AOV Program - Prepare Expert Panel #11 Attachments	2016-11-17	2016-11-23	2016-11-21	2016-11-28	PSE06	Terry-PSE	True	True	False	False	True	True
68	 107.0 EP46	AOV Program - Compile Expert Panel Challenge Meeting Attachments	2016-11-23	2016-12-01	2016-11-21	2016-12-01	PSE06	Terry-PSE	True	False	False	False	True	False
69	 107.0 PAD20	Program Development 50% Review Actions Closed	2016-09-08	2016-11-01	2016-09-08	2016-12-08	PSE16	Felch-PSE	False	False	False	True	False	False
70	 107.0 PAD21	Open Items from Program Development 50% Review Identified in Schedule	2016-09-08	2016-11-01	2016-09-08	2016-12-08	PSE16	Felch-PSE	False	False	False	True	False	False
71	 107.0 PIMP07	Purchase Requisitions for Implementation Generated	2016-11-02	2016-11-22	2016-12-09	2017-01-03	PSE16	Felch-PSE	False	False	True	True	False	False
72	 107.0 PIMP08	Procurements Closed (incl. Spare Parts)	2016-11-23	2016-11-23	2017-01-04	2017-01-04	PSE16	Felch-PSE	False	False	True	True	False	False
73	 119.0 PIMP05 U2	Software Procured and Implemented	2017-02-08	2017-02-08	2016-11-28	2016-11-28	PSE33	Yang-PSE	False	False	False	False	True	True
74	 119.0 PIMP05 U3	Software Procured and Implemented	2017-02-08	2017-02-08	2016-11-28	2016-11-28	PSE33	Yang-PSE	False	False	False	False	True	True
75	 119.0 PIMP08	Procurements Closed (incl. Spare Parts)	2016-11-01	2016-11-01	2016-11-01	2016-11-01	PSE33	Yang-PSE	True	True	False	False	True	True
76	 121.6 PAD20	Program Development 50% Review Actions Closed	2016-09-23	2016-11-04	2016-09-23	2016-11-11	PSE05	Simmons	False	True	False	False	False	True
77	 121.6 PDEV02	Program Procedures Developed and Approved (Procedures Owned by Other Stakeholders)	2016-10-07	2016-11-30	2016-10-07	2016-11-29	PSE05	Simmons	False	True	False	False	False	True
78	 121.6 PDEV03	Program Specific Training Material and Qualifications Developed and Approved	2016-10-07	2016-11-04	2016-10-07	2016-11-04	PSE05	Simmons	False	True	False	False	False	True
79	 121.6 PDEV03.1	Q SWYD/SFMR Access - Switchyard Qualification	2016-10-07	2016-11-03	2016-10-07	2016-12-05	DM20	DM Trn	False	False	False	True	False	False
80	 121.6 PDEV09	"Draft ""Program Development Phase Completion Document"""	2016-11-10	2016-11-14	2016-11-14	2016-11-16	PSE05	Simmons	True	True	False	False	True	True
81	 121.6 PDEV10	Conduct Program Development Complete Review	2016-12-01	2016-12-05	2016-11-17	2016-11-21	PSE05	Simmons	False	False	False	False	True	True
82	 121.6 PDEV11	Program Development Complete Review Actions Closed	2016-12-06	2016-12-09	2016-11-22	2016-12-05	PSE05	Simmons	False	False	False	False	True	False
83	 122.1 PDEV03	Program Specific Training Material and Qualifications Developed and Approved	2016-11-15	2016-11-15	2016-12-15	2016-12-15	PSE17	Metzger-PSE	False	False	True	True	False	False
84	 122.2 PDEV05	Purchase Requisitions for Development Generated	2016-10-26	2016-11-15	2016-10-26	2016-11-16	PSE20	Post-PSE	False	True	False	False	False	True
85	 122.2 PDEV06	Spare Parts - Evaluate List and Identify Gaps	2016-11-01	2016-11-21	2016-11-01	2016-12-02	PSE20	Post-PSE	True	False	False	True	True	False
86	 122.2 PDEV07	Spare Parts - Gap Activities Identified in Schedule	2016-11-22	2016-12-01	2016-11-30	2016-12-07	PSE20	Post-PSE	True	False	False	False	True	False
87	 122.3 PDEV01	Program Procedures Developed and Approved (Procedures Owned by Program Developer)	2016-11-16	2016-11-16	2016-12-15	2016-12-15	PSE28	Greene-PSE	False	False	True	True	False	False
88	 122.3 PDEV03	Program Specific Training Material and Qualifications Developed and Approved	2016-11-02	2016-11-02	2016-12-02	2016-12-02	PSE28	Greene-PSE	False	False	True	True	False	False
89	 122.5 PDEV09	"Draft ""Program Development Phase Completion Document"""	2016-10-26	2016-11-15	2016-10-26	2016-11-30	PSE02	Shank-PSE	False	True	False	False	False	True
90	 122.5 PDEV10	Conduct Program Development Complete Review	2016-11-16	2016-11-22	2016-12-07	2016-12-07	PSE02	Shank-PSE	False	False	True	True	False	False
91	 122.5 PDEV11	Program Development Complete Review Actions Closed	2016-11-23	2016-12-15	2016-12-08	2016-12-28	PSE02	Shank-PSE	False	False	True	False	False	False
92	 122.8 PAD03	Regulatory Basis of Program Defined	2016-12-01	2016-12-14	2016-11-04	2016-11-04	PSE04	Schmick-PSE	False	False	False	False	True	True
93	 122.8 PAD04	Industry Bases of Program Reviewed	2016-12-01	2016-12-14	2016-11-04	2016-11-04	PSE04	Schmick-PSE	False	False	False	False	True	True
94	 122.8 PAD05	Analysis Portion of Program Development Phase Complete	2016-12-15	2016-12-15	2016-11-04	2016-11-04	PSE04	Schmick-PSE	False	False	False	False	True	True
95	 122.8 PAD06	Stakeholders Identified & Stakeholder Analysis Performed	2016-12-15	2016-12-30	2016-11-04	2016-11-07	PSE04	Schmick-PSE	False	False	False	False	True	True
96	 122.8 PAD07	Program Procedures Identified	2016-12-15	2016-12-21	2016-11-04	2016-11-18	PSE04	Schmick-PSE	False	False	False	False	True	True
97	 122.8 PAD08	Program Specific Training Material and Qualifications Identified	2016-12-15	2016-12-21	2016-11-04	2016-11-07	PSE04	Schmick-PSE	False	False	False	False	True	True
98	 122.8 PAD09	NRC/Code Inspections Required for Program Identified	2016-12-15	2016-12-21	2016-11-04	2016-11-18	PSE04	Schmick-PSE	False	False	False	False	True	True
99	 122.8 PAD10	ITAACS Identified	2016-12-15	2016-12-21	2016-11-04	2016-11-07	PSE04	Schmick-PSE	False	False	False	False	True	True
100	 122.8 PAD11	Commitments and COL Requirements Identified	2016-12-15	2016-12-21	2016-11-04	2016-11-07	PSE04	Schmick-PSE	False	False	False	False	True	True
101	 122.8 PAD12	Start-Up/Pre-Op/ITP Testing, Monitoring, and Inspection Requirements Identified	2016-12-15	2016-12-30	2016-11-04	2016-11-18	PSE04	Schmick-PSE	False	False	False	False	True	True
102	 122.8 PAD14	Information Turnover Needs Identified	2016-12-15	2016-12-30	2016-11-04	2016-11-08	PSE04	Schmick-PSE	False	False	False	False	True	True
103	 122.8 PAD15	Benchmarking/Self-Assessment Needs Identified	2016-12-15	2016-12-21	2016-11-04	2016-11-08	PSE04	Schmick-PSE	False	False	False	False	True	True
104	 122.8 PAD16	Procurements Identified	2016-12-15	2016-12-21	2016-11-04	2016-11-07	PSE04	Schmick-PSE	False	False	False	False	True	True
105	 122.8 PAD17	Program Scope Defined	2017-01-03	2017-01-03	2016-11-18	2016-11-18	PSE04	Schmick-PSE	False	False	False	False	True	True
106	 122.8 PAD18	Develop Program Schedule	2017-01-03	2017-01-16	2016-11-18	2016-12-05	PSE04	Schmick-PSE	False	False	False	False	True	False
107	 122.9 PAD03	Regulatory Basis of Program Defined	2016-12-01	2016-12-14	2016-11-04	2016-11-04	PSE04	Schmick-PSE	False	False	False	False	True	True
108	 122.9 PAD04	Industry Bases of Program Reviewed	2016-12-01	2016-12-14	2016-11-04	2016-11-04	PSE04	Schmick-PSE	False	False	False	False	True	True
109	 122.9 PAD05	Analysis Portion of Program Development Phase Complete	2016-12-15	2016-12-15	2016-11-04	2016-11-07	PSE04	Schmick-PSE	False	False	False	False	True	True
110	 122.9 PAD06	Stakeholders Identified & Stakeholder Analysis Performed	2016-12-15	2016-12-30	2016-11-04	2016-11-07	PSE04	Schmick-PSE	False	False	False	False	True	True
111	 122.9 PAD07	Program Procedures Identified	2016-12-15	2016-12-21	2016-11-04	2016-11-18	PSE04	Schmick-PSE	False	False	False	False	True	True
112	 122.9 PAD08	Program Specific Training Material and Qualifications Identified	2016-12-15	2016-12-21	2016-11-04	2016-11-07	PSE04	Schmick-PSE	False	False	False	False	True	True
113	 122.9 PAD09	NRC/Code Inspections Required for Program Identified	2016-12-15	2016-12-21	2016-11-04	2016-11-18	PSE04	Schmick-PSE	False	False	False	False	True	True
114	 122.9 PAD10	ITAACS Identified	2016-12-15	2016-12-21	2016-11-04	2016-11-07	PSE04	Schmick-PSE	False	False	False	False	True	True
115	 122.9 PAD11	Commitments and COL Requirements Identified	2016-12-15	2016-12-21	2016-11-04	2016-11-07	PSE04	Schmick-PSE	False	False	False	False	True	True
116	 122.9 PAD12	Start-Up/Pre-Op/ITP Testing, Monitoring, and Inspection Requirements Identified	2016-12-15	2016-12-30	2016-11-04	2016-11-18	PSE04	Schmick-PSE	False	False	False	False	True	True
117	 122.9 PAD13	Software Needs Identified	2016-12-15	2016-12-21	2016-10-31	2016-11-04	PSE04	Schmick-PSE	False	False	False	False	False	True
118	 122.9 PAD14	Information Turnover Needs Identified	2016-12-15	2016-12-30	2016-11-04	2016-11-08	PSE04	Schmick-PSE	False	False	False	False	True	True
119	 122.9 PAD15	Benchmarking/Self-Assessment Needs Identified	2016-12-15	2016-12-21	2016-11-04	2016-11-08	PSE04	Schmick-PSE	False	False	False	False	True	True
120	 122.9 PAD16	Procurements Identified	2016-12-15	2016-12-21	2016-11-04	2016-11-07	PSE04	Schmick-PSE	False	False	False	False	True	True
121	 122.9 PAD17	Program Scope Defined	2017-01-03	2017-01-03	2016-11-18	2016-11-18	PSE04	Schmick-PSE	False	False	False	False	True	True
122	 122.9 PAD18	Develop Program Schedule	2017-01-03	2017-01-16	2016-11-18	2016-12-05	PSE04	Schmick-PSE	False	False	False	False	True	False
123	 123.1 PDEV03	Program Specific Training Material and Qualifications Developed and Approved	2016-12-08	2016-12-08	2016-11-15	2016-12-05	PSE03	Ramage-PSE	False	False	False	False	True	False
124	 123.1 PDEV05	Purchase Requisitions for Development Generated	2016-11-01	2016-11-21	2016-11-01	2016-11-03	PSE03	Ramage-PSE	True	True	False	False	True	True
125	 123.1 PDEV09	"Draft ""Program Development Phase Completion Document"""	2016-12-08	2016-12-13	2016-11-15	2016-11-21	PSE03	Ramage-PSE	False	False	False	False	True	True
126	 123.1 PDEV10	Conduct Program Development Complete Review	2016-12-14	2016-12-16	2016-11-28	2016-12-05	PSE03	Ramage-PSE	False	False	False	False	True	False
127	 123.1 PIMP07	Purchase Requisitions for Implementation Generated	2016-10-18	2016-11-07	2016-10-18	2016-11-03	PSE03	Ramage-PSE	False	True	False	False	False	True
128	 123.1 PIMP08	Procurements Closed (incl. Spare Parts)	2016-11-22	2016-11-22	2016-11-07	2016-11-08	PSE03	Ramage-PSE	True	True	False	False	True	True
129	 123.3 PDEV03	Program Specific Training Material and Qualifications Developed and Approved	2016-11-02	2016-11-02	2016-12-02	2016-12-02	PSE28	Greene-PSE	False	False	True	True	False	False
130	 124.0 Open Item 1	Evaluate and Determine Ownership of Procedures Needed for 124.0 Development & Implementation	2016-10-17	2016-11-04	2016-10-17	2016-11-09	PSE29	McLellan-PSE	False	True	False	False	False	True
131	 124.0 PAD20	Program Development 50% Review Actions Closed	2016-09-06	2016-11-01	2016-09-06	2016-11-21	PSE29	McLellan-PSE	False	True	False	False	False	True
132	 124.0 PAD21	Open Items from Program Development 50% Review Identified in Schedule	2016-09-23	2016-11-01	2016-09-23	2016-11-21	PSE29	McLellan-PSE	False	True	False	False	False	True
133	 124.0 PDEV01	Program Procedures Developed and Approved (Procedures Owned by Program Developer)	2016-11-07	2016-11-07	2016-12-06	2016-12-06	PSE29	McLellan-PSE	False	False	True	True	False	False
134	 124.0 PDEV02	Program Procedures Developed and Approved (Procedures Owned by Other Stakeholders)	2016-11-07	2016-11-07	2016-11-10	2016-11-10	PSE29	McLellan-PSE	True	True	False	False	True	True
135	 124.0 PDEV05	Purchase Requisitions for Development Generated	2016-10-14	2016-11-03	2016-10-14	2016-11-15	PSE29	McLellan-PSE	False	True	False	False	False	True
136	 124.0 PDEV06	Spare Parts - Evaluate List and Identify Gaps	2016-11-02	2016-11-22	2016-11-09	2016-11-28	PSE29	McLellan-PSE	True	True	False	False	True	True
137	 124.0 PDEV07	Spare Parts - Gap Activities Identified in Schedule	2016-11-23	2016-12-01	2016-11-29	2016-12-06	PSE29	McLellan-PSE	True	False	False	False	True	False
138	 124.0 PIMP01	Procedures Implemented	2016-11-07	2016-11-07	2017-12-13	2017-12-13	PSE29	McLellan-PSE	False	False	True	True	False	False
139	 508.0 PDEV01	Program Procedures Developed and Approved (Procedures Owned by Program Developer)	2017-02-08	2017-02-08	2016-11-21	2016-11-21	PSE06	Terry-PSE	False	False	False	False	True	True
140	 514.0 PAD02	Intent of Program Defined	2016-11-01	2016-11-02	2016-11-01	2016-11-02	PSE17	Metzger-PSE	True	True	False	False	True	True
141	 514.0 PAD03	Regulatory Basis of Program Defined	2016-11-01	2016-11-04	2016-11-01	2016-11-04	PSE17	Metzger-PSE	True	True	False	False	True	True
142	 514.0 PAD04	Industry Bases of Program Reviewed	2016-11-01	2016-11-04	2016-11-01	2016-11-04	PSE17	Metzger-PSE	True	True	False	False	True	True
143	 514.0 PAD05	Analysis Portion of Program Development Phase Complete	2016-11-07	2016-11-07	2016-11-08	2016-11-08	PSE17	Metzger-PSE	True	True	False	False	True	True
144	 514.0 PAD06	Stakeholders Identified & Stakeholder Analysis Performed	2016-11-07	2016-11-10	2016-11-08	2016-11-08	PSE17	Metzger-PSE	True	True	False	False	True	True
145	 514.0 PAD07	Program Procedures Identified	2016-11-07	2016-11-07	2016-11-09	2016-11-17	PSE17	Metzger-PSE	True	True	False	False	True	True
146	 514.0 PAD08	Program Specific Training Material and Qualifications Identified	2016-11-07	2016-11-07	2016-11-09	2016-11-09	PSE17	Metzger-PSE	True	True	False	False	True	True
147	 514.0 PAD09	NRC/Code Inspections Required for Program Identified	2016-11-07	2016-11-07	2016-11-08	2016-11-09	PSE17	Metzger-PSE	True	True	False	False	True	True
148	 514.0 PAD10	ITAACS Identified	2016-11-07	2016-11-07	2016-11-08	2016-11-09	PSE17	Metzger-PSE	True	True	False	False	True	True
149	 514.0 PAD11	Commitments and COL Requirements Identified	2016-11-07	2016-11-07	2016-11-08	2016-11-09	PSE17	Metzger-PSE	True	True	False	False	True	True
150	 514.0 PAD12	Start-Up/Pre-Op/ITP Testing, Monitoring, and Inspection Requirements Identified	2016-11-07	2016-11-10	2016-11-09	2016-11-17	PSE17	Metzger-PSE	True	True	False	False	True	True
151	 514.0 PAD13	Software Needs Identified	2016-11-07	2016-11-08	2016-11-09	2016-11-09	PSE17	Metzger-PSE	True	True	False	False	True	True
152	 514.0 PAD14	Information Turnover Needs Identified	2016-11-07	2016-11-10	2016-11-09	2016-11-17	PSE17	Metzger-PSE	True	True	False	False	True	True
153	 514.0 PAD15	Benchmarking/Self-Assessment Needs Identified	2016-11-07	2016-11-07	2016-11-09	2016-11-09	PSE17	Metzger-PSE	True	True	False	False	True	True
154	 514.0 PAD16	Procurements Identified	2016-11-07	2016-11-08	2016-11-09	2016-11-09	PSE17	Metzger-PSE	True	True	False	False	True	True
155	 514.0 PAD17	Program Scope Defined	2016-11-11	2016-11-11	2016-11-11	2016-11-11	PSE17	Metzger-PSE	True	True	False	False	True	True
156	 514.0 PAD18	Develop Program Schedule	2016-11-11	2016-11-16	2016-11-14	2016-11-17	PSE17	Metzger-PSE	True	True	False	False	True	True
157	 AP2-ILO-Class 2-K	AP2-ILO-Class 2 NRC OPERATING EXAM	2016-09-29	2016-11-04	2016-09-29	2016-12-06	TO	Trn Ops	False	False	False	True	False	False
158	 AP2-ILO-Class 3-G	Startup Certifications	2016-10-03	2016-11-01	2016-10-03	2016-10-28	TO	Trn Ops	False	False	False	True	False	False
159	 AP2-ILO-Class 3-H	AP2-ILO-Class 3 GOP	2016-11-02	2017-01-04	2016-10-31	2016-12-16	TO	Trn Ops	False	False	True	False	False	False
160	 APP-GW-GEI-300a	Containment PSI Program Plan -  Rev00 - Owner Draft Review	2016-11-08	2016-11-14	2016-11-08	2016-11-14	PSE21	Troficanto-PSE	True	True	False	False	True	True
161	 APP-GW-GEI-300b	Containment PSI Program Plan -  Rev00 - WEC resolve comments	2016-11-15	2016-12-07	2016-11-15	2016-12-07	PSE21	Troficanto-PSE	True	False	False	False	True	False
162	 BDSFID115	Load Work-In-Progress Equipment List into Database	2016-11-01	2016-11-01	2016-11-01	2016-11-01	PSE-36	Yang-PSE ER	True	True	False	False	True	True
163	 BDSMR1020	MR Function Scoping and Component Mapping	2016-10-26	2016-11-04	2016-10-26	2016-12-02	PSE-37	Sonnett-PSE PM/MR	False	False	False	True	False	False
164	 BDSMR1030	Provide System PRA Data	2016-11-04	2016-11-11	2016-12-09	2016-12-16	E67	Sajjad-PRA	False	False	True	True	False	False
165	 BDSMR1220	SCE&G MR Safety Significance Determination	2016-11-07	2016-11-07	2016-12-19	2016-12-19	PSE-37	Sonnett-PSE PM/MR	False	False	True	True	False	False
166	 BDSMR1230	SCE&G MR  Expert Panel Review	2016-11-18	2016-11-28	2016-12-28	2017-01-04	PSE-37	Sonnett-PSE PM/MR	False	False	True	True	False	False
167	 BDSMR1290	SCE&G  MR Expert Panel Meeting	2016-11-29	2016-11-29	2017-01-05	2017-01-05	PSE-37	Sonnett-PSE PM/MR	False	False	True	True	False	False
168	 BDSMR1330	MR Performance Criteria Expert Panel Comment Resolution	2016-11-30	2016-12-06	2017-01-06	2017-01-12	PSE-37	Sonnett-PSE PM/MR	False	False	True	False	False	False
169	 BDSMR1420	SCE&G MR Perf. Criteria Development	2016-11-14	2016-11-17	2016-12-20	2016-12-27	PSE-37	Sonnett-PSE PM/MR	False	False	True	True	False	False
170	 BLDG 338 F DRILL	Obtain & Validate Fire Drill Record for BLDG 338 (Awaiting WECTEC DOCS)	2016-11-14	2016-11-17	2016-12-01	2016-12-06	PSE08	Earnest-PSE	False	False	True	True	False	False
171	 BLDG 338 FHA Verify	Verify the Building 338 Against Fire Hazard Analysis (VSG-0000-AF-800000) (Awaiting 338 Completion)	2016-11-09	2016-11-15	2016-11-25	2016-11-28	PSE08	Earnest-PSE	True	True	False	False	True	True
172	 BLDG 338 FPFS	Verify Fire Protection Features Documentation, Hydro Test, Detection Sys Commissioning (Awaiting WECTEC DOCS)	2016-10-21	2016-11-07	2016-10-21	2016-12-07	PSE08	Earnest-PSE	False	False	False	True	False	False
173	 BLDG 338 Pre-Plan	Verify Fire Pre-Plan for BLDG 338 (Awaiting WECTEC DOCS)	2016-11-09	2016-11-10	2016-12-01	2016-12-02	PSE08	Earnest-PSE	False	False	True	True	False	False
174	 Bldg 338 ReqV	NRC/NEIL Requirements for Bldg 338 Acceptance have been Verified	2016-11-18	2016-11-18	2016-12-08	2016-12-08	PSE08	Earnest-PSE	False	False	True	True	False	False
175	 BLDG 338 Verify	Inspect Building 338 for Fire Protection Condition (Awaiting 338 Completion)	2016-11-09	2016-11-15	2016-11-25	2016-11-28	PSE08	Earnest-PSE	True	True	False	False	True	True
176	 BLDG338 IA	Sign and Formally Transmit Interface Agreement (Hugh Edwards)	2016-07-08	2016-11-01	2016-07-08	2016-11-01	PSE08	Earnest-PSE	False	True	False	False	False	True
177	 CASFEG1030	SCE&G Initial Review of FEG Mapping	2016-11-30	2016-12-06	2017-01-06	2017-01-12	PSE-34	Dao-PSE FEG	False	False	True	False	False	False
178	 CASMR1230	SCE&G MR  Expert Panel Review	2016-11-07	2016-11-11	2016-11-11	2016-12-07	PSE-37	Sonnett-PSE PM/MR	True	False	False	True	True	False
179	 CASMR1290	SCE&G  MR Expert Panel Meeting	2016-11-14	2016-11-14	2016-12-08	2016-12-08	PSE-37	Sonnett-PSE PM/MR	False	False	True	True	False	False
180	 CASMR1330	MR Performance Criteria Expert Panel Comment Resolution	2016-11-16	2016-11-22	2016-12-16	2016-12-22	PSE-37	Sonnett-PSE PM/MR	False	False	True	True	False	False
181	 ChemTrn T2D-E	Tier 2D-B discipline (class 2) Chem Training Implement	2016-11-14	2016-12-16	2016-11-28	2017-03-31	TC	Trn Chem	True	False	False	False	True	False
182	 CMIS C1020	Information Turnover Phase II User Acceptance Test Development	2017-10-02	2018-02-27	2016-11-28	2017-04-24	DE10	Richardson-DE	False	False	False	False	True	False
183	 CMMS100	CMMS Web(for ITP and CR upgrade) Training Development	2016-07-01	2016-11-07	2016-07-01	2016-11-01	IST	IST	False	True	False	False	False	True
184	 CMMS110	CMMS Web(for ITP and CR Upgrade) Customer Testing/Acceptance	2016-07-05	2016-11-07	2016-07-05	2016-11-21	IST	IST	False	True	False	False	False	True
185	 CMMS120	LOTO Module Testing	2016-08-01	2016-11-08	2016-08-01	2016-12-01	O1	OPs	False	False	False	True	False	False
186	 CMMS130	Condition Report - Module Testing	2016-10-20	2016-11-07	2016-10-20	2016-11-07	J1	OD&P	False	True	False	False	False	True
187	 CMMS150	CMMS Web(for ITP and CR Upgrade) Training	2016-10-12	2016-11-21	2016-10-12	2016-11-21	IST	IST	False	True	False	False	False	True
188	 CMMS170	Preventive Maintenance Module Testing	2016-10-20	2016-11-03	2016-10-20	2016-11-01	P1	POM	False	True	False	False	False	True
189	 CMMS180	CMMS Web (For ITP and CR Upgrade) Go-Live	2016-11-28	2016-11-28	2016-12-06	2016-12-06	IST	IST	False	False	True	True	False	False
190	 CR 15-00604-6	Develop the necessary qualification cards/TMW's to support accreditation. This action includes inputing them into the	2016-11-01	2016-12-21	2016-12-01	2017-01-23	TG	Trn Eng	False	False	True	False	False	False
191	 CR 15-00606-2	In conjunction with the electrical maintenance line organization, assist in developing the authorized OJT/TPE/TMW	2016-04-01	2016-11-10	2016-04-01	2017-01-26	TEI	Elec Trn Instructor	False	False	False	True	False	False
192	 CR 16-00644es	Develop Program Descriptions	2016-07-22	2016-11-03	2016-07-22	2016-11-30	TG	Trn Eng	False	True	False	False	False	True
193	 CR 16-00645es	Develop and Input Qualification Structure into Plateau Database	2016-07-29	2016-11-04	2016-07-29	2016-11-30	TG	Trn Eng	False	True	False	False	False	True
194	 DASFEG1010	FEG Data Table and Drawing Development	2016-10-26	2016-11-08	2016-10-26	2016-11-08	PSE-34	Dao-PSE FEG	False	True	False	False	False	True
195	 DASFEG1030	SCE&G Initial Review of FEG Mapping	2016-11-11	2016-11-17	2016-12-28	2017-01-04	DM05	DM Ops	False	False	True	True	False	False
196	 DASFEG1040	FEG Review Comment Incorporation	2016-11-21	2016-11-29	2017-01-06	2017-01-12	PSE-34	Dao-PSE FEG	False	False	True	True	False	False
197	 DASFID130	SCE&G Component Classification	2016-11-14	2016-11-29	2016-12-29	2017-01-12	PSE-36	Yang-PSE ER	False	False	True	True	False	False
198	 DASFID147	SCE&G  Review and Resolve Comments for SNC Component Classification	2016-11-30	2016-12-01	2017-01-13	2017-01-16	PSE-36	Yang-PSE ER	False	False	True	False	False	False
199	 DASMR1230	SCE&G MR  Expert Panel Review	2016-11-04	2016-11-10	2016-11-11	2016-12-07	PSE-37	Sonnett-PSE PM/MR	True	False	False	True	True	False
200	 DASMR1290	SCE&G  MR Expert Panel Meeting	2016-11-11	2016-11-11	2016-12-08	2016-12-08	PSE-37	Sonnett-PSE PM/MR	False	False	True	True	False	False
201	 DASMR1330	MR Performance Criteria Expert Panel Comment Resolution	2016-11-15	2016-11-21	2016-12-12	2016-12-16	PSE-37	Sonnett-PSE PM/MR	False	False	True	True	False	False
202	 ECSMR1330	MR Performance Criteria Expert Panel Comment Resolution	2016-10-31	2016-11-04	2016-10-31	2016-12-01	PSE-37	Sonnett-PSE PM/MR	False	False	False	True	False	False
203	 EDSFEG1030	SCE&G Initial Review of FEG Mapping	2016-11-04	2016-11-10	2016-12-16	2016-12-22	DM05	DM Ops	False	False	True	True	False	False
204	 EDSFID130	SCE&G Component Classification	2016-11-10	2017-01-03	2016-11-10	2017-02-22	PSE-36	Yang-PSE ER	True	False	False	False	True	False
205	 EDSMR1330	MR Performance Criteria Expert Panel Comment Resolution	2016-10-26	2016-11-14	2016-10-26	2016-12-16	PSE-37	Sonnett-PSE PM/MR	False	False	False	True	False	False
206	 ElecTrnT2D-C	Tier 2D -B discipline (class 2) Elec Training Implement	2016-11-07	2017-03-10	2016-11-07	2017-03-10	TEI	Elec Trn Instructor	True	False	False	False	True	False
207	 ELSMR1230	SCE&G MR  Expert Panel Review	2016-10-26	2016-11-04	2016-10-26	2016-11-04	PSE-37	Sonnett-PSE PM/MR	False	True	False	False	False	True
208	 ELSMR1290	SCE&G  MR Expert Panel Meeting	2016-11-07	2016-11-07	2016-11-11	2016-11-11	PSE-37	Sonnett-PSE PM/MR	True	True	False	False	True	True
209	 ELSMR1330	MR Performance Criteria Expert Panel Comment Resolution	2016-11-08	2016-11-14	2016-11-18	2016-12-01	PSE-37	Sonnett-PSE PM/MR	True	False	False	True	True	False
210	 EngCT1604c	CT-Fourth Quarter- Eng Continuing Training	2016-11-28	2016-12-02	2017-01-05	2017-01-11	TG	Trn Eng	False	False	True	False	False	False
211	 EngCT1604dev	CT-Fourth Quarter- Eng Continuing Training - dev	2016-11-01	2016-11-28	2016-12-01	2017-01-05	TG	Trn Eng	False	False	True	True	False	False
212	 EP1042	Vendor develop multi unit, multi release point Midas (software) upgrade	2016-10-14	2016-11-11	2016-10-14	2016-11-15	EP2	EP	False	True	False	False	False	True
213	 EP1054	Validation of WEBEOC boards	2016-05-20	2016-11-03	2016-05-20	2016-12-15	EP2	EP	False	False	False	True	False	False
214	 EP1070	Develop & Submit TSC HVAC 50.54(q)	2016-11-14	2017-02-01	2017-01-12	2017-03-27	EP2	EP	False	False	True	False	False	False
215	 EQ-100	DAS-VBR-003-EQ VCS Qualification Review	2016-10-26	2016-12-14	2016-10-26	2016-11-29	PSE22	Garrett-PSE	False	False	False	False	False	True
216	 EQ-109	DS01-EQ VCS Qualification Review	2016-11-01	2016-11-14	2016-11-01	2016-11-17	PSE22	Garrett-PSE	True	True	False	False	True	True
217	 EQ-134	JE52NLI-EQ Qualification Review	2016-10-28	2016-11-10	2016-10-28	2016-12-05	PSE22	Garrett-PSE	False	False	False	True	False	False
218	 EQ-135	JE52SMT-EQ Qualification Review	2016-10-05	2016-11-18	2016-10-05	2016-12-05	PSE22	Garrett-PSE	False	False	False	True	False	False
219	 EQ-139	JW03-EQ VCS Qualification Review	2016-11-01	2016-11-14	2016-11-01	2016-11-14	PSE22	Garrett-PSE	True	True	False	False	True	True
220	 EQ-142	MP01-EQ Qualification Review	2016-10-05	2016-11-30	2016-10-05	2017-01-03	PSE22	Garrett-PSE	False	False	False	True	False	False
221	 EQ-154	PV01-EQ Qualification Review	2016-11-01	2016-11-14	2016-11-01	2016-12-05	PSE22	Garrett-PSE	True	False	False	True	True	False
222	 EQ-159	PV10-EQ VCS Qualification Review	2016-11-01	2016-11-14	2016-11-01	2016-12-06	PSE22	Garrett-PSE	True	False	False	True	True	False
223	 EQ-160	PV11-EQ Qualification Review	2016-10-05	2016-11-18	2016-10-05	2016-12-05	PSE22	Garrett-PSE	False	False	False	True	False	False
224	 EQ-161	PV13-EQ Qualification Review	2016-11-07	2016-11-18	2017-01-03	2017-01-09	PSE22	Garrett-PSE	False	False	True	True	False	False
225	 EQ-165	PV16-EQ1 Qualification Review	2017-01-03	2017-01-16	2016-11-14	2017-01-03	PSE22	Garrett-PSE	False	False	False	False	True	False
226	 EQ-168	PV18-EQ Qualification Review	2016-11-07	2016-11-18	2016-11-14	2017-01-03	PSE22	Garrett-PSE	True	False	False	True	True	False
227	 EQ-169	PV20-EQ Qualification Review	2016-10-05	2016-11-23	2016-10-05	2017-01-03	PSE22	Garrett-PSE	False	False	False	True	False	False
228	 EQ-172	PV64-EQ Qualification Review	2016-11-07	2016-11-18	2016-11-01	2017-01-03	PSE22	Garrett-PSE	True	False	False	True	True	False
229	 EQ-177	PV69-EQ Qualification Review	2016-11-07	2016-12-21	2016-11-07	2017-01-03	PSE22	Garrett-PSE	True	False	False	False	True	False
230	 EQ-178	PV70-EQ Qualification Review	2016-10-05	2016-11-14	2016-10-05	2017-01-03	PSE22	Garrett-PSE	False	False	False	True	False	False
231	 EQSSPV1040	SCE&G Review of SNC SPV Fault Tree	2016-11-01	2016-11-02	2016-11-01	2016-11-02	PSE-36	Yang-PSE ER	True	True	False	False	True	True
232	 EQSSPV1041	SCE&G SPV Identification (Fault Tree Analysis)	2016-11-01	2016-11-02	2016-11-01	2016-11-02	DM05	DM Ops	True	True	False	False	True	True
233	 EQSSPV1070	SPV Mitigation Strategy Development	2016-11-15	2016-11-15	2016-11-30	2016-11-30	PSE-36	Yang-PSE ER	True	True	False	False	True	True
234	 EQSSPV1110	Update Component Classification with New SPV's	2016-11-11	2016-11-14	2016-11-18	2016-11-29	PSE-36	Yang-PSE ER	True	True	False	False	True	True
235	 FATP-PSO-6	PSO FATP Revision for Review	2016-11-01	2016-11-07	2016-11-11	2016-11-17	P3	WWM	True	True	False	False	True	True
236	 FATP-PSO-7	PSO FATP Revised and Updated	2016-11-07	2016-11-14	2016-11-17	2016-11-18	P3	WWM	True	True	False	False	True	True
237	 FATP-PSO-8	PSO FATP Revision to GMOR for Approval	2016-11-14	2016-11-14	2016-11-18	2016-11-18	P3	WWM	True	True	False	False	True	True
238	 FATP-QS-1	QS FATP Revision for Review	2016-10-21	2016-11-17	2016-10-21	2016-12-07	DM06	DM QS	False	False	False	True	False	False
239	 FATP-QS-2	QS FATP Revised and Updated	2016-11-17	2016-12-07	2016-12-07	2016-12-27	DM06	DM QS	False	False	True	False	False	False
240	 FPP Assess5	FPP Assessment Team Publish Results	2016-10-27	2016-11-04	2016-10-27	2016-11-23	PSE15	Danielsen-PSE	False	True	False	False	False	True
241	 FPP SNM Ready	FPP Meets LC 2.d(10)(e).2 Ready for NRC Inspection	2016-11-18	2016-11-18	2016-12-08	2016-12-08	PSE08	Earnest-PSE	False	False	True	True	False	False
242	 FPSFID115	Load Work-In-Progress Equipment List into Database	2016-11-01	2016-11-01	2016-11-01	2016-11-01	PSE-36	Yang-PSE ER	True	True	False	False	True	True
243	 FPSMR1230	SCE&G MR  Expert Panel Review	2016-11-04	2016-11-10	2017-01-09	2017-01-13	PSE-37	Sonnett-PSE PM/MR	False	False	True	True	False	False
244	 FPSMR1290	SCE&G  MR Expert Panel Meeting	2016-11-11	2016-11-11	2017-01-16	2017-01-16	PSE-37	Sonnett-PSE PM/MR	False	False	True	True	False	False
245	 FPSMR1330	MR Performance Criteria Expert Panel Comment Resolution	2016-11-23	2016-12-01	2017-01-18	2017-01-24	PSE-37	Sonnett-PSE PM/MR	False	False	True	False	False	False
246	 GENPMOC1020	PMOC Charter Approved through Department Managers(VCB-SAP-0143)	2016-07-11	2016-11-01	2016-07-11	2016-11-01	PSE32	Sonnett-PSE	False	True	False	False	False	True
247	 GMP-100.031d	TUBING FABRICATION AND INSTALLATION - Rev00 - Approval	2016-10-07	2016-11-17	2016-10-07	2016-12-07	MIR	IC supv	False	False	False	True	False	False
248	 HPCT1602f	CT-Third Quarter - HP Continuing Training	2016-11-28	2016-12-05	2016-11-28	2016-12-05	TH	Trn HP	True	False	False	False	True	False
249	 HPCT1701dev	CT-1701- HP Continuing Training - dev	2016-11-11	2017-01-13	2016-12-01	2017-01-26	TH	Trn HP	False	False	True	False	False	False
250	 I&CTrnT2D-B	Tier 2D -B discipline (class 2) I&C Training Implement	2016-11-28	2017-02-20	2016-11-28	2017-02-20	TICI	I&C Trn Instructor	True	False	False	False	True	False
251	 IAUR-10	Ensure Training Program Owners Available as Contacts during Sequester Week	2016-11-01	2016-11-10	2016-11-18	2016-11-21	DM21	Supv M&T Trn	True	True	False	False	True	True
252	 IAUR-11	Assign ATV Coordinator	2016-11-11	2016-11-14	2016-11-18	2016-11-21	DM21	Supv M&T Trn	True	True	False	False	True	True
253	 IAUR-12	Distribute Final Draft for Final Review and Approval	2016-11-15	2016-11-15	2016-11-18	2016-11-21	DM21	Supv M&T Trn	True	True	False	False	True	True
254	 IAUR-13	Submit Approved IAUR to INPO	2016-11-16	2016-11-16	2016-11-18	2016-11-21	DM21	Supv M&T Trn	True	True	False	False	True	True
255	 IAUR-14	Submit ATV Data to INPO	2016-11-17	2016-11-17	2016-11-18	2016-11-21	DM21	Supv M&T Trn	True	True	False	False	True	True
256	 IAUR-15	ATV Date	2016-11-29	2016-12-06	2016-11-28	2016-12-02	DM21	Supv M&T Trn	True	False	False	False	True	False
257	 IDSFID115	Load Work-In-Progress Equipment List into Database	2016-11-14	2016-11-14	2016-11-14	2016-11-14	PSE-36	Yang-PSE ER	True	True	False	False	True	True
258	 IDSMR1020	MR Function Scoping and Component Mapping	2016-11-14	2016-11-16	2016-11-14	2016-12-06	PSE-37	Sonnett-PSE PM/MR	True	False	False	True	True	False
259	 IDSMR1030	Provide System PRA Data	2016-12-06	2016-12-13	2016-11-28	2016-12-05	E65	Tampas-PRA	False	False	False	False	True	False
260	 IDSMR1220	SCE&G MR Safety Significance Determination	2016-11-17	2016-11-17	2016-12-07	2016-12-07	PSE-37	Sonnett-PSE PM/MR	False	False	True	True	False	False
261	 INPO ATV-jun	INPO ATV	2016-11-28	2016-12-09	2016-11-28	2016-12-09	TO	Trn Ops	True	False	False	False	True	False
262	 LATT-1084	Retain Portable Pump with Adequate Fuel Capacity	2016-11-01	2016-11-07	2016-12-01	2016-12-07	PSE34	FP-PSE	False	False	True	True	False	False
263	 LATT-1086	Fire Protection System Strategy: Post Event	2016-11-01	2016-11-14	2016-12-01	2016-12-14	PSE34	FP-PSE	False	False	True	True	False	False
264	 LOR-1506	LOR-15-06	2016-11-01	2016-12-12	2016-12-01	2017-01-19	TO	Trn Ops	False	False	True	False	False	False
265	 LOR-Exam 1507 dev	LOR-Exam dev 15-07	2016-11-09	2016-12-12	2016-12-09	2017-01-19	TO	Trn Ops	False	False	True	False	False	False
266	 MechdevT2-2340	Draft - SC-MM-218-L2	2016-11-01	2016-11-11	2017-03-01	2017-03-24	TMI	Mech Trn Instructor	False	False	True	True	False	False
267	 MechdevT2-2400	Final Draft - SC-MM-218-L2	2016-11-15	2016-11-16	2017-03-28	2017-03-29	TMI	Mech Trn Instructor	False	False	True	True	False	False
268	 MechdevT2-5040	Draft - SC-MM-223-C	2016-11-01	2016-11-11	2017-01-09	2017-01-30	TMI	Mech Trn Instructor	False	False	True	True	False	False
269	 MechdevT2-5050	Final Draft - SC-MM-223-C	2016-11-15	2016-11-16	2017-02-02	2017-02-02	TMI	Mech Trn Instructor	False	False	True	True	False	False
270	 MechdevT2-5790	Draft - SC-MM-221-C2	2016-11-01	2016-11-11	2017-01-09	2017-01-30	TMI	Mech Trn Instructor	False	False	True	True	False	False
271	 MechdevT2-5810	Final Draft - SC-MM-221-C2	2016-11-15	2016-11-16	2017-02-02	2017-02-02	TMI	Mech Trn Instructor	False	False	True	True	False	False
272	 MechdevT2-5880	Draft - SC-MM-221-C1	2016-11-01	2016-11-11	2017-01-09	2017-01-30	TMI	Mech Trn Instructor	False	False	True	True	False	False
273	 MechdevT2-5890	Final Draft - SC-MM-221-C1	2016-11-15	2016-11-16	2017-02-02	2017-02-02	TMI	Mech Trn Instructor	False	False	True	True	False	False
274	 MechrevT2-8009	SC-MM- class -221-C4 Vacuum Relef Valves - Rev Material	2016-11-01	2016-11-03	2016-11-14	2016-11-15	TMI	Mech Trn Instructor	True	True	False	False	True	True
275	 MechrevT2-8010	SC-MM- class -221-C5 Reach Rod Maintenance - Rev Material	2016-11-04	2016-11-08	2016-11-14	2016-11-15	TMI	Mech Trn Instructor	True	True	False	False	True	True
276	 MechrevT2-8011	SC-MM-228-C Gauge Glass Maintenance - Rev Material	2016-11-09	2016-11-11	2016-11-14	2016-11-15	TMI	Mech Trn Instructor	True	True	False	False	True	True
277	 MechrevT2-8012	SC-MM-228-L Gauge Glass Maintenance - Rev Material	2016-11-14	2016-11-16	2016-11-14	2016-11-15	TMI	Mech Trn Instructor	True	True	False	False	True	True
278	 MechRevT2-9004	SC-MM-203-001 - Perform Laser Alignment - T&Q Guide Revision	2017-01-23	2017-01-25	2016-11-21	2016-11-23	TMD	Mech Trn Development	False	False	False	False	True	True
279	 MechRevT2-9011	SC-MM-218-001 - Conduct External Pump Inspection - T&Q Guide Revision	2017-02-17	2017-02-22	2016-11-14	2016-11-15	TMD	Mech Trn Development	False	False	False	False	True	True
280	 MechRevT2-9012	SC-MM-218-002 - Repair Centrifigal Pump - T&Q Guide Revision	2017-02-22	2017-02-27	2016-11-14	2016-11-15	TMD	Mech Trn Development	False	False	False	False	True	True
281	 MechTier2902a	SC-MM-221-002 Repair Butterfly Valve and Plug Valve - OJT	2016-11-21	2016-12-06	2016-11-18	2016-12-05	MMC	Mech craft	True	False	False	False	True	False
282	 MechTier2903a	SC-MM-221-003 Repair Check Valve-OJT	2016-10-31	2016-11-11	2016-11-01	2016-11-10	MMC	Mech craft	False	True	False	False	True	True
283	 MechTier2T901a	SC-MM-221-001 Repair Globe Valve- TPE	2016-10-24	2016-11-04	2016-10-24	2016-11-04	MMC	Mech craft	False	True	False	False	False	True
284	 MechTier2T903a	SC-MM-221-003 Repair Check Valve-TPE	2016-11-14	2016-11-23	2016-11-11	2016-11-22	MMC	Mech craft	True	True	False	False	True	True
285	 MechTrnT2D-D	Tier 2D -B discipline (class 2) Mech Training Implement	2016-11-14	2016-12-02	2016-11-14	2016-12-13	TMI	Mech Trn Instructor	True	False	False	False	True	False
286	 MechtrnT2D-DR	Tier 2D -B discipline (class 2) Mech Training Implement - Remediation	2018-03-05	2018-03-09	2016-11-14	2016-12-13	TMI	Mech Trn Instructor	False	False	False	False	True	False
287	 MES0543-0006	MET Tower Equipment Tags Determination	2016-09-20	2016-11-18	2016-09-20	2016-11-29	DE03	Hughes-DE	False	True	False	False	False	True
288	 misc 3	Validate simulator use of Conduct of Test Procedures	2016-11-01	2016-12-14	2016-12-01	2017-01-04	O1	OPs	False	False	True	False	False	False
289	 MMPA 10-2016	Update PA Operational Dashboard-October 2016	2016-10-03	2016-11-02	2016-10-03	2016-10-31	DE03	Hughes-DE	False	False	False	True	False	False
290	 MMPA 11-2016	Update PA Operational Dashboard-November 2016	2016-11-03	2016-12-02	2016-11-01	2016-12-02	DE03	Hughes-DE	True	False	False	False	True	False
291	 MOVEXP210	MOV Expert Panel: Expert Panel Challenge Meeting (VCS + Vogtle)	2016-11-16	2016-11-16	2016-11-16	2016-11-16	PSE16	Felch-PSE	True	True	False	False	True	True
292	 MOVEXP211	MOV Expert Panel: Expert Panel Challenge Meeting Complete (VCS + Vogtle)	2016-11-16	2016-11-16	2016-11-16	2016-11-16	PSE16	Felch-PSE	True	True	False	False	True	True
293	 MSI-058b	SETUP OF MAINTENANCE WORK AREAS - Rev00 - Draft	2016-10-03	2016-11-29	2016-10-03	2016-11-29	MIP	IC proc	False	True	False	False	False	True
294	 MSI-058c01	SETUP OF MAINTENANCE WORK AREAS - Rev00 - Review	2016-11-30	2016-12-30	2016-11-30	2016-12-30	MIP	IC proc	True	False	False	False	True	False
295	 MTSMR1030	Provide System PRA Data	2016-10-26	2016-11-07	2016-10-26	2016-11-08	E67	Sajjad-PRA	False	True	False	False	False	True
296	 MTSMR1220	SCE&G MR Safety Significance Determination	2016-10-26	2016-11-10	2016-11-11	2016-11-17	PSE-37	Sonnett-PSE PM/MR	False	True	False	False	True	True
297	 MTSMR1230	SCE&G MR  Expert Panel Review	2016-11-17	2016-11-23	2016-11-21	2016-12-02	PSE-37	Sonnett-PSE PM/MR	True	False	False	True	True	False
298	 MTSMR1290	SCE&G  MR Expert Panel Meeting	2016-11-28	2016-11-28	2016-12-05	2016-12-05	PSE-37	Sonnett-PSE PM/MR	False	False	True	True	False	False
299	 MTSMR1330	MR Performance Criteria Expert Panel Comment Resolution	2016-11-29	2016-12-05	2016-12-14	2016-12-20	PSE-37	Sonnett-PSE PM/MR	False	False	True	False	False	False
300	 MTSMR1420	SCE&G MR Perf. Criteria Development	2016-11-11	2016-11-16	2016-11-16	2016-11-18	PSE-37	Sonnett-PSE PM/MR	True	True	False	False	True	True
301	 NCSMR1020	MR Function Scoping and Component Mapping	2016-11-28	2016-11-30	2016-12-01	2016-12-05	PSE-37	Sonnett-PSE PM/MR	False	False	True	True	False	False
302	 NERC NUC-001	Track Approval of the NERC NUC-001 Comp Doc by Transmission			2016-11-22	2017-01-30	PSE05	Simmons	False	False	False	False	True	False
303	 NLO-1601-B	NLO-16-01 - SYSTEMS TRAINING	2016-05-31	2016-11-01	2016-05-31	2016-09-01	TO	Trn Ops	False	False	False	True	False	False
304	 NLO-1601-C	NLO-16-01 - ADMIN	2016-11-02	2016-11-15	2016-09-01	2016-09-02	TO	Trn Ops	False	False	True	True	False	False
305	 NLOR-1602	NLOR-1602	2016-05-20	2016-11-07	2016-05-20	2016-12-07	TO	Trn Ops	False	False	False	True	False	False
306	 NLOR-1603	NLOR-1603	2016-11-08	2017-01-03	2016-12-08	2017-01-26	TO	Trn Ops	False	False	True	False	False	False
307	 NND-AP-1000a	Preservice Inspection Oversight Procedure -Rev01- Preparation	2016-11-01	2016-11-01	2016-11-01	2016-11-01	PSE21	Troficanto-PSE	True	True	False	False	True	True
308	 NND-AP-1000b	Preservice Inspection Oversight Procedure -Rev01- Draft	2016-11-02	2016-11-08	2016-11-02	2016-11-08	PSE21	Troficanto-PSE	True	True	False	False	True	True
309	 NND-AP-1000c01	Preservice Inspection Oversight Procedure -Rev01- Review	2016-11-09	2016-12-01	2016-11-09	2016-12-01	PSE21	Troficanto-PSE	True	False	False	False	True	False
310	 NND-AP-1000CX	Preservice Inspection Oversight Procedure -Rev01- C-QR	2016-11-09	2016-12-01	2016-11-11	2016-12-05	DE06	Watkins-DE	True	False	False	False	True	False
311	 NND-AP-1000CY	Preservice Inspection Oversight Procedure -Rev01- C-5059	2016-11-09	2016-12-01	2016-11-09	2016-12-01	PSE21	Troficanto-PSE	True	False	False	False	True	False
312	 NND-AP-1000CZ	Preservice Inspection Oversight Procedure -Rev01- C-Res2	2016-11-09	2016-11-10	2016-12-06	2016-12-06	PSE21	Troficanto-PSE	False	False	True	True	False	False
313	 NND-AP-1002d	Construction Era Fire Protection Program NND-AP-1002 - Approval	2016-11-02	2016-11-08	2016-11-02	2016-11-22	DM16	DM Eng-PSE (Sterdis)	True	True	False	False	True	True
314	 NND-AP-1002e	Construction Era Fire Protection Program NND-AP-1002- Validate	2016-11-09	2016-11-15	2016-11-30	2016-11-30	PSE08	Earnest-PSE	True	True	False	False	True	True
315	 NND-ES-0011e	SCE&G and SNC Collaboration Process - Rev00 - Validate	2016-11-01	2016-11-07	2016-11-09	2016-11-09	PSE29	McLellan-PSE	True	True	False	False	True	True
316	 NND-OR-0201d	Operational Readiness Information Turnover - Rev00 - Approval	2016-10-18	2016-11-02	2016-10-18	2016-11-02	DE99	Lewis-DE	False	True	False	False	False	True
317	 NND-OR-0203CY	Information Turnover Document Review - Rev00 - C-5059	2016-10-17	2016-11-03	2016-10-17	2016-11-03	DE99	Lewis-DE	False	True	False	False	False	True
318	 NND-OR-0203CZ	Information Turnover Document Review - Rev00 - C-Res2	2016-11-04	2016-11-14	2016-11-04	2016-11-14	DE99	Lewis-DE	True	True	False	False	True	True
319	 NND-OR-0203d	Information Turnover Document Review - Rev00 - Approval	2016-11-15	2016-11-30	2016-11-15	2016-11-30	DE99	Lewis-DE	True	True	False	False	True	True
320	 NND-OR-0205b	Turnover & Acceptance Readiness Verification - Rev00 - Draft	2016-07-11	2016-11-01	2016-07-11	2016-12-01	E61	Bennett	False	False	False	True	False	False
321	 NND-OR-0205c	Turnover & Acceptance Readiness Verification - Rev00 - Review	2016-11-02	2016-12-02	2016-12-02	2017-01-04	E61	Bennett	False	False	True	False	False	False
322	 NNDAP1002GT	Training Gap Analysis for Construction Era Fire Protection Program NND-AP-1002	2016-11-02	2016-11-08	2016-11-28	2016-11-30	PSE08	Earnest-PSE	True	True	False	False	True	True
323	 NPS NRC inspect	NRC Inspection for SNM Receipt using NRC Inspection Procedure 81000.11, Material Control and Accounting (MCA)	2016-11-14	2016-12-05	2017-01-17	2017-01-25	N1	NPS	False	False	True	False	False	False
324	 OCSMR1230	SCE&G MR  Expert Panel Review	2016-11-08	2016-11-14	2016-11-11	2016-12-07	PSE-37	Sonnett-PSE PM/MR	True	False	False	True	True	False
325	 OCSMR1290	SCE&G  MR Expert Panel Meeting	2016-11-15	2016-11-15	2016-12-08	2016-12-08	PSE-37	Sonnett-PSE PM/MR	False	False	True	True	False	False
326	 OCSMR1330	MR Performance Criteria Expert Panel Comment Resolution	2016-11-16	2016-11-22	2016-12-09	2016-12-15	PSE-37	Sonnett-PSE PM/MR	False	False	True	True	False	False
327	 ODP-02	Finalize composition of oversight bodies for Units 2 & 3 to include CARB, MRT, SARB, CRRT, NSCMP, SLT and HUAC	2016-10-20	2016-11-07	2016-10-20	2016-12-07	J1	OD&P	False	False	False	True	False	False
328	 ODP-03	Determine groups and users in Units 2 & 3 CMMS Condition Reporting module	2016-10-20	2016-11-07	2016-10-20	2016-12-07	J1	OD&P	False	False	False	True	False	False
329	 OPSASSIST01	Validation #1: VC Summer 4 NRC Operating Exam	2016-11-01	2016-11-07	2016-11-23	2016-12-28	TO	Trn Ops	True	False	False	True	True	False
330	 OPSASSIST02	Validation #1: VC Summer 4 AUDIT Operating Exam	2016-11-14	2016-11-18	2016-11-28	2016-11-29	TO	Trn Ops	True	True	False	False	True	True
331	 PDAR 12-0028 E	Equipment Reliability Work Management (ERMS), Customer Testing/Acceptance	2016-04-01	2016-11-30	2016-04-01	2016-11-01	IST	IST	False	True	False	False	False	True
332	 PSE Open Item 00X	Determine appropriate owners of Fuel Handling procedures (FHP, STP, FHS)	2016-11-01	2017-01-09	2016-11-04	2017-01-12	PSE20	Post-PSE	True	False	False	False	True	False
333	 QA440	Assign QA requirements to department managers	2016-11-01	2016-11-01	2016-12-01	2016-12-01	QA	Quality Assurance	False	False	True	True	False	False
334	 RWSFEG1010	FEG Data Table and Drawing Development	2016-11-21	2016-12-06	2016-11-21	2016-12-06	PSE-34	Dao-PSE FEG	True	False	False	False	True	False
335	 RWSFID115	Load Work-In-Progress Equipment List into Database	2016-11-21	2016-11-21	2016-11-29	2016-11-29	PSE-36	Yang-PSE ER	True	True	False	False	True	True
336	 RWSFID130	SCE&G Component Classification	2016-11-22	2017-02-10	2016-11-30	2017-01-25	PSE-36	Yang-PSE ER	True	False	False	False	True	False
337	 RWSMR1030	Provide System PRA Data	2016-11-21	2016-11-30	2016-12-01	2016-12-08	E67	Sajjad-PRA	False	False	True	True	False	False
338	 SA16-NND-DE-02S	Self-Assessment: Unit 2/3 Impacts to Unit 1 evaluation process (NND-AP-0029)	2016-11-01	2016-12-13	2016-11-01	2016-12-01	DM15	DM Eng-DE (Taylor)	True	False	False	False	True	False
339	 SA16-NND-NL-01	Self-Assessment: FSAR Management / Change Process	2016-10-03	2016-11-07	2016-10-03	2016-11-07	NL04	NL-Diane	False	True	False	False	False	True
340	 SA16-NND-NPS-01S	Radioactive Material Control - Snap Shot Self Assessment	2016-11-01	2016-11-03	2016-11-11	2016-11-15	N1	NPS	True	True	False	False	True	True
341	 SA16-NND-OD-03S	Self-Assessment: HU Program	2016-11-01	2016-12-16	2016-11-04	2016-11-30	DM03	DM OD&P	True	False	False	False	True	True
342	 SA16-NND-OPS-01	Self-Assessment: Corrective Action Program -Formal (every 3 years)	2016-11-01	2016-12-06	2016-12-01	2017-01-06	O1	OPs	False	False	True	False	False	False
343	 SA16-NND-OPS-02S	Self-Assessment: Functional Area Transition Plan - (FAT-P) - Snapshot (Annually)	2016-11-01	2016-12-02	2016-12-01	2017-01-04	O1	OPs	False	False	True	False	False	False
344	 SA16-NND-OPS-03	Self-Assessment: Neil Fire Inspection - Formal (Annually)	2016-11-01	2016-12-01	2016-12-01	2017-01-03	O1	OPs	False	False	True	False	False	False
345	 SA16-NND-ORENG-01	Self-Assessment: Engineering Programs Required for System Turnover	2016-10-14	2016-11-15	2016-10-14	2016-11-15	DM16	DM Eng-PSE (Sterdis)	False	True	False	False	False	True
346	 SA16-NND-ORENG-01S	Self-Assessment: Switchyard Oversight	2016-11-01	2016-12-20	2016-12-01	2017-01-20	DM16	DM Eng-PSE (Sterdis)	False	False	True	False	False	False
347	 SA16-NND-ORENG-03c	PSI Snapshot Assessment - Assessment Report Approval	2016-10-20	2016-11-03	2016-10-20	2016-11-03	PSE21	Troficanto-PSE	False	True	False	False	False	True
348	 SAP-0603b	Control Room Envelope Habitability Program - Rev00 - Draft	2016-10-19	2016-11-08	2016-10-19	2016-11-08	PSE35	Reed-PSE	False	True	False	False	False	True
349	 SAP-0603c01	Control Room Envelope Habitability Program - Rev00 - Review	2016-11-09	2016-12-09	2016-11-18	2016-11-21	PSE35	Reed-PSE	True	False	False	False	True	True
350	 SAP-0603CX	Control Room Envelope Habitability Program - Rev00 - C-QR	2016-11-09	2016-11-30	2016-11-21	2016-12-14	PSE16	Felch-PSE	True	False	False	True	True	False
351	 SAP-0603CY	Control Room Envelope Habitability Program - Rev00 - C-5059	2016-11-09	2016-11-30	2016-11-23	2016-12-14	PSE16	Felch-PSE	True	False	False	True	True	False
352	 SAP-1002e	Statement of Responsibilities Nuclear Training - Rev00 - Validate	2017-05-01	2017-05-05	2016-11-30	2016-12-06	TO	Trn Ops	False	False	False	False	True	False
353	 STA / SS -1601	STA / SS1601	2016-11-01	2016-11-28	2017-03-13	2017-03-31	TO	Trn Ops	False	False	True	True	False	False
354	 TMW-B-200-01	PSE Administration and Indoctrination (qualification)	2016-10-03	2016-10-31	2016-11-17	2016-11-28	PSE02	Shank-PSE	False	False	False	False	True	True
355	 TMW-B-200-03 devD	Engineering Change Process - Rev 01 - PLI review	2016-11-01	2016-11-14	2016-12-01	2016-12-14	TG	Trn Eng	False	False	True	True	False	False
356	 TMW-B-200-03 devE	Engineering Change Process - Rev 01 - DM approval	2016-11-15	2016-11-16	2016-12-15	2016-12-16	DM15	DM Eng-DE (Taylor)	False	False	True	True	False	False
357	 TMW-B-200-05 devD	Drawing Control - PLI review	2016-11-17	2016-12-02	2016-12-01	2016-12-14	TG	Trn Eng	False	False	True	False	False	False
358	 TMW-B-200-06 devD	Database Control - Rev 01- PLI review	2016-11-21	2016-12-06	2016-12-01	2016-12-14	TG	Trn Eng	False	False	True	False	False	False
359	 TMW-B-200-11 devB	Environmental Equipment Qualification (Introductory) - Rev 01- discipline review (for training use only)	2016-10-26	2016-11-07	2016-10-26	2016-11-14	PSE5	Himel-SupvPSE	False	True	False	False	False	True
360	 TMW-B-200-11 devC01	Environmental Equipment Qualification (Introductory) - Rev 01- impacted group review (for training use only)	2016-11-08	2016-11-18	2016-11-08	2016-11-17	PSE22	Garrett-PSE	True	True	False	False	True	True
361	 TMW-B-200-11 devD	Environmental Equipment Qualification (Introductory) - Rev 01- PLI review (for training use only)	2016-11-21	2016-12-05	2016-12-01	2016-12-13	TG	Trn Eng	False	False	True	False	False	False
362	 TMW-B-200-12 devD	Review and Verification - Rev 01 - PLI review	2016-11-03	2016-11-16	2016-12-01	2016-12-14	TG	Trn Eng	False	False	True	True	False	False
363	 TMW-B-200-12 devE	Review and Verification - Rev 01 - DM approval	2016-11-17	2016-11-18	2016-12-15	2016-12-16	DM15	DM Eng-DE (Taylor)	False	False	True	True	False	False
364	 TMW-B-200-14 devB	Software Control Program - Rev 01 - discipline review (for training use only)	2016-11-01	2016-11-14	2016-11-08	2016-11-14	PSE12	Penwell-PSE	True	True	False	False	True	True
365	 TMW-B-200-14 devC01	Software Control Program - Rev 01 - impacted group review (for training use only)	2016-11-15	2016-11-30	2016-11-11	2016-11-30	PSE12	Penwell-PSE	True	True	False	False	True	True
366	 TMW-B-200-22 devD	Administrative Document-Only Change (CR-NND-16-00283) - PLI review	2016-11-17	2016-11-17	2016-12-01	2016-12-01	TG	Trn Eng	False	False	True	True	False	False
367	 TMW-B-200-22 devE	Administrative Document-Only Change (CR-NND-16-00283) - DM approval	2016-11-18	2016-11-18	2016-12-02	2016-12-02	DM15	DM Eng-DE (Taylor)	False	False	True	True	False	False
368	 TMW-B-201-12	Control of Special Nuclear Material (qualification)	2016-10-24	2016-11-02	2016-10-24	2016-11-29	E46	Van Sicklen-F&A	False	True	False	False	False	True
369	 TMW-B-201-19	SNM Inventory Reporting (qualification)	2016-10-24	2016-10-27	2016-10-24	2016-11-29	E46	Van Sicklen-F&A	False	False	False	False	False	True
370	 TMW-B-205-01 devD	Licensing Fundamentals - PLI review	2016-11-01	2016-11-14	2016-12-01	2016-12-14	TG	Trn Eng	False	False	True	True	False	False
371	 TMW-B-205-01 devE	Licensing Fundamentals - DM approval	2016-11-15	2016-11-16	2016-12-15	2016-12-16	NL02	NL-Kersey	False	False	True	True	False	False
372	 TMW-B-205-02 devD	Technical Specifications - PLI review	2016-11-01	2016-11-14	2016-12-01	2016-12-14	TG	Trn Eng	False	False	True	True	False	False
373	 TMW-B-205-02 devE	Technical Specifications - DM approval	2016-11-15	2016-11-16	2016-12-15	2016-12-16	NL03	NL-Cribb	False	False	True	True	False	False
374	 TMW-B-205-05 devD	Licensing Requirements - PLI review	2016-11-01	2016-11-14	2016-12-01	2016-12-14	TG	Trn Eng	False	False	True	True	False	False
375	 TMW-B-205-05 devE	Licensing Requirements - DM approval	2016-11-15	2016-11-16	2016-12-15	2016-12-16	NL04	NL-Diane	False	False	True	True	False	False
376	 TMW-B-205-06 devD	LER Requirements - PLI review	2016-11-01	2016-11-14	2016-12-01	2016-12-14	TG	Trn Eng	False	False	True	True	False	False
377	 TMW-B-205-06 devE	LER Requirements - DM approval	2016-11-15	2016-11-16	2016-12-15	2016-12-16	NL05	NL-Sanders	False	False	True	True	False	False
378	 TMW-B-205-07 devD	Relief Requests - PLI review	2016-11-01	2016-11-14	2016-12-01	2016-12-14	TG	Trn Eng	False	False	True	True	False	False
379	 TMW-B-205-07 devE	Relief Requests - DM approval	2016-11-15	2016-11-16	2016-12-15	2016-12-16	NL06	NL-Barwick	False	False	True	True	False	False
380	 TMW-B-205-08	FSAR/FPER Changes (qualification)	2016-11-17	2017-01-19	2017-01-03	2017-02-13	NL01	NL-TBD	False	False	True	False	False	False
381	 TMW-B-205-08 devD	FSAR/FPER Changes - PLI review	2016-11-01	2016-11-14	2016-12-01	2016-12-14	TG	Trn Eng	False	False	True	True	False	False
382	 TMW-B-205-08 devE	FSAR/FPER Changes - DM approval	2016-11-15	2016-11-16	2016-12-15	2016-12-16	NL07	NL-Presson	False	False	True	True	False	False
383	 TMW-B-206-01 devD	Engineering Change Development - PLI review	2016-09-28	2016-11-02	2016-09-28	2016-12-02	TG	Trn Eng	False	False	False	True	False	False
384	 TMW-B-206-03 devD	Set Point Control - PLI review	2016-11-01	2016-11-14	2016-12-01	2016-12-14	TG	Trn Eng	False	False	True	True	False	False
385	 TMW-B-206-03 devE	Set Point Control - DM approval	2016-11-15	2016-11-16	2016-12-15	2016-12-16	DM15	DM Eng-DE (Taylor)	False	False	True	True	False	False
386	 TMW-B-206-20 devC01	Human Factors Engineering - impacted group review	2016-11-10	2016-11-11	2016-12-01	2016-12-02	PSE2	Jim Bringley-SupvPSE	False	False	True	True	False	False
387	 TMW-B-206-20 devD	Human Factors Engineering - PLI review	2016-11-14	2016-11-29	2016-12-05	2016-12-16	TG	Trn Eng	False	False	True	True	False	False
388	 TMW-B-206-20 devE	Human Factors Engineering - DM approval	2016-11-30	2016-12-01	2016-12-19	2016-12-20	DM15	DM Eng-DE (Taylor)	False	False	True	False	False	False
389	 TMW-B-207-01 devB	PSE Administration and Indoctrination  - Rev 01 - discipline review (for training use only)	2016-11-01	2016-11-02	2016-11-01	2016-11-02	PSEREV	PSE Review	True	True	False	False	True	True
390	 TMW-B-207-01 devD	PSE Administration and Indoctrination  - Rev 01 - PLI review (for training use only)	2016-11-03	2016-11-11	2016-11-01	2016-11-04	TG	Trn Eng	True	True	False	False	True	True
391	 TMW-B-207-01 devH	PSE Administration and Indoctrination  - Rev 01 - DM approval	2016-11-14	2016-11-15	2016-11-15	2016-11-16	DM16	DM Eng-PSE (Sterdis)	True	True	False	False	True	True
392	 TMW-B-207-02 devB	Preventive Maintenance - discipline review (for training use only)	2016-10-24	2016-11-04	2016-10-24	2016-11-04	PSEREV	PSE Review	False	True	False	False	False	True
393	 TMW-B-207-02 devD	Preventive Maintenance - PLI review (for training use only)	2016-11-21	2016-12-06	2016-12-01	2016-12-14	TG	Trn Eng	False	False	True	False	False	False
394	 TMW-B-207-03 devB	Maintenance Rule for System Engineers  - discipline review (for training use only)	2016-11-01	2016-11-14	2016-11-11	2016-11-11	PSE32	Sonnett-PSE	True	True	False	False	True	True
395	 TMW-B-207-03 devD	Maintenance Rule for System Engineers  - PLI review (for training use only)	2016-11-15	2016-11-30	2016-12-01	2016-12-14	TG	Trn Eng	False	False	True	True	False	False
396	 TMW-B-207-03a	Maintenance Rule for System Engineers (Collaboration) - (qualification) 2 Programs Engineers & 2 PSE Engineers qualified	2016-11-18	2016-11-28	2016-12-05	2016-12-09	PSEQUAL	PSE TMW Qualifications	False	False	True	True	False	False
397	 TMW-B-207-03a devD	Maintenance Rule for System Engineers (Collaboration)  - PLI review (for training use only)	2016-11-01	2016-11-14	2016-11-01	2016-11-04	TG	Trn Eng	True	True	False	False	True	True
398	 TMW-B-207-03a devH	Maintenance Rule for System Engineers (Collaboration)  - DM approval	2016-11-16	2016-11-17	2016-12-01	2016-12-02	DM16	DM Eng-PSE (Sterdis)	False	False	True	True	False	False
399	 TMW-B-207-06 devA	In-Service Inspection - draft	2016-11-30	2016-12-20	2016-11-30	2016-12-20	PSE21	Troficanto-PSE	True	False	False	False	True	False
400	 TMW-B-207-10 devA	Motor Operated Valves - Rev 01 - draft	2016-11-01	2016-11-21	2016-11-01	2016-11-23	PSE16	Felch-PSE	True	True	False	False	True	True
401	 TMW-B-207-10 devB	Motor Operated Valves - Rev 01 - discipline review (for training use only)	2016-11-22	2016-12-07	2016-11-28	2016-12-09	PSE38	Moniri-PSE	True	False	False	False	True	False
402	 TMW-B-207-11 devB	Snubber Program - Rev 01 - discipline review (for training use only)	2016-10-31	2016-11-01	2016-10-31	2016-11-01	PSEREV	PSE Review	False	True	False	False	False	True
403	 TMW-B-207-11 devC01	Snubber Program - Rev 01 - impacted group review (for training use only)	2016-11-14	2016-12-01	2016-11-16	2016-11-17	PSE20	Post-PSE	True	False	False	False	True	True
404	 TMW-B-207-12 devA	Air Operated Valves - Rev 01 -draft	2016-11-01	2016-11-21	2016-11-01	2016-11-23	PSE16	Felch-PSE	True	True	False	False	True	True
405	 TMW-B-207-12 devB	Air Operated Valves - Rev 01 - discipline review (for training use only)	2016-11-22	2016-12-07	2016-11-28	2016-12-09	PSE38	Moniri-PSE	True	False	False	False	True	False
406	 TMW-B-207-14 devA	Boric Acid Leak Inspection - Rev 01 -draft	2016-10-24	2016-11-04	2016-10-24	2016-11-04	PSE20	Post-PSE	False	True	False	False	False	True
407	 TMW-B-207-14 devB	Boric Acid Leak Inspection - Rev 01 - discipline review (for training use only)	2016-11-07	2016-11-11	2016-11-11	2016-11-29	PSE02	Shank-PSE	True	True	False	False	True	True
408	 TMW-B-207-14 devC01	Boric Acid Leak Inspection - Rev 01 - impacted group review (for training use only)	2016-11-14	2016-12-01	2016-11-30	2016-11-30	PSE20	Post-PSE	True	False	False	False	True	True
409	 TMW-B-207-17 devB	Maintenance Rule Program Owner  - discipline review (for training use only)	2016-11-01	2016-11-14	2016-11-11	2016-12-01	PSE32	Sonnett-PSE	True	False	False	True	True	False
410	 TMW-B-207-17 devD	Maintenance Rule Program Owner  - PLI review (for training use only)	2016-11-15	2016-11-30	2016-12-02	2016-12-15	TG	Trn Eng	False	False	True	True	False	False
411	 TMW-B-207-17a	Maintenance Rule Program Owner (Collaboration)  - (qualification) - 2 Programs Engineers qualified	2016-11-18	2016-11-28	2016-12-05	2016-12-09	PROGQUAL	PROGRAMS TMW Qualifications	False	False	True	True	False	False
412	 TMW-B-207-17a devD	Maintenance Rule Program Owner (Collaboration)  - PLI review (for training use only)	2016-11-01	2016-11-14	2016-11-01	2016-11-04	TG	Trn Eng	True	True	False	False	True	True
413	 TMW-B-207-17a devH	Maintenance Rule Program Owner (Collaboration)  - DM approval	2016-11-16	2016-11-17	2016-12-01	2016-12-02	DM16	DM Eng-PSE (Sterdis)	False	False	True	True	False	False
414	 TMW-B-207-18 devA	Plant Lubrication Program - draft	2016-10-17	2016-11-01	2016-10-17	2016-11-01	PSE07	Free-PSE	False	True	False	False	False	True
415	 TMW-B-207-18 devB	Plant Lubrication Program - discipline review (for training use only)	2016-11-07	2016-11-18	2016-11-07	2016-11-07	PSE16	Felch-PSE	True	True	False	False	True	True
416	 TMW-B-207-18 devD	Plant Lubrication Program - PLI review (for training use only)	2016-11-21	2016-12-06	2016-12-01	2016-12-14	TG	Trn Eng	False	False	True	False	False	False
417	 TMW-B-207-19 devD	Heat Exchanger Program - Rev 01 - PLI review (for training use only)	2016-11-01	2016-11-14	2016-12-01	2016-12-14	TG	Trn Eng	False	False	True	True	False	False
418	 TMW-B-207-21 devA	Thermal Performance Program - draft	2016-11-01	2016-11-21	2017-05-01	2017-05-19	PSE29	McLellan-PSE	False	False	True	True	False	False
419	 TMW-B-207-21 devB	Thermal Performance Program - discipline review (for training use only)	2016-11-22	2016-12-07	2017-05-22	2017-06-05	PSEREV	PSE Review	False	False	True	False	False	False
420	 TMW-B-207-22 devA	Equipment Reliability - draft	2016-10-18	2016-11-07	2016-10-18	2016-11-01	PSE33	Yang-PSE	False	True	False	False	False	True
421	 TMW-B-207-22 devB	Equipment Reliability - discipline review (for training use only)	2016-11-08	2016-11-21	2016-11-01	2016-11-01	PSEREV	PSE Review	True	True	False	False	True	True
422	 TMW-B-207-22 devC01	Equipment Reliability - impacted group review(for training use only)	2016-11-22	2016-12-07	2016-11-04	2016-11-10	PSE33	Yang-PSE	True	False	False	False	True	True
423	 TMW-B-207-26 devA	Underground Piping and Tank Integrity Program (UPTIP) - Rev 01 -draft	2016-10-24	2016-11-01	2016-10-24	2016-11-01	PSE02	Shank-PSE	False	True	False	False	False	True
424	 TMW-B-207-26 devB	Underground Piping and Tank Integrity Program (UPTIP) - Rev 01- discipline review (for training use only)	2016-11-14	2016-11-29	2016-11-02	2016-11-02	PSE21	Troficanto-PSE	True	True	False	False	True	True
425	 TMW-B-207-26 devD	Underground Piping and Tank Integrity Program (UPTIP) - Rev 01- PLI review (for training use only)	2016-11-30	2016-12-13	2016-12-01	2016-12-14	TG	Trn Eng	False	False	True	False	False	False
426	 TMW-B-207-28 devA	Leak Reduction Program - Rev 01 - draft	2016-10-17	2016-11-04	2016-10-17	2016-11-02	PSE06	Terry-PSE	False	True	False	False	False	True
427	 TMW-B-207-28 devB	Leak Reduction Program - Rev 01 - discipline review (for training use only)	2016-11-07	2016-11-18	2016-12-01	2016-12-14	PSE5	Himel-SupvPSE	False	False	True	True	False	False
428	 TMW-B-207-28 devD	Leak Reduction Program - Rev 01 - PLI review (for training use only)	2016-11-21	2016-12-06	2016-12-15	2016-12-30	TG	Trn Eng	False	False	True	False	False	False
429	 TMW-B-207-29 devD	Flow Accelerated Corrosion - Rev 01 - PLI review (for training use only)	2016-11-01	2016-11-14	2016-12-01	2016-12-14	TG	Trn Eng	False	False	True	True	False	False
430	 TMW-B-207-30 devD	Motor Reliability - PLI review (for training use only)	2016-10-17	2016-11-01	2016-10-17	2016-12-01	TG	Trn Eng	False	False	False	True	False	False
431	 TMW-B-207-31 devA	Batteries Monitoring and Maintenance Program - Rev 01 -draft	2016-10-21	2016-11-02	2016-10-21	2016-11-01	PSE04	Schmick-PSE	False	True	False	False	False	True
432	 TMW-B-207-31 devB	Batteries Monitoring and Maintenance Program - Rev 01 - discipline review (for training use only)	2016-11-03	2016-11-11	2016-11-01	2016-11-02	DE16	Gibson-DE	True	True	False	False	True	True
433	 TMW-B-207-31 devD	Batteries Monitoring and Maintenance Program - Rev 01 - PLI review (for training use only)	2016-11-30	2016-12-06	2016-12-01	2016-12-07	TG	Trn Eng	False	False	True	False	False	False
434	 TMW-B-207-32 devB	Steam Generator - Rev 01 - discipline review (for training use only)	2016-11-01	2016-11-14	2016-11-09	2016-11-10	PSE3	Mike Fanguy-SupvPSE	True	True	False	False	True	True
435	 TMW-B-207-32 devD	Steam Generator - Rev 01 - PLI review (for training use only)	2016-11-15	2016-11-30	2016-11-15	2016-12-05	TG	Trn Eng	True	False	False	True	True	False
436	 TMW-B-207-33 devB	Steam Turbine - Rev 01 - discipline review (for training use only)	2016-11-01	2016-11-14	2016-11-11	2016-11-23	PSE27	Dao-PSE	True	True	False	False	True	True
437	 TMW-B-207-33 devD	Steam Turbine - Rev 01 - PLI review (for training use only)	2016-11-15	2016-11-30	2016-12-01	2016-12-14	TG	Trn Eng	False	False	True	True	False	False
438	 TMW-B-207-35 devB	Fatigue Monitoring Program - Rev 01 - discipline review (for training use only)	2016-11-01	2016-11-14	2016-11-04	2016-11-14	PSE21	Troficanto-PSE	True	True	False	False	True	True
439	 TMW-B-207-35 devD	Fatigue Monitoring Program - Rev 01 - PLI review (for training use only)	2016-11-15	2016-11-30	2016-12-01	2016-12-14	TG	Trn Eng	False	False	True	True	False	False
440	 TMW-B-207-37 devC01	Breaker Program Training - Rev 01 - impacted group review (for training use only)	2016-11-15	2016-11-30	2016-11-01	2016-11-08	PSE03	Ramage-PSE	True	True	False	False	True	True
441	 TMW-B-207-39 devD	Pumps - PLI review (for training use only)	2016-10-17	2016-11-01	2016-10-17	2016-12-01	TG	Trn Eng	False	False	False	True	False	False
442	 TMW-B-207-42 devA	Environmental Equipment Qualification (Advanced) - Rev 01 -draft	2016-10-17	2016-11-01	2016-10-17	2016-11-01	PSE22	Garrett-PSE	False	True	False	False	False	True
443	 TMW-B-207-42 devB	Environmental Equipment Qualification (Advanced) - Rev 01 - discipline review (for training use only)	2016-11-02	2016-11-08	2016-11-02	2016-11-07	PSE1	Kenneth Leonelli-SupvPSE	True	True	False	False	True	True
444	 TMW-B-207-42 devC01	Environmental Equipment Qualification (Advanced) - Rev 01 - impacted group review (for training use only)	2016-11-09	2016-11-22	2016-11-08	2016-11-17	PSE22	Garrett-PSE	True	True	False	False	True	True
445	 TMW-B-207-42 devD	Environmental Equipment Qualification (Advanced) - Rev 01 - PLI review (for training use only)	2016-11-23	2016-12-08	2016-12-01	2016-12-13	TG	Trn Eng	False	False	True	False	False	False
446	 TMW-B-207-XX devA	LEFM - draft	2016-11-01	2016-11-21	2017-05-01	2017-05-19	PSE29	McLellan-PSE	False	False	True	True	False	False
447	 TMW-B-207-XX devB	LEFM - discipline review (for training use only)	2016-11-22	2016-12-07	2017-05-22	2017-06-05	PSEREV	PSE Review	False	False	True	False	False	False
448	 TMW-B-208-01 devA	PRA - Overview - draft	2016-11-01	2016-11-07	2016-11-01	2016-11-07	E65	Tampas-PRA	True	True	False	False	True	True
449	 TMW-B-208-01 devB	PRA - Overview - discipline review	2016-11-08	2016-11-09	2016-11-07	2016-11-10	E67	Sajjad-PRA	True	True	False	False	True	True
450	 TMW-B-208-01 devC01	PRA - Overview - impacted group review	2016-11-10	2016-11-11	2017-04-03	2017-04-04	EC	PRA	False	False	True	True	False	False
451	 TMW-B-208-03 devA	PRA - Risk Assessment - draft	2016-11-01	2016-11-07	2016-11-01	2016-11-07	E67	Sajjad-PRA	True	True	False	False	True	True
452	 TMW-B-208-03 devB	PRA - Risk Assessment - discipline review	2016-11-08	2016-11-09	2016-11-28	2016-12-02	E65	Tampas-PRA	True	False	False	True	True	False
453	 TMW-B-208-03 devC01	PRA - Risk Assessment - impacted group review	2016-11-10	2016-11-11	2017-04-03	2017-04-04	EC	PRA	False	False	True	True	False	False
454	 TMW-B-209-03 devD	Software Quality Assurance (SQA) - Rev 01 - PLI review (for training use only)	2016-10-11	2016-11-02	2016-10-11	2016-12-02	TG	Trn Eng	False	False	False	True	False	False
455	 TMW-B-209-04 devD	Digital Maintenance - Rev 01 - PLI review (for training use only)	2016-10-07	2016-11-03	2016-10-07	2016-12-05	TG	Trn Eng	False	False	False	True	False	False
456	 TOSFEG1030	SCE&G Initial Review of FEG Mapping	2016-11-16	2016-11-22	2016-12-01	2016-12-07	PSE-34	Dao-PSE FEG	False	False	True	True	False	False
457	 TOSFID130	SCE&G Component Classification	2016-11-30	2016-12-13	2017-01-06	2017-01-19	PSE-36	Yang-PSE ER	False	False	True	False	False	False
458	 TOSMR1290	SCE&G  MR Expert Panel Meeting	2016-11-04	2016-11-04	2016-12-01	2016-12-01	PSE-37	Sonnett-PSE PM/MR	False	False	True	True	False	False
459	 TOSMR1330	MR Performance Criteria Expert Panel Comment Resolution	2016-11-15	2016-11-21	2016-12-09	2016-12-15	PSE-37	Sonnett-PSE PM/MR	False	False	True	True	False	False
460	 TRN-ILO-P100	Provisional Qual Development - NLO	2016-11-01	2017-01-30	2016-12-01	2017-02-27	DM18	Supv Ops Trn	False	False	True	False	False	False
461	 TRN-NLO-P100	Provisional Qual Development - ILO	2016-11-01	2017-01-30	2016-12-01	2017-02-27	DM18	Supv Ops Trn	False	False	True	False	False	False
462	 TSC-HVAC-003.05	30% Conceptual Design review	2016-11-04	2016-11-21	2016-11-30	2016-12-15	DE01	Guevara-DE	True	False	False	True	True	False
463	 TSC-HVAC-003.06	30% Conceptual Design Presentation	2016-11-22	2016-12-15	2016-12-16	2017-01-11	DE01	Guevara-DE	False	False	True	False	False	False
464	 TSC-HVAC-004.05	TSC HVAC - Filtration Unit Spec Sign out	2016-11-01	2016-11-14	2016-11-21	2016-12-06	DE06	Watkins-DE	True	False	False	True	True	False
465	 TSC-HVAC-004.06	TSC HVAC - Filtration Unit BID SPECS AND Vendor selection-issue PO	2016-11-15	2016-11-15	2016-12-07	2016-12-07	DE06	Watkins-DE	False	False	True	True	False	False
466	 VC2-CHM-0701d	Primary System Data Reporting - Rev00 - Approval	2016-11-03	2016-11-16	2016-11-01	2016-12-15	CH	Chem	True	False	False	True	True	False
467	 VC2-CHM-0702c	Secondary System Data Reporting - Rev00 - Review	2016-10-31	2016-11-30	2016-10-31	2016-12-15	CH	Chem	False	False	False	True	False	False
468	 VC2-CHM-2501c01	Operation of Demineralized Water Treatment System - Rev00 - Review	2016-10-31	2016-11-30	2016-10-31	2016-12-15	CH	Chem	False	False	False	True	False	False
469	 VC2-CHM-7305a	Primary to Secondary Leakage Rate Determination - Rev00 - Preparation	2016-11-01	2016-11-07	2016-11-01	2016-11-07	CH	Chem	True	True	False	False	True	True
470	 VC2-CHM-7305b	Primary to Secondary Leakage Rate Determination - Rev00 - Draft	2016-11-08	2016-11-30	2016-11-08	2016-12-15	CH	Chem	True	False	False	True	True	False
471	 VC2-SOP-DAS-0001b	Diverse Actuation System (APP-DAS-GJP-101) - Rev00 - Draft	2016-11-30	2016-12-06	2017-02-01	2017-02-07	OP	Ops Proc	False	False	True	False	False	False
472	 VC2-SOP-FWS-0002b	Field Walkdown/Validate (APP-FWS-GJP-102) Startup Feedwater System - Rev00 - Draft	2016-11-30	2016-12-29	2017-02-01	2017-02-28	OP	Ops Proc	False	False	True	False	False	False
473	 VC2-STP-PMS-1007b	ESF Safety Feature Actuation Logic Test (APP-PMS-GJP-807) - Rev00 - Draft	2016-10-21	2016-11-08	2017-03-01	2017-03-17	OP	Ops Proc	False	False	False	True	False	False
474	 VC2-STP-PMS-1007c01	ESF Safety Feature Actuation Logic Test (APP-PMS-GJP-807) - Rev00 - Review	2016-11-09	2016-12-09	2017-03-20	2017-04-18	O2	Ops SL	False	False	True	False	False	False
475	 VC2-STP-PXS-1014b	PRHR HX Heat Transfer Operability 10 Year (APP-PXS-GJP-814)- Rev00 -Draft	2016-10-21	2016-11-02	2017-03-02	2017-03-10	OP	Ops Proc	False	False	False	True	False	False
476	 VC2-STP-PXS-1014c01	PRHR HX Heat Transfer Operability 10 Year (APP-PXS-GJP-814) - Rev00 - Review	2016-11-03	2016-12-05	2017-03-13	2017-04-10	O2	Ops SL	False	False	True	False	False	False
477	 VC2-STP-PXS-1032a	Division B - Containment High Range Radiation Monitor Calibration (APP-PXS-GJP-832) - Rev00 - Preparation	2016-11-02	2016-11-02	2017-03-02	2017-03-02	OP	Ops Proc	False	False	True	True	False	False
478	 VC2-STP-ZOS-1003b	Diesel Generator A - 10 Year Operational Test (APP-ZOS-GJP-803) - Rev00 - Draft	2016-10-21	2016-11-17	2016-12-01	2016-12-30	OP	Ops Proc	False	False	False	True	False	False
479	 VC2-STP-ZOS-1003c01	Diesel Generator A - 10 Year Operational Test (APP-ZOS-GJP-803) - Rev00 - Review	2016-11-18	2016-12-20	2017-01-03	2017-01-31	O2	Ops SL	False	False	True	False	False	False
480	 VCB-AA-01b	Design Analysis Assumptions - Rev00 - Draft	2016-10-19	2016-11-08	2016-10-19	2016-11-08	DE02	Howell-DE	False	True	False	False	False	True
481	 VCB-AA-01c01	Design Analysis Assumptions - Rev00 - Review	2016-11-09	2016-12-09	2016-11-09	2016-11-28	DE02	Howell-DE	True	False	False	False	True	True
482	 VCB-AA-01CW	Design Analysis Assumptions - Rev00 - C-Res1	2016-12-12	2016-12-20	2016-11-28	2016-11-29	DE02	Howell-DE	False	False	False	False	True	True
483	 VCB-AA-01CY	Design Analysis Assumptions - Rev00 - C-5059	2016-12-21	2017-01-12	2016-11-28	2016-11-29	DE02	Howell-DE	False	False	False	False	True	True
484	 VCB-AA-01d	Design Analysis Assumptions - Rev00 - Approval	2017-01-24	2017-02-06	2016-11-28	2016-11-29	DE02	Howell-DE	False	False	False	False	True	True
485	 VCB-CHM-0040c01	Chemistry Self-Assesment - Rev00 - Review	2016-10-31	2016-11-30	2016-10-31	2016-12-20	CH	Chem	False	False	False	True	False	False
486	 VCB-CHM-0210c	Data collection for WANO, NRC, and NOD performance indicators - Rev00 - Review	2016-10-31	2016-11-30	2016-10-31	2016-12-15	CH	Chem	False	False	False	True	False	False
487	 VCB-CHM-0211c	Operation of EpriWorks Software - Rev00 - Review	2016-10-31	2016-11-30	2016-10-31	2016-11-30	CH	Chem	False	True	False	False	False	True
488	 VCB-CHM-0220d	Chemical additive evaluation and implementation - Rev00 - Approval	2016-10-19	2016-11-01	2016-10-19	2016-11-02	CH	Chem	False	True	False	False	False	True
489	 VCB-CHM-1130d	Boric Acid Deposit Sampling Method - Rev00 - Approval	2016-11-01	2016-11-07	2016-11-18	2016-11-18	CH	Chem	True	True	False	False	True	True
490	 VCB-CHM-2199d	Chemical Hideout Return - Rev00 - Approval	2016-11-01	2016-11-14	2016-11-01	2016-11-18	CH	Chem	True	True	False	False	True	True
491	 VCB-CHM-2401c01	Secondary Systems Layup - Rev00 - Review	2016-10-14	2016-11-11	2016-10-14	2016-12-15	CH	Chem	False	False	False	True	False	False
492	 VCB-CHM-2401d	Secondary Systems Layup - Rev00 - Approval	2016-11-14	2016-12-06	2016-12-16	2017-01-10	CH	Chem	False	False	True	False	False	False
493	 VCB-CHM-7301a	Tritium Determination - Rev00 - Preparation	2016-11-01	2016-11-07	2016-11-01	2016-11-07	CH	Chem	True	True	False	False	True	True
494	 VCB-CHM-7301b	Tritium Determination - Rev00 - Draft	2016-11-08	2016-11-30	2016-11-08	2016-11-28	CH	Chem	True	True	False	False	True	True
495	 VCB-CHM-7302b	Dose Equivalent Iodine Determination - Rev00 - Draft	2016-10-10	2016-11-18	2016-10-10	2016-11-18	CH	Chem	False	True	False	False	False	True
496	 VCB-CHM-7302c01	Dose Equivalent Iodine Determination - Rev00 - Review	2016-11-21	2016-12-21	2016-11-21	2016-12-29	CH	Chem	True	False	False	False	True	False
497	 VCB-CHM-7303b	Dose Equivalent  Xenon Determination - Rev00 - Draft	2016-10-10	2016-11-18	2016-10-10	2016-12-06	CH	Chem	False	False	False	True	False	False
498	 VCB-CHM-7303c01	Dose Equivalent  Xenon Determination - Rev00 - Review	2016-11-21	2016-12-21	2016-12-07	2017-01-09	CH	Chem	False	False	True	False	False	False
499	 VCB-CHM-7304b	Degassed Gross Activity Determination - Rev00 - Draft	2016-10-10	2016-11-18	2016-10-10	2016-11-21	CH	Chem	False	True	False	False	False	True
500	 VCB-CHM-7304c01	Degassed Gross Activity Determination - Rev00 - Review	2016-11-21	2016-12-21	2016-12-01	2017-01-03	CH	Chem	False	False	True	False	False	False
501	 VCB-CSPP-1000d	Global Cyber Security Procedure - Rev00 - Approval	2016-04-18	2016-11-01	2016-04-18	2016-12-01	DM16	DM Eng-PSE (Sterdis)	False	False	False	True	False	False
502	 VCB-CSPP-1001c01	Plant Digital Asset Control of Removable Media / Devices - Rev00 - Review	2016-10-31	2016-12-06	2016-10-31	2016-11-29	PSE11	Jacome-PSE	False	False	False	False	False	True
503	 VCB-CSPP-1001CX	Plant Digital Asset Control of Removable Media / Devices - Rev00 - C-QR	2016-11-01	2016-11-18	2016-12-12	2016-12-12	PSE2	Jim Bringley-SupvPSE	False	False	True	True	False	False
504	 VCB-CSPP-1001CY	Plant Digital Asset Control of Removable Media / Devices - Rev00 - C-5059	2016-10-28	2016-11-16	2016-10-28	2016-11-02	PSEREV	PSE Review	False	True	False	False	False	True
505	 VCB-CSPP-1001CZ	Plant Digital Asset Control of Removable Media / Devices - Rev00 - C-Res2	2016-11-21	2016-12-01	2016-12-13	2016-12-21	PSE11	Jacome-PSE	False	False	True	False	False	False
506	 VCB-CSPP-1002CY	Critical Systems (CS), Digital Asset (DA), and Critical Digital Asset (CDA) Identification - Rev00 - C-5059	2016-10-13	2016-11-01	2016-10-13	2016-11-28	PSE2	Jim Bringley-SupvPSE	False	True	False	False	False	True
507	 VCB-CSPP-1002d	Critical Systems (CS), Digital Asset (DA), and Critical Digital Asset (CDA) Identification - Rev00 - Approval	2016-11-01	2016-11-14	2017-01-03	2017-01-16	DM16	DM Eng-PSE (Sterdis)	False	False	True	True	False	False
508	 VCB-CSPP-1004d	Cyber Security Assessment of Critical Digital Assets - Rev00 - Approval	2016-11-01	2016-11-14	2016-12-01	2016-12-14	DM16	DM Eng-PSE (Sterdis)	False	False	True	True	False	False
509	 VCB-CSPP-1005CX	Security Control Implementation Strategy - Rev00 - C-QR	2016-11-01	2016-11-18	2016-11-28	2016-11-29	PSE2	Jim Bringley-SupvPSE	True	True	False	False	True	True
510	 VCB-CSPP-1005CY	Security Control Implementation Strategy - Rev00 - C-5059	2016-11-01	2016-11-18	2016-11-01	2016-11-02	PSEREV	PSE Review	True	True	False	False	True	True
511	 VCB-CSPP-1005CZ	Security Control Implementation Strategy - Rev00 - C-Res2	2016-11-21	2016-12-01	2016-11-29	2016-11-29	PSE11	Jacome-PSE	True	False	False	False	True	True
512	 VCB-CSPP-1015a	SYSTEM AND INFORMATION INTEGRITY - Rev00 - Preparation	2016-11-01	2016-11-07	2016-11-01	2016-11-07	PSE11	Jacome-PSE	True	True	False	False	True	True
513	 VCB-CSPP-1015b	SYSTEM AND INFORMATION INTEGRITY - Rev00 - Draft	2016-11-08	2016-11-30	2016-11-08	2016-11-21	PSE11	Jacome-PSE	True	True	False	False	True	True
514	 VCB-CSPP-1015c01	SYSTEM AND INFORMATION INTEGRITY - Rev00 - Review	2016-12-01	2017-01-03	2016-11-21	2016-12-21	PSE11	Jacome-PSE	False	False	False	False	True	False
515	 VCB-CSPP-1025CZ	Incident Response - Rev00 - C-Res2	2016-11-01	2016-11-09	2016-11-04	2016-11-07	PSE11	Jacome-PSE	True	True	False	False	True	True
516	 VCB-CSPP-1025d	Incident Response - Rev00 - Approval	2016-11-10	2016-11-23	2017-01-09	2017-01-20	DM16	DM Eng-PSE (Sterdis)	False	False	True	True	False	False
517	 VCB-CSPP-1030a	CYBER SECURITY CONTINGENCY PLANNING - Rev00 - Preparation	2017-03-01	2017-03-07	2016-11-21	2016-11-22	PSE11	Jacome-PSE	False	False	False	False	True	True
518	 VCB-CSPP-1030b	CYBER SECURITY CONTINGENCY PLANNING - Rev00 - Draft	2017-03-08	2017-03-28	2016-11-23	2016-11-23	PSE11	Jacome-PSE	False	False	False	False	True	True
519	 VCB-CSPP-1030c01	CYBER SECURITY CONTINGENCY PLANNING - Rev00 - Review	2017-03-29	2017-04-27	2016-11-28	2016-12-28	PSE11	Jacome-PSE	False	False	False	False	True	False
520	 VCB-CSPP-1035a	CYBER SECURITY CONFIGURATION MANAGEMENT - Rev00 - Preparation	2017-03-01	2017-03-07	2016-11-21	2016-11-22	PSE11	Jacome-PSE	False	False	False	False	True	True
521	 VCB-CSPP-1035b	CYBER SECURITY CONFIGURATION MANAGEMENT - Rev00 - Draft	2017-03-08	2017-03-28	2016-11-23	2016-11-23	PSE11	Jacome-PSE	False	False	False	False	True	True
522	 VCB-CSPP-1035c01	CYBER SECURITY CONFIGURATION MANAGEMENT - Rev00 - Review	2017-03-29	2017-04-27	2016-11-28	2016-12-28	PSE11	Jacome-PSE	False	False	False	False	True	False
523	 VCB-CSPP-1050CX	ACCESS CONTROL - Rev00 - C-QR	2016-10-31	2016-11-17	2016-10-31	2016-11-07	PSE2	Jim Bringley-SupvPSE	False	True	False	False	False	True
524	 VCB-CSPP-1050CY	ACCESS CONTROL - Rev00 - C-5059	2016-10-28	2016-11-16	2016-10-28	2016-11-01	PSE2	Jim Bringley-SupvPSE	False	True	False	False	False	True
525	 VCB-CSPP-1050CZ	ACCESS CONTROL - Rev00 - C-Res2	2016-11-18	2016-11-30	2016-11-08	2016-11-16	PSE11	Jacome-PSE	True	True	False	False	True	True
526	 VCB-CSPP-1070a	Critical Digital Asset and Communication Protection - Rev00 - Preparation	2016-11-01	2016-11-07	2016-11-01	2016-11-07	PSE11	Jacome-PSE	True	True	False	False	True	True
527	 VCB-CSPP-1070b	Critical Digital Asset and Communication Protection - Rev00 - Draft	2016-11-08	2016-11-30	2016-11-08	2016-12-05	PSE11	Jacome-PSE	True	False	False	True	True	False
528	 VCB-CSPP-1080b	IDENTIFICATION AND AUTHENTICATION - Rev00 - Draft	2016-10-24	2016-11-22	2016-10-31	2016-11-01	PSE11	Jacome-PSE	False	True	False	False	False	True
529	 VCB-CSPP-1080c01	IDENTIFICATION AND AUTHENTICATION - Rev00 - Review	2016-11-23	2016-12-27	2016-11-02	2016-12-19	PSE11	Jacome-PSE	True	False	False	False	True	False
530	 VCB-CSPP-1080CX	IDENTIFICATION AND AUTHENTICATION - Rev00 - C-QR	2016-11-23	2016-12-14	2016-12-20	2017-01-06	PSE2	Jim Bringley-SupvPSE	False	False	True	False	False	False
531	 VCB-CSPP-1080CY	IDENTIFICATION AND AUTHENTICATION - Rev00 - C-5059	2016-11-23	2016-12-14	2016-12-01	2016-12-20	PSE2	Jim Bringley-SupvPSE	False	False	True	False	False	False
532	 VCB-CSPP-1090CX	System Hardening Procedure - Rev00 - C-QR	2016-11-01	2016-11-18	2016-11-28	2016-11-29	PSE2	Jim Bringley-SupvPSE	True	True	False	False	True	True
533	 VCB-CSPP-1090CY	System Hardening Procedure - Rev00 - C-5059	2016-10-28	2016-11-16	2016-10-28	2016-11-02	PSEREV	PSE Review	False	True	False	False	False	True
534	 VCB-CSPP-1090CZ	System Hardening Procedure - Rev00 - C-Res2	2016-11-21	2016-12-01	2016-11-29	2016-12-01	PSE11	Jacome-PSE	True	False	False	False	True	False
535	 VCB-EE-09a	NFPA 804 Circuit Selection, Circuit Analysis, and Circuit Routing - Rev00 - Preparation	2016-11-01	2016-11-07	2016-12-01	2016-12-07	PSE34	FP-PSE	False	False	True	True	False	False
536	 VCB-EE-09b	NFPA 804 Circuit Selection, Circuit Analysis, and Circuit Routing - Rev00 - Draft	2016-11-08	2016-11-30	2016-12-08	2016-12-30	PSE34	FP-PSE	False	False	True	True	False	False
537	 VCB-EE-10a	NFPA 804 Multiple Spurious Operations - Rev00 - Preparation	2016-11-01	2016-11-07	2016-12-01	2016-12-07	PSE34	FP-PSE	False	False	True	True	False	False
538	 VCB-EE-10b	NFPA 804 Multiple Spurious Operations - Rev00 - Draft	2016-11-08	2016-11-30	2016-12-08	2016-12-30	PSE34	FP-PSE	False	False	True	True	False	False
539	 VCB-EMP-CBL-3100c01	EGS CONNECTOR MAINTENANCE - Rev00 - Review	2016-11-28	2016-12-28	2016-11-28	2016-12-28	MEP	Elec proc	True	False	False	False	True	False
540	 VCB-EMP-EDS-2100c01	Monthly / Quarterly / Yearly Battery Inspection - Rev00 - Review	2016-10-24	2016-11-21	2016-10-24	2016-11-16	MEP	Elec proc	False	True	False	False	False	True
541	 VCB-EMP-EDS-2100CW	Monthly / Quarterly / Yearly Battery Inspection - Rev00 - C-Res1	2016-11-22	2016-12-02	2016-11-28	2016-12-06	MEP	Elec proc	True	False	False	False	True	False
542	 VCB-EMP-EDS-3104c01	NON-1E SPARE BATTERY CELL INSTALLATION & REMOVAL - Rev00 - Review	2016-11-28	2016-12-28	2016-11-28	2016-12-28	MEP	Elec proc	True	False	False	False	True	False
543	 VCB-EMP-IDS-3103CZ	REMOVAL OF 1E BATTERY CELLS FROM SERVICE - Rev00 - C-Res2	2016-10-31	2016-11-11	2016-10-31	2016-11-11	MEP	Elec proc	False	True	False	False	False	True
544	 VCB-EMP-IDS-3103d	REMOVAL OF 1E BATTERY CELLS FROM SERVICE - Rev00 - Approval	2016-11-14	2016-11-16	2016-11-14	2016-11-29	MEP	Elec proc	True	True	False	False	True	True
545	 VCB-EMP-MTR-2101CZ	SMALL AC MOTOR MAINTENANCE (<200HP) - Rev00 - C-Res2	2016-11-07	2016-11-15	2016-11-07	2016-11-16	MEP	Elec proc	True	True	False	False	True	True
546	 VCB-EMP-MTR-2101d	SMALL AC MOTOR MAINTENANCE (<200HP) - Rev00 - Approval	2016-11-16	2016-11-18	2016-11-16	2016-11-29	MEP	Elec proc	True	True	False	False	True	True
547	 VCB-EMP-MTR-2102CZ	LARGE AC MOTOR MAINTENANCE (6.9kV and 480v >200hp) - Rev00 - C-Res2	2016-11-07	2016-11-15	2016-11-07	2016-11-16	MEP	Elec proc	True	True	False	False	True	True
548	 VCB-EMP-MTR-2102d	LARGE AC MOTOR MAINTENANCE (6.9kV and 480v >200hp) - Rev00 - Approval	2016-11-16	2016-11-18	2016-11-16	2016-11-29	MEP	Elec proc	True	True	False	False	True	True
549	 VCB-EMP-RLY-4301b	86B-ES1 - LOCKOUT RELAY FUNCTIONAL TESTING - Rev00 - Draft	2016-04-08	2016-11-30	2016-04-08	2016-11-29	MEC	Elec craft	False	True	False	False	False	True
550	 VCB-EMP-RLY-4302b	86B-ES2 - LOCKOUT RELAY FUNCTIONAL TESTING - Rev00 - Draft	2016-04-15	2016-11-30	2016-04-15	2016-11-29	MEC	Elec craft	False	True	False	False	False	True
551	 VCB-EMP-RLY-4303b	86B-ES3 - LOCKOUT RELAY FUNCTIONAL TESTING - Rev00 - Draft	2016-04-15	2016-11-30	2016-04-15	2016-11-29	MEC	Elec craft	False	True	False	False	False	True
552	 VCB-EMP-RLY-4304b	86B-ES4 - LOCKOUT RELAY FUNCTIONAL TESTING - Rev00 - Draft	2016-03-18	2016-11-30	2016-03-18	2016-11-29	MEC	Elec craft	False	True	False	False	False	True
553	 VCB-EMP-RLY-4308c01	86ET1 - LOCKOUT RELAY FUNCTIONAL TESTING - Rev00 - Review	2016-10-25	2016-11-22	2016-10-25	2016-11-28	MEP	Elec proc	False	True	False	False	False	True
554	 VCB-EMP-RLY-4308cW	86ET1 - LOCKOUT RELAY FUNCTIONAL TESTING - Rev00 - C-Res1	2016-11-23	2016-12-05	2016-11-28	2016-12-06	MEP	Elec proc	True	False	False	False	True	False
555	 VCB-EMP-SWG-3101c01	MAINTENANCE OF MEDIUM VOLTAGE GROUNDS - Rev00 - Review	2016-11-18	2016-12-20	2016-11-18	2016-12-20	MEP	Elec proc	True	False	False	False	True	False
556	 VCB-EMP-SWG-3102c01	6.9 KV GROUND & TEST DEVICE INSTALLATION / REMOVAL - Rev00 - Review	2016-11-29	2016-12-20	2016-11-29	2016-12-20	MEP	Elec proc	True	False	False	False	True	False
557	 VCB-EMP-XFM-4203b	UAT 2C TRANSFORMER SERVICE TEST - Rev00 - Draft	2016-10-03	2016-11-29	2016-10-03	2016-11-29	MEC	Elec craft	False	True	False	False	False	True
558	 VCB-EPMP-0109a	ERO EQUIPMENT TRACKING AND REPORTING - Rev00 - Preparation	2016-11-14	2016-11-28	2017-01-12	2017-01-24	EP2	EP	False	False	True	True	False	False
559	 VCB-EPMP-0109b	ERO EQUIPMENT TRACKING AND REPORTING - Rev00 - Draft	2016-11-29	2017-01-12	2017-01-25	2017-03-07	EP2	EP	False	False	True	False	False	False
560	 VCB-EPP-0027a	Hostile Action- Units 2 & 3 (See VC2-AOP-901) - Rev00 - Preparation	2016-09-29	2016-11-16	2016-09-29	2016-11-22	EP2	EP	False	True	False	False	False	True
561	 VCB-EPP-0027b	Hostile Action- Units 2 & 3 (See VC2-AOP-901) - Rev00 - Draft	2016-11-17	2016-12-02	2016-11-22	2017-01-17	EP2	EP	True	False	False	False	True	False
562	 VCB-ES-0114a	DESIGN ENGINEERING SOFTWARE CONTROLS - Rev00 - Preparation	2016-11-01	2016-11-07	2016-11-07	2016-11-11	DE14	Purdy-DE	True	True	False	False	True	True
563	 VCB-ES-0114b	DESIGN ENGINEERING SOFTWARE CONTROLS - Rev00 - Draft	2016-11-08	2016-12-09	2016-11-14	2016-12-15	DE14	Purdy-DE	True	False	False	False	True	False
564	 VCB-ES-0319a	Procurement Equivalency Evaluation Process - Rev00 - Preparation	2016-11-01	2016-11-07	2016-11-01	2016-11-07	DE02	Howell-DE	True	True	False	False	True	True
565	 VCB-ES-0319b	Procurement Equivalency Evaluation Process - Rev00 - Draft	2016-11-08	2016-11-30	2016-11-08	2016-11-30	DE02	Howell-DE	True	True	False	False	True	True
566	 VCB-ES-0401b	Thermal Fatigue Monitoring Program - Rev00 - Draft	2016-11-01	2016-11-21	2016-11-01	2016-11-21	PSE19	McCorvey-PSE	True	True	False	False	True	True
567	 VCB-ES-0401c01	Thermal Fatigue Monitoring Program - Rev00 - Review	2016-11-22	2016-12-21	2016-11-22	2016-12-21	PSE19	McCorvey-PSE	True	False	False	False	True	False
568	 VCB-ES-0403c	TEMPORARY BYPASS JUMPER AND LIFTED LEAD REVIEW - Rev00 - Review	2016-11-01	2016-12-01	2017-02-13	2017-03-13	PSE04	Schmick-PSE	False	False	True	False	False	False
569	 VCB-ES-0403CX	TEMPORARY BYPASS JUMPER AND LIFTED LEAD REVIEW - Rev00 - C-QR	2016-11-01	2016-11-18	2017-02-13	2017-03-02	PSE08	Earnest-PSE	False	False	True	True	False	False
570	 VCB-ES-0403CY	TEMPORARY BYPASS JUMPER AND LIFTED LEAD REVIEW - Rev00 - C-5059	2016-11-01	2016-11-18	2017-02-13	2017-03-02	PSE08	Earnest-PSE	False	False	True	True	False	False
571	 VCB-ES-0403CZ	TEMPORARY BYPASS JUMPER AND LIFTED LEAD REVIEW - Rev00 - C-Res2	2016-11-21	2016-12-01	2017-03-03	2017-03-13	PSE04	Schmick-PSE	False	False	True	False	False	False
572	 VCB-ES-0410d	Administrative Document Only Change Control - Rev01 - Approval	2016-10-28	2016-11-16	2016-10-28	2016-11-01	DE55	Ly-Cont-DE	False	True	False	False	False	True
573	 VCB-ES-0411CZ	Equipment Classifications - Rev02 - C-Res2	2016-10-27	2016-11-04	2016-10-27	2016-11-04	DE13	Lwin-DE	False	True	False	False	False	True
574	 VCB-ES-0411d	Equipment Classifications - Rev02 - Approval	2016-11-07	2016-11-18	2016-11-21	2016-11-22	DM15	DM Eng-DE (Taylor)	True	True	False	False	True	True
575	 VCB-ES-0419d	Design Control EQUIVALENT CHANGES - Rev01 - Approval	2016-10-28	2016-11-10	2016-10-28	2016-11-04	DE55	Ly-Cont-DE	False	True	False	False	False	True
576	 VCB-ES-0422CX	Erosion Control - Rev00 - C-QR	2016-11-01	2016-11-18	2016-11-04	2016-11-18	PSE21	Troficanto-PSE	True	True	False	False	True	True
577	 VCB-ES-0422CY	Erosion Control - Rev00 - C-5059	2016-11-01	2016-11-18	2016-11-04	2016-11-22	PSE20	Post-PSE	True	True	False	False	True	True
578	 VCB-ES-0422CZ	Erosion Control - Rev00 - C-Res2	2016-11-21	2016-12-01	2016-11-23	2016-12-06	PSE17	Metzger-PSE	True	False	False	False	True	False
579	 VCB-ES-0438b	CONTAINMENT INSERVICE INSPECTION PROGRAM - Rev00 - Draft	2016-09-26	2016-11-18	2016-09-26	2016-11-18	PSE21	Troficanto-PSE	False	True	False	False	False	True
580	 VCB-ES-0438c01	CONTAINMENT INSERVICE INSPECTION PROGRAM - Rev00 - Review	2016-11-21	2016-12-21	2016-11-21	2016-12-20	PSE21	Troficanto-PSE	True	False	False	False	True	False
581	 VCB-ES-0438CX	CONTAINMENT INSERVICE INSPECTION PROGRAM - Rev00 - C-QR	2016-11-21	2016-12-12	2016-11-30	2016-12-19	PSE02	Shank-PSE	True	False	False	False	True	False
582	 VCB-ES-0438CY	CONTAINMENT INSERVICE INSPECTION PROGRAM - Rev00 - C-5059	2016-11-21	2016-12-12	2016-11-21	2016-12-12	PSE21	Troficanto-PSE	True	False	False	False	True	False
583	 VCB-ES-0439b	INSERVICE EXAMINATION PROGRAM CONTROLS - Rev00 - Draft	2016-09-26	2016-11-18	2016-09-26	2016-11-18	PSE21	Troficanto-PSE	False	True	False	False	False	True
584	 VCB-ES-0439c01	INSERVICE EXAMINATION PROGRAM CONTROLS - Rev00 - Review	2016-11-21	2016-12-21	2016-11-21	2016-12-21	PSE21	Troficanto-PSE	True	False	False	False	True	False
585	 VCB-ES-0439cx	INSERVICE EXAMINATION PROGRAM CONTROLS - Rev00 - C-QR	2016-11-21	2016-12-12	2016-11-30	2016-12-19	PSE02	Shank-PSE	True	False	False	False	True	False
586	 VCB-ES-0439cy	INSERVICE EXAMINATION PROGRAM CONTROLS - Rev00 - C-5059	2016-11-21	2016-12-12	2016-11-21	2016-12-12	PSE21	Troficanto-PSE	True	False	False	False	True	False
587	 VCB-ES-0503a	SPV Identification and Mitigation Strategy Development - Preparation	2016-11-03	2016-11-09	2016-11-04	2016-11-10	PSE33	Yang-PSE	True	True	False	False	True	True
588	 VCB-ES-0503b	SPV Identification and Mitigation Strategy Development - Draft	2016-11-10	2016-12-02	2016-11-11	2016-12-05	PSE33	Yang-PSE	True	False	False	False	True	False
589	 VCB-ES-0510a	SIZING OF THERMAL OVERLOADS - Rev00 - Preparation	2016-11-14	2016-11-18	2016-11-14	2016-11-18	DE59	Camp-DE	True	True	False	False	True	True
590	 VCB-ES-0510b	SIZING OF THERMAL OVERLOADS - Rev00 - Draft	2016-11-21	2016-12-13	2016-11-21	2016-12-13	DE59	Camp-DE	True	False	False	False	True	False
591	 VCB-ES-0512CX	Environmental Qualification Temperature Monitoring - Rev00 - C-QR	2016-10-14	2016-10-18	2016-11-11	2016-11-18	PSE3	Mike Fanguy-SupvPSE	False	False	False	False	True	True
592	 VCB-ES-0512CY	Environmental Qualification Temperature Monitoring - Rev00 - C-5059	2016-10-14	2016-10-18	2016-11-11	2016-12-05	PSE22	Garrett-PSE	False	False	False	False	True	False
593	 VCB-ES-0512CZ	Environmental Qualification Temperature Monitoring - Rev00 - C-Res2	2016-10-19	2016-11-07	2016-12-06	2016-12-14	PSE22	Garrett-PSE	False	False	False	True	False	False
594	 VCB-ES-0512d	Environmental Qualification Temperature Monitoring - Rev00 - Approval	2016-11-08	2016-11-21	2016-12-15	2016-12-30	DM16	DM Eng-PSE (Sterdis)	False	False	True	True	False	False
595	 VCB-ES-0512e	Environmental Qualification Temperature Monitoring - Rev00 - Validate	2016-11-22	2016-11-30	2017-01-03	2017-01-09	PSE22	Garrett-PSE	False	False	True	True	False	False
596	 VCB-ES-0513a	MOV PROGRAM IMPLEMENTATION  - Rev00 - Preparation	2016-11-07	2016-11-11	2016-11-07	2016-11-15	PSE06	Terry-PSE	True	True	False	False	True	True
597	 VCB-ES-0513b	MOV PROGRAM IMPLEMENTATION  - Rev00 - Draft	2016-11-14	2016-12-06	2016-11-15	2016-12-07	PSE06	Terry-PSE	True	False	False	False	True	False
598	 VCB-ES-0516d	CONDUCT OF OPERATIONS OF PSE DIGITAL GROUP - Rev00 - Approval	2016-11-01	2016-11-14	2017-01-16	2017-01-27	DM16	DM Eng-PSE (Sterdis)	False	False	True	True	False	False
599	 VCB-ES-0521CZ	FLOW-ACCELERATED CORROSION PROGRAM Analysis and Evaluation - Rev00 - C-Res2	2016-11-16	2016-11-17	2016-11-16	2016-11-16	PSE17	Metzger-PSE	True	True	False	False	True	True
600	 VCB-ES-0523d	FUNCTIONAL IMPORTANCE DETERMINATION (FID) PROCESS - Rev00 - Approval	2016-05-16	2016-11-02	2016-05-16	2016-12-02	DM16	DM Eng-PSE (Sterdis)	False	False	False	True	False	False
601	 VCB-ES-0524d	PREVENTIVE MAINTENANCE (PM) STRATEGY DEVELOPMENT - Rev00 - Approval	2016-06-09	2016-11-07	2016-06-09	2016-12-07	DM16	DM Eng-PSE (Sterdis)	False	False	False	True	False	False
602	 VCB-ES-0527d	CONTROL AND MAINTENANCE OF THE PLANT LUBRICATION MANUAL DATABASE - Rev00 - Approval	2016-11-01	2016-11-14	2017-01-03	2017-01-16	DM16	DM Eng-PSE (Sterdis)	False	False	True	True	False	False
603	 VCB-ES-0528d	Environmental Qualification Program - Rev00 - Approval	2016-05-16	2016-11-02	2016-05-16	2016-12-02	DM16	DM Eng-PSE (Sterdis)	False	False	False	True	False	False
604	 VCB-ES-0560.401a	THERMAL/INFRARED DIAGNOSTICS AND ANALYSIS- Rev00 - Preparation	2017-01-03	2017-01-09	2016-11-14	2016-11-18	PSE05	Simmons	False	False	False	False	True	True
605	 VCB-ES-0560.401b	THERMAL/INFRARED DIAGNOSTICS AND ANALYSIS - Rev00 - Draft	2017-01-10	2017-01-30	2016-11-18	2017-01-03	PSE05	Simmons	False	False	False	False	True	False
606	 VCB-ES-0580d	HEAT EXCHANGER PERFORMANCE - Rev00 - Approval	2016-10-05	2016-11-03	2016-10-05	2016-12-05	DM16	DM Eng-PSE (Sterdis)	False	False	False	True	False	False
607	 VCB-ES-1003c01	MOV Regulatory Scoping and Grouping Process - Rev00 - Review	2016-10-28	2016-11-29	2016-10-28	2016-11-29	PSE06	Terry-PSE	False	True	False	False	False	True
608	 VCB-ES-1003CX	MOV Regulatory Scoping and Grouping Process - Rev00 - C-QR	2016-11-01	2016-11-18	2016-12-01	2016-12-20	PSE27	Dao-PSE	False	False	True	True	False	False
609	 VCB-ES-1003CY	MOV Regulatory Scoping and Grouping Process - Rev00 - C-5059	2016-11-01	2016-11-18	2016-11-23	2016-12-09	PSE16	Felch-PSE	True	False	False	True	True	False
610	 VCB-ES-1003CZ	MOV Regulatory Scoping and Grouping Process - Rev00 - C-Res2	2016-11-21	2016-12-01	2016-12-21	2017-01-03	PSE06	Terry-PSE	False	False	True	False	False	False
611	 VCB-ES-1005c01	AOV Program Scoping and Categorization - Rev00 - Review	2016-10-24	2016-11-14	2016-10-24	2016-11-10	PSE16	Felch-PSE	False	True	False	False	False	True
612	 VCB-ES-1005CX	AOV Program Scoping and Categorization - Rev00 - C-QR	2016-11-01	2016-11-18	2016-12-01	2016-12-20	PSE27	Dao-PSE	False	False	True	True	False	False
613	 VCB-ES-1005CY	AOV Program Scoping and Categorization - Rev00 - C-5059	2016-11-01	2016-11-18	2016-11-21	2016-11-21	PSE06	Terry-PSE	True	True	False	False	True	True
614	 VCB-ES-1005CZ	AOV Program Scoping and Categorization - Rev00 - C-Res2	2016-11-21	2016-12-01	2016-12-21	2017-01-03	PSE16	Felch-PSE	False	False	True	False	False	False
615	 VCB-ES-1011c01	Seismic Equipment Qualification Engineering Program Control Procedure - Rev00 - Review	2016-06-17	2016-11-02	2017-08-01	2017-08-29	PSETBD	ENG (TBD) PSE	False	False	False	True	False	False
616	 VCB-ES-1011CX	Seismic Equipment Qualification Engineering Program Control Procedure - Rev00 - C-QR	2016-11-01	2016-11-18	2017-08-01	2017-08-18	PSEREV	PSE Review	False	False	True	True	False	False
617	 VCB-ES-1011CY	Seismic Equipment Qualification Engineering Program Control Procedure - Rev00 - C-5059	2016-11-01	2016-11-18	2017-08-01	2017-08-18	PSEREV	PSE Review	False	False	True	True	False	False
618	 VCB-ES-1011CZ	Seismic Equipment Qualification Engineering Program Control Procedure - Rev00 - C-Res2	2016-11-21	2016-12-01	2017-08-21	2017-08-29	PSETBD	ENG (TBD) PSE	False	False	True	False	False	False
619	 VCB-ES-1014CZ	Pump Program Implementation - Rev00 - C-Res2	2016-10-21	2016-11-01	2016-10-21	2016-11-01	PSE28	Greene-PSE	False	True	False	False	False	True
620	 VCB-ES-1014d	Pump Program Implementation - Rev00 - Approval	2016-11-02	2016-11-15	2016-12-01	2016-12-14	DM16	DM Eng-PSE (Sterdis)	False	False	True	True	False	False
621	 VCB-ES-1020CX	Statement of Responsibilities, Plant Support Engineering - Rev00 - C-QR	2016-11-01	2016-11-01	2016-11-01	2016-11-01	PSEREV	PSE Review	True	True	False	False	True	True
622	 VCB-ES-1020CY	Statement of Responsibilities, Plant Support Engineering - Rev00 - C-5059	2016-11-01	2016-11-01	2016-11-01	2016-11-01	PSEREV	PSE Review	True	True	False	False	True	True
623	 VCB-ES-1020d	Statement of Responsibilities, Plant Support Engineering - Rev00 - Approval	2016-11-02	2016-11-03	2016-11-02	2016-11-03	DM16	DM Eng-PSE (Sterdis)	True	True	False	False	True	True
624	 VCB-ES-1020e	Statement of Responsibilities, Plant Support Engineering - Rev00 - Validate	2016-11-04	2016-11-10	2016-11-01	2016-11-04	PSE29	McLellan-PSE	True	True	False	False	True	True
625	 VCB-ES-AG-0002a	Engineering Change Walk downs - Preparation	2016-11-08	2016-11-14	2016-11-08	2016-11-14	DE55	Ly-Cont-DE	True	True	False	False	True	True
626	 VCB-ES-AG-0002b	Engineering Change Walk downs - Draft	2016-11-15	2016-12-14	2016-11-15	2016-12-14	DE55	Ly-Cont-DE	True	False	False	False	True	False
627	 VCB-ES-AG-0003a	OPERATING EXPERIENCE REVIEWS AND EVALUATIONS - Rev00 - Preparation	2016-11-01	2016-11-08	2016-12-05	2016-12-09	PSE05	Simmons	False	False	True	True	False	False
628	 VCB-ES-AG-0003b	OPERATING EXPERIENCE REVIEWS AND EVALUATIONS - Rev00 - Draft	2016-11-09	2016-12-01	2016-12-12	2017-01-04	PSE05	Simmons	False	False	True	False	False	False
629	 VCB-ES-xxxx3d	Update DE tasks for Fuel Load Milestone - November meeting - Rev00 - Approval	2016-10-24	2016-11-04	2016-10-24	2016-11-04	DE55	Ly-Cont-DE	False	True	False	False	False	True
630	 VCB-ES-xxxx3e	Update DE tasks for Fuel Load Milestone - December meeting - Rev00 - Validate	2016-11-07	2016-11-11	2016-11-11	2016-11-17	DE55	Ly-Cont-DE	True	True	False	False	True	True
631	 VCB-FP-05a	Fire Protection Modeling Database (FMDB) - Rev00 - Preparation	2016-11-01	2016-11-07	2016-12-01	2016-12-07	PSE34	FP-PSE	False	False	True	True	False	False
632	 VCB-FP-05b	Fire Protection Modeling Database (FMDB) - Rev00 - Draft	2016-11-08	2016-11-30	2016-12-08	2016-12-30	PSE34	FP-PSE	False	False	True	True	False	False
633	 VCB-GMP-3008c01	CRANE OPERATIONS & RIGGING - Rev00 - Review	2016-10-25	2016-11-22	2016-10-25	2016-11-22	MMP	Mech proc	False	True	False	False	False	True
634	 VCB-GMP-3008CW	CRANE OPERATIONS & RIGGING - Rev00 - C-Res1	2016-11-23	2016-12-05	2016-11-28	2016-12-06	MMP	Mech proc	True	False	False	False	True	False
635	 VCB-GTP-0215b	TROUBLESHOOTING PLAN DEVELOPMENT - Rev00 - Draft	2016-09-09	2016-11-10	2016-09-09	2016-11-10	MIP	IC proc	False	True	False	False	False	True
636	 VCB-GTP-0215c01	TROUBLESHOOTING PLAN DEVELOPMENT - Rev00 - Review	2016-11-11	2016-12-13	2016-11-11	2016-12-13	MIP	IC proc	True	False	False	False	True	False
637	 VCB-GTP-304a	INSERVICE INSPECTION SYSTEM PRESSURE TESTING FIRST TEN YEAR INTERVAL - Rev00 - Preparation	2016-11-01	2016-11-07	2016-11-30	2016-12-06	PSE21	Troficanto-PSE	True	False	False	True	True	False
638	 VCB-GTP-304b	INSERVICE INSPECTION SYSTEM PRESSURE TESTING FIRST TEN YEAR INTERVAL - Rev00 - Draft	2016-11-08	2016-11-30	2016-12-07	2016-12-29	PSE21	Troficanto-PSE	False	False	True	True	False	False
639	 VCB-HPP-0709a	Sampling and Release of Radioactive Gaseous Effluents - Rev00 - Preparation	2016-11-01	2016-11-07	2016-11-01	2016-11-14	HP	HP	True	True	False	False	True	True
640	 VCB-HPP-0709b	Sampling and Release of Radioactive Gaseous Effluents - Rev00 - Draft	2016-11-08	2016-12-21	2016-11-16	2017-01-06	HP	HP	True	False	False	False	True	False
641	 VCB-HPP-0710a	Sampling and Release of Radioactive Liquid Effluents - Rev00 - Preparation	2016-11-01	2016-11-07	2016-11-01	2016-11-14	HP	HP	True	True	False	False	True	True
642	 VCB-HPP-0710b	Sampling and Release of Radioactive Liquid Effluents - Rev00 - Draft	2016-11-08	2016-12-21	2016-11-14	2017-01-06	HP	HP	True	False	False	False	True	False
643	 VCB-ICP-240.092b	SEISMIC MOUNTS/ENVIRONMENTAL SEALS TORQUING PROCEDURE - Rev00 - Draft	2016-10-03	2016-11-29	2016-10-03	2016-11-29	MIP	IC proc	False	True	False	False	False	True
644	 VCB-ICP-240.092c01	SEISMIC MOUNTS/ENVIRONMENTAL SEALS TORQUING PROCEDURE - Rev00 - Review	2016-11-30	2016-12-30	2016-11-29	2016-12-29	MIP	IC proc	True	False	False	False	True	False
645	 VCB-ICP-240.101d	ROSEMONT MODEL 1151AP AND 1151GP PRESSURE TRANSMITTER GENERIC CALIBRATION PROCEDURE - Rev00 - Approval	2016-11-01	2016-12-14	2016-11-01	2016-12-14	MIR	IC supv	True	False	False	False	True	False
646	 VCB-ICP-240.106d	PRESSURE ACTUATED SWITCH CALIBRATION GENERIC PROCEDURE - Rev00 - Approval	2016-11-01	2016-12-14	2016-11-01	2016-12-14	MIR	IC supv	True	False	False	False	True	False
647	 VCB-ICP-240.108d	ISOLATED RTD TRANSMITTER CALIBRATION - Rev00 - Approval	2016-11-01	2016-12-14	2016-11-01	2016-12-14	MIR	IC supv	True	False	False	False	True	False
648	 VCB-ICP-240.132CW	LIMIT SWITCH MAINTENANCE - Rev00 - C-Res1	2016-11-01	2016-11-09	2016-11-01	2016-11-09	MIP	IC proc	True	True	False	False	True	True
649	 VCB-ICP-240.132CX	LIMIT SWITCH MAINTENANCE - Rev00 - C-QR	2016-11-10	2016-12-01	2016-11-10	2016-12-01	MIR	IC supv	True	False	False	False	True	False
650	 VCB-ICP-240.132CY	LIMIT SWITCH MAINTENANCE - Rev00 - C-5059	2016-11-10	2016-12-01	2016-11-10	2016-12-01	MIR	IC supv	True	False	False	False	True	False
651	 VCB-ICP-240.161a	INSTALLATION AND MAINTENANCE OF EGS/PATEL CONDUIT SEAL CONNECTORS  - Rev00 - Preparation	2016-11-01	2016-11-07	2016-11-01	2016-11-07	MIP	IC proc	True	True	False	False	True	True
652	 VCB-ICP-240.161b	INSTALLATION AND MAINTENANCE OF EGS/PATEL CONDUIT SEAL CONNECTORS  - Rev00 - Draft	2016-11-08	2016-11-30	2016-11-08	2016-11-30	MIP	IC proc	True	True	False	False	True	True
653	 VCB-ICP-240.162a	INSTALLATION AND MAINTENANCE OF EGS/PATEL HERMETIC CONNECTORS  - Rev00 - Preparation	2016-11-01	2016-11-07	2016-11-01	2016-11-07	MIP	IC proc	True	True	False	False	True	True
654	 VCB-ICP-240.162b	INSTALLATION AND MAINTENANCE OF EGS/PATEL HERMETIC CONNECTORS  - Rev00 - Draft	2016-11-08	2016-11-30	2016-11-08	2016-11-30	MIP	IC proc	True	True	False	False	True	True
655	 VCB-ICP-240.170a	Environmentally Qualified Mild and NON Environmentally Qualified Solenoid Valve Maintenance  - Rev00 - Preparation	2016-11-01	2016-11-07	2016-11-01	2016-11-07	MIP	IC proc	True	True	False	False	True	True
656	 VCB-ICP-240.170b	Environmentally Qualified Mild and NON Environmentally Qualified Solenoid Valve Maintenance  - Rev00 - Draft	2016-11-08	2016-11-30	2016-11-08	2016-11-30	MIP	IC proc	True	True	False	False	True	True
657	 VCB-ICP-300.017a	METEOROLOGICAL SITE MISCELLANEOUS INSTRUMENTATION CALIBRATION - Rev00 - Preparation	2016-11-02	2016-11-08	2016-11-04	2016-11-08	MIP	IC proc	True	True	False	False	True	True
658	 VCB-ICP-300.017b	METEOROLOGICAL SITE MISCELLANEOUS INSTRUMENTATION CALIBRATION - Rev00 - Draft	2016-11-09	2017-01-10	2016-11-09	2017-01-12	MIP	IC proc	True	False	False	False	True	False
659	 VCB-ICP-300.052d	COAXIAL AND TRIAXIAL CONNECTORS - Rev00 - Approval	2016-11-01	2016-12-14	2016-11-01	2016-12-14	MIR	IC supv	True	False	False	False	True	False
660	 VCB-ICP-300.060a	METEOROLOGICAL BI-WEEKLY DATA VERIFICATION - Rev00 - Preparation	2016-11-02	2016-11-08	2016-11-04	2016-11-08	MIP	IC proc	True	True	False	False	True	True
661	 VCB-ICP-300.060b	METEOROLOGICAL BI-WEEKLY DATA VERIFICATION - Rev00 - Draft	2016-11-09	2017-01-10	2016-11-10	2017-01-12	MIP	IC proc	True	False	False	False	True	False
662	 VCB-ICP-390.011b	SPENT FUEL SYSTEM DIGITAL WEIGHT COUNTER - Rev00 - Draft	2016-11-01	2016-12-30	2016-11-01	2016-12-30	MIP	IC proc	True	False	False	False	True	False
663	 VCB-ICP-IPT-0006CX	GENERIC PROCEDURE FOR CALIBRATING ROSEMOUNT PRESSURE TRANSMITTERS - Rev00 - C-QR	2016-10-19	2016-11-07	2016-10-19	2016-11-07	MIR	IC supv	False	True	False	False	False	True
664	 VCB-ICP-IPT-0006CY	GENERIC PROCEDURE FOR CALIBRATING ROSEMOUNT PRESSURE TRANSMITTERS - Rev00 - C-5059	2016-10-19	2016-11-07	2016-10-19	2016-11-07	MIR	IC supv	False	True	False	False	False	True
665	 VCB-ICP-IPT-0006CZ	GENERIC PROCEDURE FOR CALIBRATING ROSEMOUNT PRESSURE TRANSMITTERS - Rev00 - C-Res2	2016-11-08	2016-11-16	2016-11-08	2016-11-16	MIP	IC proc	True	True	False	False	True	True
666	 VCB-ICP-IPT-0006d	GENERIC PROCEDURE FOR CALIBRATING ROSEMOUNT PRESSURE TRANSMITTERS - Rev00 - Approval	2016-11-17	2017-01-04	2016-11-17	2017-01-04	MIR	IC supv	True	False	False	False	True	False
667	 VCB-ISP-027cW	ELECTRICAL SAFETY AND INDUSTRIAL SAFETY - Rev00 - C-Res1	2016-11-01	2016-11-09	2016-11-04	2016-11-14	MEP	Elec proc	True	True	False	False	True	True
668	 VCB-ISP-027cX	ELECTRICAL SAFETY AND INDUSTRIAL SAFETY - Rev00 - C-QR	2016-11-10	2016-12-01	2016-11-15	2016-12-02	MER	Elec supv	True	False	False	False	True	False
669	 VCB-ISP-027cY	ELECTRICAL SAFETY AND INDUSTRIAL SAFETY - Rev00 - C-5059	2016-11-10	2016-12-01	2016-11-15	2016-12-02	MER	Elec supv	True	False	False	False	True	False
670	 VCB-MLP-285.001c01	OUTSIDE MICROMETERS  - Rev00 - Review	2016-10-31	2016-11-30	2016-10-31	2016-11-30	MIP	IC proc	False	True	False	False	False	True
671	 VCB-MLP-285.002c01	DEPTH MICROMETERS - Rev00 - Review	2016-10-31	2016-11-30	2016-10-31	2016-11-30	MIP	IC proc	False	True	False	False	False	True
672	 VCB-MLP-285.003c01	VERNIER DIAL CALIPERS - Rev00 - Review	2016-10-31	2016-11-30	2016-10-31	2016-11-30	MIP	IC proc	False	True	False	False	False	True
673	 VCB-MLP-285.004c01	DIAL CALIPERS  - Rev00 - Review	2016-10-31	2016-11-30	2016-10-31	2016-11-30	MIP	IC proc	False	True	False	False	False	True
674	 VCB-MLP-285.005a	SECONDARY STANDARD WEIGHTS  - Rev00 - Preparation	2016-11-01	2016-11-07	2016-11-01	2016-11-07	MIP	IC proc	True	True	False	False	True	True
675	 VCB-MLP-285.005b	SECONDARY STANDARD WEIGHTS  - Rev00 - Draft	2016-11-08	2016-11-30	2016-11-08	2016-11-30	MIP	IC proc	True	True	False	False	True	True
676	 VCB-MLP-285.030a	CALIBRATION OF HAND CRIMPING TOOLS  - Rev00 - Preparation	2016-11-01	2016-11-07	2016-11-01	2016-11-07	MIP	IC proc	True	True	False	False	True	True
677	 VCB-MLP-285.030b	CALIBRATION OF HAND CRIMPING TOOLS  - Rev00 - Draft	2016-11-08	2016-11-30	2016-11-08	2016-11-30	MIP	IC proc	True	True	False	False	True	True
678	 VCB-MLP-285.117a	CROSBY GAUGES  - Rev00 - Preparation	2016-11-01	2016-11-07	2016-11-01	2016-11-07	MIP	IC proc	True	True	False	False	True	True
679	 VCB-MLP-285.117b	CROSBY GAUGES  - Rev00 - Draft	2016-11-08	2016-11-30	2016-11-08	2016-11-30	MIP	IC proc	True	True	False	False	True	True
680	 VCB-MLP-285.118a	MERCURY MANOMETER CERTIFICATION  - Rev00 - Preparation	2016-11-01	2016-11-07	2016-11-01	2016-11-07	MIP	IC proc	True	True	False	False	True	True
681	 VCB-MLP-285.118b	MERCURY MANOMETER CERTIFICATION  - Rev00 - Draft	2016-11-08	2016-11-30	2016-11-08	2016-11-30	MIP	IC proc	True	True	False	False	True	True
682	 VCB-MLP-285.119a	HEISE SERIES 7 DIGITAL VACUUM INDICATOR  - Rev00 - Preparation	2016-11-01	2016-11-07	2016-11-01	2016-11-07	MIP	IC proc	True	True	False	False	True	True
683	 VCB-MLP-285.119b	HEISE SERIES 7 DIGITAL VACUUM INDICATOR  - Rev00 - Draft	2016-11-08	2016-11-30	2016-11-08	2016-11-30	MIP	IC proc	True	True	False	False	True	True
684	 VCB-MLP-285.249c01	RIS SERIES DPG-700 DIGITAL PRESSURE GAUGES  - Rev00 - Review	2016-10-03	2016-11-02	2016-10-03	2016-11-04	MIP	IC proc	False	True	False	False	False	True
685	 VCB-MLP-285.249CW	RIS SERIES DPG-700 DIGITAL PRESSURE GAUGES - Rev00 - C-Res1	2016-11-03	2016-11-11	2016-11-04	2016-11-11	MIP	IC proc	True	True	False	False	True	True
686	 VCB-MLP-285.249CX	RIS SERIES DPG-700 DIGITAL PRESSURE GAUGES - Rev00 - C-QR	2016-11-14	2016-12-05	2016-11-14	2016-12-08	MIR	IC supv	True	False	False	False	True	False
687	 VCB-MLP-285.249CY	RIS SERIES DPG-700 DIGITAL PRESSURE GAUGES - Rev00 - C-5059	2016-11-14	2016-12-05	2016-11-14	2016-12-08	MIR	IC supv	True	False	False	False	True	False
688	 VCB-MMP-255.001CZ	GENERAL HEAT EXCHANGER CLEANING AND TUBE PLUGGING - Rev00 - C-Res2	2016-10-28	2016-11-07	2016-10-28	2016-11-07	MMP	Mech proc	False	True	False	False	False	True
689	 VCB-MMP-255.001d	GENERAL HEAT EXCHANGER CLEANING AND TUBE PLUGGING - Rev00 - Approval	2016-11-08	2016-12-21	2016-11-08	2016-12-21	MMR	Mech supv	True	False	False	False	True	False
690	 VCB-MMP-ACT-0006CX	FEEDWATER ISOLATION VALVE ACTUATOR MAINTENANCE - Rev00 - C-QR	2016-10-27	2016-11-15	2016-10-27	2016-11-15	MMR	Mech supv	False	True	False	False	False	True
691	 VCB-MMP-ACT-0006CZ	FEEDWATER ISOLATION VALVE ACTUATOR MAINTENANCE - Rev00 - C-Res2	2016-11-16	2016-11-28	2016-11-16	2016-11-28	MMP	Mech proc	True	True	False	False	True	True
692	 VCB-MMP-ACT-0006d	FEEDWATER ISOLATION VALVE ACTUATOR MAINTENANCE - Rev00 - Approval	2016-11-29	2017-01-12	2016-11-28	2017-01-12	MMR	Mech supv	True	False	False	False	True	False
693	 VCB-MMP-ACT-0120c01	ROTORK MODEL 14 ACTUATOR REFURBISHMENT AND MAINTENANCE - Rev00 - Review	2016-10-13	2016-11-10	2016-10-13	2016-11-10	MMP	Mech proc	False	True	False	False	False	True
694	 VCB-MMP-ACT-0120CW	ROTORK MODEL 14 ACTUATOR REFURBISHMENT AND MAINTENANCE - Rev00 - C-Res1	2016-11-11	2016-11-21	2016-11-11	2016-11-21	MMP	Mech proc	True	True	False	False	True	True
695	 VCB-MMP-ACT-0120CX	ROTORK MODEL 14 ACTUATOR REFURBISHMENT AND MAINTENANCE - Rev00 - C-QR	2016-11-22	2016-12-13	2016-11-22	2016-12-13	MMR	Mech supv	True	False	False	False	True	False
696	 VCB-MMP-ACT-0120CY	ROTORK MODEL 14 ACTUATOR REFURBISHMENT AND MAINTENANCE - Rev00 - C-5059	2016-11-22	2016-11-22	2016-11-22	2016-11-22	MMR	Mech supv	True	True	False	False	True	True
697	 VCB-MMP-BLT-0001CW	Bolting, Flange Connection and Torguing - Rev00 - C-Res1	2016-10-28	2016-11-07	2016-11-01	2016-11-10	MMP	Mech proc	False	True	False	False	True	True
698	 VCB-MMP-BLT-0001CX	Bolting, Flange Connection and Torguing - Rev00 - C-QR	2016-11-08	2016-11-29	2016-11-11	2016-11-28	MMR	Mech supv	True	True	False	False	True	True
699	 VCB-MMP-BLT-0001CY	Bolting, Flange Connection and Torguing - Rev00 - C-5059	2016-11-08	2016-11-08	2016-11-08	2016-11-08	MMR	Mech supv	True	True	False	False	True	True
700	 VCB-MMP-BLT-0001CZ	Bolting, Flange Connection and Torguing - Rev00 - C-Res2	2016-11-30	2016-12-08	2016-11-30	2016-12-08	MMP	Mech proc	True	False	False	False	True	False
701	 VCB-MMP-HVC-0002b	GENERAL MAINTENANCE OF FIRE DAMPERS - Rev00 - Draft	2016-11-01	2016-12-30	2016-11-04	2017-01-05	MMP	Mech proc	True	False	False	False	True	False
702	 VCB-MMP-HVC-0201b	MAINTENANCE OF HVAC MECHANICAL WATER CHILLERS - Rev00 - Draft	2016-11-07	2017-01-06	2016-11-07	2017-01-06	MMP	Mech proc	True	False	False	False	True	False
703	 VCB-MMP-MAN-0102b	REACTOR BUILDING EQUIPMENT HATCH MAINTENANCE - Rev00 - Draft	2016-11-07	2017-01-06	2016-11-07	2017-01-06	MMP	Mech proc	True	False	False	False	True	False
704	 VCB-MMP-PMP-0005d	SFS COOLING PUMP (MP01 A/B) MAINTENANCE - Rev00 - Approval	2016-10-25	2016-11-07	2016-10-25	2016-11-07	MMR	Mech supv	False	True	False	False	False	True
705	 VCB-MMP-PMP-0009d	RNS PUMP (RNS-MP01 A/B) MAINTENANCE - Rev00 - Approval	2016-10-26	2016-11-08	2016-10-26	2016-11-09	MMR	Mech supv	False	True	False	False	False	True
706	 VCB-MMP-PMP-0010b	RNS PUMP MECHANICAL SEAL AND BEARING MAINTENANCE - Rev00 - Draft	2016-09-09	2016-11-03	2016-09-09	2016-11-08	MMP	Mech proc	False	True	False	False	False	True
707	 VCB-MMP-PMP-0010c01	RNS PUMP MECHANICAL SEAL AND BEARING MAINTENANCE - Rev00 - Review	2016-11-04	2016-12-06	2016-11-10	2016-12-12	MMP	Mech proc	True	False	False	False	True	False
708	 VCB-MMP-PMP-0011c01	CCS Service Pump (MP01 A/B) Maintenance - Rev00 - Review	2016-10-10	2016-11-07	2016-10-10	2016-11-09	MMP	Mech proc	False	True	False	False	False	True
709	 VCB-MMP-PMP-0011CW	CCS Service Pump (MP01 A/B) Maintenance - Rev00 - C-Res1	2016-11-08	2016-11-16	2016-11-10	2016-11-18	MMP	Mech proc	True	True	False	False	True	True
710	 VCB-MMP-PMP-0011CX	CCS Service Pump (MP01 A/B) Maintenance - Rev00 - C-QR	2016-11-17	2016-12-08	2016-11-18	2016-12-09	MMR	Mech supv	True	False	False	False	True	False
711	 VCB-MMP-PMP-0011CY	CCS Service Pump (MP01 A/B) Maintenance - Rev00 - C-5059	2016-11-17	2016-11-17	2016-11-18	2016-11-18	MMR	Mech supv	True	True	False	False	True	True
712	 VCB-MMP-PMP-0017d	CDS Service Pump (MP01 A/B/C) Maintenance - Rev00 - Approval	2016-10-25	2016-11-07	2016-10-25	2016-11-07	MMR	Mech supv	False	True	False	False	False	True
713	 VCB-MMP-PMP-0019CW	RAW WATER PUMP (RWS-MP03 A/B/C) MAINTENANCE - Rev00 - C-Res1	2016-10-27	2016-11-04	2016-10-27	2016-11-04	MMP	Mech proc	False	True	False	False	False	True
714	 VCB-MMP-PMP-0019CX	RAW WATER PUMP (RWS-MP03 A/B/C) MAINTENANCE - Rev00 - C-QR	2016-11-07	2016-11-28	2016-11-11	2016-11-28	MMR	Mech supv	True	True	False	False	True	True
715	 VCB-MMP-PMP-0019CY	RAW WATER PUMP (RWS-MP03 A/B/C) MAINTENANCE - Rev00 - C-5059	2016-11-07	2016-11-07	2016-11-09	2016-11-09	MMR	Mech supv	True	True	False	False	True	True
716	 VCB-MMP-PMP-0019CZ	RAW WATER PUMP (RWS-MP03 A/B/C) MAINTENANCE - Rev00 - C-Res2	2016-11-29	2016-12-07	2016-11-29	2016-12-09	MMP	Mech proc	True	False	False	False	True	False
717	 VCB-MMP-PMP-0022CX	STARTUP FEEDWATER PUMP (MP03A/B) MAINTENANCE - Rev00 - C-QR	2016-10-20	2016-11-07	2016-10-20	2016-11-07	MMR	Mech supv	False	True	False	False	False	True
718	 VCB-MMP-PMP-0022CZ	STARTUP FEEDWATER PUMP (MP03A/B) MAINTENANCE - Rev00 - C-Res2	2016-11-08	2016-11-16	2016-11-08	2016-11-16	MMP	Mech proc	True	True	False	False	True	True
719	 VCB-MMP-PMP-0022d	STARTUP FEEDWATER PUMP (MP03A/B) MAINTENANCE - Rev00 - Approval	2016-11-17	2016-12-02	2016-11-17	2016-12-02	MMR	Mech supv	True	False	False	False	True	False
720	 VCB-MMP-PMP-0051CX	FPS FIRE PUMP (MP01 A/B) MAINTENANCE - Rev00 - C-QR	2016-10-28	2016-11-16	2016-11-01	2016-11-09	MMR	Mech supv	False	True	False	False	True	True
721	 VCB-MMP-PMP-0051CY	FPS FIRE PUMP (MP01 A/B) MAINTENANCE - Rev00 - C-5059	2016-10-28	2016-10-28	2016-11-01	2016-11-01	MMR	Mech supv	False	False	False	False	True	True
722	 VCB-MMP-PMP-0051CZ	FPS FIRE PUMP (MP01 A/B) MAINTENANCE - Rev00 - C-Res2	2016-11-17	2016-11-29	2016-11-10	2016-11-18	MMP	Mech proc	True	True	False	False	True	True
723	 VCB-MMP-PMP-0051d	FPS FIRE PUMP (MP01 A/B) MAINTENANCE - Rev00 - Approval	2016-11-30	2016-12-13	2016-11-18	2016-12-05	MMR	Mech supv	True	False	False	False	True	False
724	 VCB-MMP-TOF-0201c01	BALL FLOAT MAINTENANCE - Rev00 - Review	2016-10-07	2016-11-04	2016-10-07	2016-11-04	MMP	Mech proc	False	True	False	False	False	True
725	 VCB-MMP-TOF-0201CW	BALL FLOAT MAINTENANCE - Rev00 - C-Res1	2016-11-07	2016-11-15	2016-11-09	2016-11-17	MMP	Mech proc	True	True	False	False	True	True
726	 VCB-MMP-TOF-0201CX	BALL FLOAT MAINTENANCE - Rev00 - C-QR	2016-11-16	2016-12-07	2016-11-18	2016-12-09	MMR	Mech supv	True	False	False	False	True	False
727	 VCB-MMP-TOF-0201CY	BALL FLOAT MAINTENANCE - Rev00 - C-5059	2016-11-16	2016-11-16	2016-11-18	2016-11-18	MMR	Mech supv	True	True	False	False	True	True
728	 VCB-MMP-TST-0001CX	LEAK TESTING - Rev00 - C-QR	2016-10-21	2016-11-09	2016-10-21	2016-11-09	MMR	Mech supv	False	True	False	False	False	True
729	 VCB-MMP-TST-0001CZ	LEAK TESTING - Rev00 - C-Res2	2016-11-10	2016-11-18	2016-11-10	2016-11-18	MMP	Mech proc	True	True	False	False	True	True
730	 VCB-MMP-TST-0001d	LEAK TESTING - Rev00 - Approval	2016-11-21	2017-01-06	2016-11-18	2017-01-05	MMR	Mech supv	True	False	False	False	True	False
731	 VCB-MMP-VLV-0701c01	TESTING & REPAIR/ REFURBISHMENT OF RELIEF VALVES - Rev00 - Review	2016-11-01	2016-12-01	2016-11-09	2016-12-09	MMP	Mech proc	True	False	False	False	True	False
732	 VCB-MMP-VLV-0703b	MAIN STEAM SAFETY RELIEF VALVE MAINTENANCE - Rev00 - Draft	2016-11-14	2017-01-13	2016-11-14	2017-01-13	MMP	Mech proc	True	False	False	False	True	False
733	 VCB-OAP-0108.3c	Operations Outage Contingency Plans - Rev00 - Review	2016-10-21	2016-11-18	2016-10-21	2016-11-18	OP	Ops Proc	False	True	False	False	False	True
734	 VCB-OAP-0108.3cW	Operations Outage Contingency Plans - Rev00 - C-Res1	2016-11-21	2016-12-01	2016-11-28	2016-12-06	OP	Ops Proc	True	False	False	False	True	False
735	 VCB-OAP-0108.4c	Operations Outage Control of Containment Penetrations - Rev00 - Review	2016-10-21	2016-11-18	2016-10-21	2016-11-18	OP	Ops Proc	False	True	False	False	False	True
736	 VCB-OAP-0108.4cW	Operations Outage Control of Containment Penetrations - Rev00 - C-Res1	2016-11-21	2016-12-01	2016-11-28	2016-12-06	OP	Ops Proc	True	False	False	False	True	False
737	 VCB-OAP-0114.1c	Protected Equipment Placards - Rev00 - Review	2016-10-21	2016-11-18	2016-10-21	2016-11-18	OP	Ops Proc	False	True	False	False	False	True
738	 VCB-OAP-0114.1cW	Protected Equipment Placards - Rev00 - C-Res1	2016-11-21	2016-12-01	2016-11-28	2016-12-06	OP	Ops Proc	True	False	False	False	True	False
739	 VCB-PS-AG-0003d	ENVIRONMENTAL QUALIFICATION AGING THEORY - Rev00 - Approval	2014-08-15	2016-11-01	2014-08-15	2016-12-01	DM16	DM Eng-PSE (Sterdis)	False	False	False	True	False	False
740	 VCB-PS-AG-0006d	NEW PSE EMPLOYEE GUIDE AND PROGRAM SYSTEM OR COMPONENT RESPONSIBILITY TURNOVER - Rev00 - Approval	2016-11-01	2016-11-02	2016-11-09	2016-11-09	DM16	DM Eng-PSE (Sterdis)	True	True	False	False	True	True
741	 VCB-PS-AG-0006e	NEW PSE EMPLOYEE GUIDE AND PROGRAM SYSTEM OR COMPONENT RESPONSIBILITY TURNOVER - Rev00 - Validate	2016-11-03	2016-11-03	2016-11-09	2016-11-09	PSE29	McLellan-PSE	True	True	False	False	True	True
742	 VCB-PS-AG-0010d	Reviewing Environmental Qualification Test Reports - Rev00 - Approval	2016-04-01	2016-11-08	2016-04-01	2016-12-08	DM16	DM Eng-PSE (Sterdis)	False	False	False	True	False	False
743	 VCB-PS-AG-0019c01	BORIC ACID CORROSION EVALUATION - Rev00 - Review	2016-10-28	2016-11-14	2016-10-28	2016-11-15	PSE20	Post-PSE	False	True	False	False	False	True
744	 VCB-PS-AG-0019CX	BORIC ACID CORROSION EVALUATION - Rev00 - C-QR			2016-10-31	2016-11-29	PSE02	Shank-PSE	False	False	False	False	False	True
745	 VCB-PS-AG-0019CY	BORIC ACID CORROSION EVALUATION - Rev00 - C-5059			2016-10-31	2016-11-16	PSE20	Post-PSE	False	False	False	False	False	True
746	 VCB-PS-AG-0019CZ	BORIC ACID CORROSION EVALUATION - Rev00 - C-Res2	2016-11-15	2016-11-21	2016-11-16	2016-11-30	PSE20	Post-PSE	True	True	False	False	True	True
747	 VCB-PS-AG-0019d	BORIC ACID CORROSION EVALUATION - Rev00 - Approval	2016-11-22	2016-12-06	2016-12-01	2016-12-13	DM16	DM Eng-PSE (Sterdis)	False	False	True	False	False	False
748	 VCB-PS-AG-0021c01	AOV System Level Review Guide - Rev00 - Review	2016-11-14	2016-12-05	2016-12-01	2016-12-20	PSE16	Felch-PSE	False	False	True	False	False	False
749	 VCB-PS-AG-0021CX	AOV System Level Review Guide - Rev00 - C-QR	2016-11-14	2016-12-05	2016-12-01	2016-12-20	PSE21	Troficanto-PSE	False	False	True	False	False	False
750	 VCB-PS-AG-0021CY	AOV System Level Review Guide - Rev00 - C-5059	2016-11-14	2016-12-05	2016-12-01	2016-12-20	PSE16	Felch-PSE	False	False	True	False	False	False
751	 VCB-PS-AG-0026c01	AOV Component Level Review Guide - Rev00 - Review	2016-11-07	2016-11-28	2016-12-01	2016-12-20	PSE16	Felch-PSE	False	False	True	True	False	False
752	 VCB-PS-AG-0026CX	AOV Component Level Review Guide - Rev00 - C-QR	2016-11-07	2016-11-28	2016-12-01	2016-12-20	PSE21	Troficanto-PSE	False	False	True	True	False	False
753	 VCB-PS-AG-0026CY	AOV Component Level Review Guide - Rev00 - C-5059	2016-11-07	2016-11-28	2016-12-01	2016-12-14	PSE16	Felch-PSE	False	False	True	True	False	False
754	 VCB-PS-AG-0026CZ	AOV Component Level Review Guide - Rev00 - C-Res2	2016-11-29	2016-12-07	2016-12-21	2017-01-03	PSE16	Felch-PSE	False	False	True	False	False	False
755	 VCB-PS-AG-0028CX	Tube Plugging Criteria and Tube Plugging Limit - Rev00 - C-QR	2016-11-01	2016-11-18	2016-11-11	2016-11-14	PSE21	Troficanto-PSE	True	True	False	False	True	True
756	 VCB-PS-AG-0028CY	Tube Plugging Criteria and Tube Plugging Limit - Rev00 - C-5059	2016-11-01	2016-11-18	2016-11-11	2016-11-14	PSE21	Troficanto-PSE	True	True	False	False	True	True
757	 VCB-PS-AG-0028CZ	Tube Plugging Criteria and Tube Plugging Limit - Rev00 - C-Res2	2016-11-21	2016-12-01	2016-11-15	2016-11-15	PSE17	Metzger-PSE	True	False	False	False	True	True
758	 VCB-PS-AG-30CX	EDDY CURRENT TESTING - Rev00 - C-QR	2016-10-14	2016-11-02	2016-10-14	2016-11-02	PSE21	Troficanto-PSE	False	True	False	False	False	True
759	 VCB-PS-AG-30CY	EDDY CURRENT TESTING - Rev00 - C-5059	2016-10-14	2016-11-02	2016-10-14	2016-11-01	PSE21	Troficanto-PSE	False	True	False	False	False	True
760	 VCB-PS-AG-30CZ	EDDY CURRENT TESTING - Rev00 - C-Res2	2016-11-03	2016-11-11	2016-11-03	2016-11-11	PSE17	Metzger-PSE	True	True	False	False	True	True
761	 VCB-PS-AG-30d	EDDY CURRENT TESTING - Rev00 - Approval	2016-11-14	2016-11-29	2016-12-01	2016-12-14	DM16	DM Eng-PSE (Sterdis)	False	False	True	True	False	False
762	 VCB-PS-AG-35CX	HEAT EXCHANGER INSPECTION - Rev00 - C-QR	2016-10-14	2016-11-02	2016-10-14	2016-11-02	PSE21	Troficanto-PSE	False	True	False	False	False	True
763	 VCB-PS-AG-35CY	HEAT EXCHANGER INSPECTION - Rev00 - C-5059	2016-10-14	2016-11-02	2016-10-14	2016-11-02	PSE21	Troficanto-PSE	False	True	False	False	False	True
764	 VCB-PS-AG-35CZ	HEAT EXCHANGER INSPECTION - Rev00 - C-Res2	2016-11-03	2016-11-11	2016-11-03	2016-11-11	PSE17	Metzger-PSE	True	True	False	False	True	True
765	 VCB-PS-AG-35d	HEAT EXCHANGER INSPECTION - Rev00 - Approval	2016-11-14	2016-11-29	2016-12-01	2016-12-14	DM16	DM Eng-PSE (Sterdis)	False	False	True	True	False	False
766	 VCB-PSEG-04a	DESIGN CHANGE REVIEW - Rev00 - Preparation	2016-11-01	2016-11-08	2017-04-03	2017-04-10	PSETBD	ENG (TBD) PSE	False	False	True	True	False	False
767	 VCB-PSEG-04b	DESIGN CHANGE REVIEW - Rev00 - Draft	2016-11-09	2016-12-01	2017-04-11	2017-05-02	PSETBD	ENG (TBD) PSE	False	False	True	False	False	False
768	 VCB-PSEG-31cX	SOER 07-02 INTAKE ENVIRONMENTAL AND DESIGN EVALUATION - Rev00 - C-QR	2016-10-25	2016-11-11	2016-10-25	2016-11-15	PSE16	Felch-PSE	False	True	False	False	False	True
769	 VCB-PSEG-31cY	SOER 07-02 INTAKE ENVIRONMENTAL AND DESIGN EVALUATION - Rev00 - C-5059	2016-10-24	2016-11-10	2016-10-24	2016-11-14	PSE07	Free-PSE	False	True	False	False	False	True
770	 VCB-PSEG-31CZ	SOER 07-02 INTAKE ENVIRONMENTAL AND DESIGN EVALUATION - Rev00 - C-Res2	2016-11-14	2016-11-22	2016-11-15	2016-11-15	PSE07	Free-PSE	True	True	False	False	True	True
771	 VCB-PSEG-31d	SOER 07-02 INTAKE ENVIRONMENTAL AND DESIGN EVALUATION - Rev00 - Approval	2016-11-23	2016-12-08	2016-12-01	2016-12-14	DM16	DM Eng-PSE (Sterdis)	False	False	True	False	False	False
772	 VCB-REP-1000e	Special Nuclear Material Program Administration and Organization - Validate	2016-11-01	2016-11-07	2016-11-07	2016-11-11	E46	Van Sicklen-F&A	True	True	False	False	True	True
773	 VCB-REP-1001e	Special Nuclear Material Control - Validate	2016-11-01	2016-11-07	2016-11-07	2016-11-11	E46	Van Sicklen-F&A	True	True	False	False	True	True
774	 VCB-REP-1002e	Special Nuclear Material Physical Inventory - Validate	2016-11-01	2016-11-07	2016-11-07	2016-11-11	E46	Van Sicklen-F&A	True	True	False	False	True	True
775	 VCB-REP-1003e	Special Nuclear Material Reporting - Validate	2016-11-01	2016-11-07	2016-11-07	2016-11-11	E46	Van Sicklen-F&A	True	True	False	False	True	True
776	 VCB-REP-109.002a	INVERSE COUNT RATE RATIO PLOT (See APP-GW-GJP-111) - Rev00 - Preparation	2016-11-01	2016-11-08	2016-11-07	2016-11-14	E46	Van Sicklen-F&A	True	True	False	False	True	True
777	 VCB-REP-109.002b	INVERSE COUNT RATE RATIO PLOT (See APP-GW-GJP-111) - Rev00 - Draft	2016-11-09	2016-12-01	2016-11-15	2016-12-07	E46	Van Sicklen-F&A	True	False	False	False	True	False
778	 VCB-SAP-0119a	CONTROL OF THE STATION CALORIMETRIC COMPUTER PROGRAM - Rev00 - Preparation	2016-11-02	2016-11-08	2017-04-04	2017-04-10	PSE29	McLellan-PSE	False	False	True	True	False	False
779	 VCB-SAP-0119b	CONTROL OF THE STATION CALORIMETRIC COMPUTER PROGRAM - Rev00 - Draft	2016-11-09	2016-12-01	2017-04-11	2017-05-02	PSE29	McLellan-PSE	False	False	True	False	False	False
780	 VCB-SAP-0128c01	Electromagnetic Compatibility (EMC) Program - Rev00 - Review	2016-08-09	2016-11-03	2016-08-09	2016-11-08	PSETBD	ENG (TBD) PSE	False	True	False	False	False	True
781	 VCB-SAP-0128CX	Electromagnetic Compatibility (EMC) Program - Rev00 - C-QR	2016-10-14	2016-11-02	2016-10-14	2016-11-02	DE02	Howell-DE	False	True	False	False	False	True
782	 VCB-SAP-0128CY	Electromagnetic Compatibility (EMC) Program - Rev00 - C-5059	2016-11-01	2016-11-18	2016-12-01	2016-12-20	PSE37	Copeland-PSE	False	False	True	True	False	False
783	 VCB-SAP-0128CZ	Electromagnetic Compatibility (EMC) Program - Rev00 - C-Res2	2016-11-21	2016-12-01	2016-12-21	2017-01-03	PSE2	Jim Bringley-SupvPSE	False	False	True	False	False	False
784	 VCB-SAP-0143d	PREVENTATIVE MAINTENANCE PROGRAM - Rev00 - Approval	2016-06-30	2016-11-02	2016-06-30	2016-11-02	DM16	DM Eng-PSE (Sterdis)	False	True	False	False	False	True
785	 VCB-SAP-0158CX	STEAM GENERATOR MANAGEMENT PROGRAM - Rev00 - C-QR	2016-10-13	2016-11-01	2016-11-02	2016-11-02	PSE29	McLellan-PSE	False	True	False	False	True	True
786	 VCB-SAP-0158CY	STEAM GENERATOR MANAGEMENT PROGRAM - Rev00 - C-5059	2016-10-13	2016-11-01	2016-11-02	2016-11-07	PSE02	Shank-PSE	False	True	False	False	True	True
787	 VCB-SAP-0158CZ	STEAM GENERATOR MANAGEMENT PROGRAM - Rev00 - C-Res2	2016-11-02	2016-11-10	2016-11-04	2016-11-23	PSE19	McCorvey-PSE	True	True	False	False	True	True
788	 VCB-SAP-0158d	STEAM GENERATOR MANAGEMENT PROGRAM - Rev00 - Approval	2016-11-11	2016-11-28	2016-11-23	2016-12-01	DM16	DM Eng-PSE (Sterdis)	True	False	False	True	True	False
789	 VCB-SAP-0159c01	Air Operated Valve (AOV) Program - Rev00 - Review	2016-10-31	2016-11-21	2016-10-31	2016-11-23	PSE16	Felch-PSE	False	True	False	False	False	True
790	 VCB-SAP-0159CX	Air Operated Valve (AOV) Program - Rev00 - C-QR	2016-11-01	2016-11-18	2016-12-01	2016-12-20	PSE21	Troficanto-PSE	False	False	True	True	False	False
791	 VCB-SAP-0159CY	Air Operated Valve (AOV) Program - Rev00 - C-5059	2016-11-01	2016-11-18	2016-12-01	2016-12-20	PSE16	Felch-PSE	False	False	True	True	False	False
792	 VCB-SAP-0159CZ	Air Operated Valve (AOV) Program - Rev00 - C-Res2	2016-11-21	2016-12-01	2016-12-21	2017-01-03	PSE16	Felch-PSE	False	False	True	False	False	False
793	 VCB-SAP-0160c01	MOTOR OPERATED VALVE PROGRAM - Rev00 - Review	2016-10-24	2016-11-21	2016-10-24	2016-11-29	PSE06	Terry-PSE	False	True	False	False	False	True
794	 VCB-SAP-0160CX	MOTOR OPERATED VALVE PROGRAM - Rev00 - C-QR	2016-11-01	2016-11-18	2016-12-01	2016-12-20	PSE27	Dao-PSE	False	False	True	True	False	False
795	 VCB-SAP-0160CY	MOTOR OPERATED VALVE PROGRAM - Rev00 - C-5059	2016-11-01	2016-11-18	2016-11-21	2016-11-21	PSE06	Terry-PSE	True	True	False	False	True	True
796	 VCB-SAP-0160CZ	MOTOR OPERATED VALVE PROGRAM - Rev00 - C-Res2	2016-11-21	2016-12-01	2016-12-21	2017-01-03	PSE06	Terry-PSE	False	False	True	False	False	False
797	 VCB-SAP-0161CX	SNUBBER PROGRAM DOCUMENT - Rev00 - C-QR	2016-10-21	2016-11-03	2016-10-21	2016-11-04	PSE21	Troficanto-PSE	False	True	False	False	False	True
798	 VCB-SAP-0161CY	SNUBBER PROGRAM DOCUMENT - Rev00 - C-5059	2016-10-21	2016-11-03	2016-10-21	2016-11-08	PSE20	Post-PSE	False	True	False	False	False	True
799	 VCB-SAP-0161CZ	SNUBBER PROGRAM DOCUMENT - Rev00 - C-Res2	2016-11-04	2016-11-14	2016-11-11	2016-11-16	PSE20	Post-PSE	True	True	False	False	True	True
800	 VCB-SAP-0161d	SNUBBER PROGRAM DOCUMENT - Rev00 - Approval	2016-11-15	2016-11-30	2016-12-01	2016-12-14	DM16	DM Eng-PSE (Sterdis)	False	False	True	True	False	False
801	 VCB-SAP-0162a	GAS INTRUSION MANAGEMENT PROGRAM  - Rev01 - Preparation	2016-02-18	2016-05-09	2016-11-23	2016-11-23	PSE07	Free-PSE	False	False	False	False	True	True
802	 VCB-SAP-0162b	GAS INTRUSION MANAGEMENT PROGRAM - Rev01 - Draft	2016-05-09	2016-06-03	2016-11-28	2016-11-28	PSE07	Free-PSE	False	False	False	False	True	True
803	 VCB-SAP-0162cX	GAS INTRUSION MANAGEMENT PROGRAM - Rev01 - C-QR	2016-09-26	2016-09-30	2016-11-29	2016-11-29	PSE27	Dao-PSE	False	False	False	False	True	True
804	 VCB-SAP-0162cY	GAS INTRUSION MANAGEMENT PROGRAM - Rev01 - C-5059	2016-10-03	2016-10-03	2016-11-29	2016-11-29	PSE07	Free-PSE	False	False	False	False	True	True
805	 VCB-SAP-0162cZ	GAS INTRUSION MANAGEMENT PROGRAM - Rev01 - C-Res2	2016-09-28	2016-10-06	2016-11-29	2016-11-29	PSE07	Free-PSE	False	False	False	False	True	True
806	 VCB-SAP-0162d	GAS INTRUSION MANAGEMENT PROGRAM - Rev01 - Approval	2016-10-24	2016-11-02	2016-12-01	2016-12-12	DM16	DM Eng-PSE (Sterdis)	False	False	False	True	False	False
807	 VCB-SAP-0401d	Primary Water Chemistry Control - Rev00 - Approval	2016-10-31	2016-11-18	2016-10-31	2016-12-15	CH	Chem	False	False	False	True	False	False
808	 VCB-SAP-0402d	Secondary Water Chemistry Control - Rev00 - Approval	2016-10-31	2016-11-18	2016-10-31	2016-12-15	CH	Chem	False	False	False	True	False	False
809	 VCB-SAP-0605c	ADMINISTRATION OF THE CMMS PROGRAM - Rev00 - Review	2016-08-29	2016-11-01	2016-08-29	2016-12-22	P1	POM	False	False	False	True	False	False
810	 VCB-SAP-0605CW	ADMINISTRATION OF THE CMMS PROGRAM - Rev00 - C-Res1	2016-11-02	2016-11-10	2016-12-27	2017-01-05	P1	POM	False	False	True	True	False	False
811	 VCB-SAP-0605CX	ADMINISTRATION OF THE CMMS PROGRAM - Rev00 - C-QR	2016-11-11	2016-12-02	2017-01-06	2017-01-25	P1	POM	False	False	True	False	False	False
812	 VCB-SAP-0605CY	ADMINISTRATION OF THE CMMS PROGRAM - Rev00 - C-5059	2016-11-11	2016-12-02	2017-01-06	2017-01-25	P1	POM	False	False	True	False	False	False
813	 VCB-SAP-0642c01	Administration of Welding - Rev00 - Review	2016-10-26	2016-11-23	2016-10-26	2016-12-06	PSE07	Free-PSE	False	False	False	True	False	False
814	 VCB-SAP-0642CX	Administration of Welding - Rev00 - C-QR	2016-11-01	2016-11-18	2016-12-01	2016-12-20	PSE04	Schmick-PSE	False	False	True	True	False	False
815	 VCB-SAP-0642CY	Administration of Welding - Rev00 - C-5059	2016-11-01	2016-11-18	2016-11-18	2016-11-21	PSE07	Free-PSE	True	True	False	False	True	True
816	 VCB-SAP-0642CZ	Administration of Welding - Rev00 - C-Res2	2016-11-21	2016-12-01	2016-12-21	2017-01-03	PSE07	Free-PSE	False	False	True	False	False	False
817	 VCB-SAP-0703CW	Controls for VCS2's Unit 2/3 Zone andVCS T2/3Switchyards' Activities - Rev00 - C-Res1	2016-11-01	2016-11-09	2017-02-01	2017-02-09	OP	Ops Proc	False	False	True	True	False	False
818	 VCB-SAP-0703CX	Controls for VCS2's Unit 2/3 Zone andVCS T2/3Switchyards' Activities - Rev00 - C-QR	2016-11-10	2016-12-01	2017-02-10	2017-03-01	OP	Ops Proc	False	False	True	False	False	False
819	 VCB-SAP-0703CY	Controls for VCS2's Unit 2/3 Zone andVCS T2/3Switchyards' Activities - Rev00 - C-5059	2016-11-10	2016-12-01	2017-02-10	2017-03-01	OP	Ops Proc	False	False	True	False	False	False
820	 VCB-SAP-0999Aa	Performance Improvement - Rev00 - Preparation	2016-10-20	2016-11-14	2016-10-20	2016-11-21	J1	OD&P	False	True	False	False	False	True
821	 VCB-SAP-0999Ab	Performance Improvement - Rev00 - Draft (no review needed)	2016-11-15	2016-12-16	2016-11-22	2017-02-23	J1	OD&P	True	False	False	False	True	False
822	 VCB-SAP-0999Bd	CR Review Team - Rev00 - Approval	2016-09-29	2016-11-28	2016-09-29	2016-12-06	J1	OD&P	False	False	False	True	False	False
823	 VCB-SAP-0999Cd	Management Review Team (MRT) - Rev00 - Approval	2016-09-29	2016-11-28	2016-09-29	2016-12-06	J1	OD&P	False	False	False	True	False	False
824	 VCB-SAP-0999d	Corrective action program - Rev00 - Approval	2016-09-29	2016-11-28	2016-09-29	2016-12-06	J1	OD&P	False	False	False	True	False	False
825	 VCB-SAP-0999d-capg	CAPG-01 Corrective action program GUIDELINES - Rev00 - Approval	2016-09-29	2016-11-08	2016-09-29	2017-02-23	J1	OD&P	False	False	False	True	False	False
826	 VCB-SAP-0999d-capg2	CAPG-02 CAP Problem Identification and Resolution and Outage Guidelines - Rev00 - Approval	2016-09-29	2016-11-08	2016-09-29	2017-02-23	J1	OD&P	False	False	False	True	False	False
827	 VCB-SAP-0999Da	Quality Assurance Finding Resolution and Escalation - Rev00 - Preparation	2016-10-20	2016-11-14	2016-10-20	2016-11-21	J1	OD&P	False	True	False	False	False	True
828	 VCB-SAP-0999Db	Quality Assurance Finding Resolution and Escalation - Rev00 - Draft (no review needed)	2016-11-15	2016-12-16	2016-11-22	2016-12-27	QA	Quality Assurance	True	False	False	False	True	False
829	 VCB-SAP-0999Ed	Corrective Action Review Board (CARB) - Rev00 - Approval	2016-09-29	2016-11-28	2016-09-29	2016-12-06	J1	OD&P	False	False	False	True	False	False
830	 VCB-SAP-1100c01	BORIC ACID CORROSION CONTROL PROGRAM - Rev00 - Review	2016-11-02	2016-11-17	2016-11-17	2016-12-01	PSE20	Post-PSE	True	False	False	True	True	False
831	 VCB-SAP-1100CX	BORIC ACID CORROSION CONTROL PROGRAM - Rev00 - C-QR			2016-11-17	2016-11-29	PSE02	Shank-PSE	False	False	False	False	True	True
832	 VCB-SAP-1100CY	BORIC ACID CORROSION CONTROL PROGRAM - Rev00 - C-5059			2016-11-17	2016-11-30	PSE20	Post-PSE	False	False	False	False	True	True
833	 VCB-SAP-1100CZ	BORIC ACID CORROSION CONTROL PROGRAM - Rev00 - C-Res2	2016-11-18	2016-11-28	2016-12-02	2016-12-02	PSE20	Post-PSE	False	False	True	True	False	False
834	 VCB-SAP-1100d	BORIC ACID CORROSION CONTROL PROGRAM - Rev00 - Approval	2016-11-29	2016-12-08	2016-12-05	2016-12-07	DM16	DM Eng-PSE (Sterdis)	False	False	True	False	False	False
835	 VCB-SAP-1257d	HEAT EXCHANGER PROGRAM - Rev00 - Approval	2016-10-05	2016-11-03	2016-10-05	2016-12-05	DM16	DM Eng-PSE (Sterdis)	False	False	False	True	False	False
836	 VCB-SAP-1282cw	Electrical Cable Reliability Monitoring Program - Rev01- C-Res1	2016-11-15	2016-11-23	2016-11-15	2016-11-21	DE15	Blake-DE	True	True	False	False	True	True
837	 VCB-SAP-1282cx	Electrical Cable Reliability Monitoring Program - Rev01- C-QR	2016-11-28	2016-12-15	2016-11-22	2016-12-13	DE02	Howell-DE	True	False	False	False	True	False
838	 VCB-SAP-1282cy	Electrical Cable Reliability Monitoring Program - Rev01- C-5059	2016-11-28	2016-12-15	2016-11-22	2016-12-13	DE02	Howell-DE	True	False	False	False	True	False
839	 VCB-SAP-1285c01	ENGINEERING DIAGNOSTICS AND ANALYSIS PROGRAMS - Rev00 - Review	2016-10-07	2016-11-04	2016-10-07	2016-11-16	PSE32	Sonnett-PSE	False	True	False	False	False	True
840	 VCB-SAP-1285CX	ENGINEERING DIAGNOSTICS AND ANALYSIS PROGRAMS - Rev00 - C-QR	2016-11-01	2016-11-18	2016-12-01	2016-12-20	PSE27	Dao-PSE	False	False	True	True	False	False
841	 VCB-SAP-1285CY	ENGINEERING DIAGNOSTICS AND ANALYSIS PROGRAMS - Rev00 - C-5059	2016-11-01	2016-11-18	2016-12-01	2016-12-20	PSE08	Earnest-PSE	False	False	True	True	False	False
842	 VCB-SAP-1285CZ	ENGINEERING DIAGNOSTICS AND ANALYSIS PROGRAMS - Rev00 - C-Res2	2016-11-21	2016-12-01	2016-12-21	2017-01-03	PSE32	Sonnett-PSE	False	False	True	False	False	False
843	 VCB-SAP-1289a	Check Valve Maintenance and Monitoring Program - Rev00 - Preparation	2016-11-01	2016-11-07	2016-12-08	2016-12-14	PSE04	Schmick-PSE	False	False	True	True	False	False
844	 VCB-SAP-1289b	Check Valve Maintenance and Monitoring Program  - Rev00 - Draft	2016-11-08	2016-11-30	2016-12-15	2017-01-09	PSE04	Schmick-PSE	False	False	True	True	False	False
845	 VCB-SAP-1290CX	EQUIPMENT RELIABILITY PROCESS - Rev00 - C-QR	2016-11-01	2016-11-18	2016-11-01	2016-11-04	PSE27	Dao-PSE	True	True	False	False	True	True
846	 VCB-SAP-1290CY	EQUIPMENT RELIABILITY PROCESS - Rev00 - C-5059	2016-11-01	2016-11-18	2016-11-01	2016-11-04	PSE33	Yang-PSE	True	True	False	False	True	True
847	 VCB-SAP-1290CZ	EQUIPMENT RELIABILITY PROCESS - Rev00 - C-Res2	2016-11-21	2016-12-01	2016-11-01	2016-11-09	PSE33	Yang-PSE	True	False	False	False	True	True
848	 VCB-SAP-1294b	INSERVICE INSPECTION PROGRAM - Rev00 - Draft	2016-10-03	2016-11-29	2016-10-03	2016-11-18	PSE21	Troficanto-PSE	False	True	False	False	False	True
849	 VCB-SAP-1294c01	INSERVICE INSPECTION PROGRAM - Rev00 - Review	2016-11-30	2016-12-30	2016-11-28	2016-12-20	PSE21	Troficanto-PSE	True	False	False	False	True	False
850	 VCB-SAP-1294cx	INSERVICE INSPECTION PROGRAM - Rev00 - C-QR	2016-11-30	2016-12-19	2016-12-01	2016-12-15	PSE02	Shank-PSE	False	False	True	False	False	False
851	 VCB-SAP-1294cy	INSERVICE INSPECTION PROGRAM - Rev00 - C-5059	2016-11-30	2016-12-19	2016-11-21	2016-12-09	PSE21	Troficanto-PSE	True	False	False	False	True	False
852	 VCB-SAP-1356d	CDG-01: Cause Determination Guidelines - Rev00 - Approval	2016-09-29	2016-11-28	2016-09-29	2016-12-01	J1	OD&P	False	False	False	True	False	False
853	 VCB-SAP-1361a	MITIGATING SYSTEMS PERFORMANCE INDEX (MSPI) - Rev00 - Preparation	2016-11-01	2016-11-07	2017-04-03	2017-04-07	PSETBD	ENG (TBD) PSE	False	False	True	True	False	False
854	 VCB-SAP-1361b	MITIGATING SYSTEMS PERFORMANCE INDEX (MSPI) - Rev00 - Draft	2016-11-08	2016-11-30	2017-04-10	2017-05-01	PSETBD	ENG (TBD) PSE	False	False	True	True	False	False
855	 VCB-SAP-2001d	Turbine-Generator Management Program - Rev00 - Approval	2015-03-16	2016-11-03	2015-03-16	2016-12-05	DM16	DM Eng-PSE (Sterdis)	False	False	False	True	False	False
856	 VCB-SAP-2002a	Relief Valve Maintenance and Monitoring Program - Rev00 - Preparation	2016-11-01	2016-11-07	2016-12-08	2016-12-14	PSE04	Schmick-PSE	False	False	True	True	False	False
857	 VCB-SAP-2002b	Relief Valve Maintenance and Monitoring Program - Rev00 - Draft	2016-11-08	2016-11-30	2016-12-15	2017-01-09	PSE04	Schmick-PSE	False	False	True	True	False	False
858	 VCB-SAP-2003a	Explosively Actuated (Squib) Valve Maintenance and Monitoring Program - Rev00 - Preparation	2016-11-01	2016-11-07	2017-04-03	2017-04-07	PSETBD	ENG (TBD) PSE	False	False	True	True	False	False
859	 VCB-SAP-2003b	Explosively Actuated (Squib) Valve Maintenance and Monitoring Program - Rev00 - Draft	2016-11-08	2016-11-30	2017-04-10	2017-05-01	PSETBD	ENG (TBD) PSE	False	False	True	True	False	False
860	 VCB-SAP-2004a	CONTAINMENT CLEANLINESS AND SAMPLING PROGRAM - Rev00 - Preparation	2016-11-01	2016-11-07	2017-02-01	2017-02-07	PSETBD	ENG (TBD) PSE	False	False	True	True	False	False
861	 VCB-SAP-2004b	CONTAINMENT CLEANLINESS AND SAMPLING PROGRAM - Rev00 - Draft	2016-11-08	2016-11-30	2017-02-08	2017-02-28	PSETBD	ENG (TBD) PSE	False	False	True	True	False	False
862	 VCB-SAP-2005d	PUMP PROGRAM - Rev00 - Approval	2016-09-14	2016-11-02	2016-09-14	2016-12-02	DM16	DM Eng-PSE (Sterdis)	False	False	False	True	False	False
863	 VCB-SAP-2009d	Equipment Qualification Process and Control - Rev00 - Approval	2016-07-05	2016-11-01	2016-07-05	2016-12-01	DM16	DM Eng-PSE (Sterdis)	False	False	False	True	False	False
864	 VCB-SCP-001 att 01a	*SGI* LOSS OR DEGRADATION OF PHYSICAL SECURITY SYSTEM AND COMMUNICATION SYSTEM COMPONENTS - Rev00 - Preparation	2016-11-10	2016-11-16	2016-11-14	2016-11-15	N1	NPS	True	True	False	False	True	True
865	 VCB-SCP-001 att 01b	*SGI* LOSS OR DEGRADATION OF PHYSICAL SECURITY SYSTEM AND COMMUNICATION SYSTEM COMPONENTS - Rev00 - Draft	2016-11-17	2016-12-08	2016-11-16	2017-02-28	N1	NPS	True	False	False	False	True	False
866	 VCB-SCP-001 att 02a	*SGI* DUTIES AND RESPONSIBILITIES DURING SECURITY EVENTS - Rev00 - Preparation	2016-11-11	2016-11-15	2016-11-14	2016-11-15	N1	NPS	True	True	False	False	True	True
867	 VCB-SCP-001 att 02b	*SGI* DUTIES AND RESPONSIBILITIES DURING SECURITY EVENTS - Rev00 - Draft	2016-11-16	2016-12-09	2016-11-15	2017-02-28	N1	NPS	True	False	False	False	True	False
868	 VCB-SCP-001 att 03a	*SGI* EXTORTION / COERCION / HOSTAGE THREAT - Rev00 - Preparation	2016-11-14	2016-11-18	2016-11-14	2016-11-15	N1	NPS	True	True	False	False	True	True
869	 VCB-SCP-001 att 03b	*SGI* EXTORTION / COERCION / HOSTAGE THREAT - Rev00 - Draft	2016-11-21	2016-12-12	2016-11-16	2017-02-28	N1	NPS	True	False	False	False	True	False
870	 VCB-SCP-001 att 04a	*SGI* PROTECTED AND VITAL AREA INTRUSION ALARM RESPONSE/DISCOVER OF BREACHED BARRIER - Rev00 - Preparation	2016-11-15	2016-11-21	2016-11-14	2016-11-15	N1	NPS	True	True	False	False	True	True
871	 VCB-SCP-001 att 04b	*SGI* PROTECTED AND VITAL AREA INTRUSION ALARM RESPONSE/DISCOVER OF BREACHED BARRIER - Rev00 - Draft	2016-11-22	2016-12-13	2016-11-16	2017-02-28	N1	NPS	True	False	False	False	True	False
872	 VCB-SCP-001 att 05a	*SGI* DETECTION OF IMPENDING ATTACK, THREAT / DIRECT ARMED ATTACK - Rev00 - Preparation	2016-11-16	2016-11-28	2016-11-14	2016-11-15	N1	NPS	True	True	False	False	True	True
873	 VCB-SCP-001 att 05b	*SGI* DETECTION OF IMPENDING ATTACK, THREAT / DIRECT ARMED ATTACK - Rev00 - Draft	2016-11-29	2016-12-16	2016-11-11	2017-02-28	N1	NPS	True	False	False	False	True	False
874	 VCB-SCP-001 att 06a	*SGI* BOMB/SABOTAGE DEVICE SEARCH - Rev00 - Preparation	2016-11-17	2016-11-23	2016-11-02	2016-11-08	N1	NPS	True	True	False	False	True	True
875	 VCB-SCP-001 att 06b	*SGI* BOMB/SABOTAGE DEVICE SEARCH - Rev00 - Draft	2016-11-28	2016-12-15	2016-11-16	2017-02-28	N1	NPS	True	False	False	False	True	False
876	 VCB-SCP-001 att 07a	*SGI* BOMB THREAT / EXPLOSIVE DEVICE DISCOVERED - Rev00 - Preparation	2016-11-18	2016-11-28	2016-11-14	2016-11-16	N1	NPS	True	True	False	False	True	True
877	 VCB-SCP-001 att 07b	*SGI* BOMB THREAT / EXPLOSIVE DEVICE DISCOVERED - Rev00 - Draft	2016-11-29	2016-12-16	2016-11-11	2017-02-28	N1	NPS	True	False	False	False	True	False
878	 VCB-SCP-001 att 08a	*SGI* FIRE, EXPLOSION OR OTHER CATASTROPHE - Rev00 - Preparation	2016-11-21	2016-11-29	2016-11-02	2016-11-08	N1	NPS	True	True	False	False	True	True
879	 VCB-SCP-001 att 08b	*SGI* FIRE, EXPLOSION OR OTHER CATASTROPHE - Rev00 - Draft	2016-11-30	2016-12-19	2016-11-11	2017-02-28	N1	NPS	True	False	False	False	True	False
880	 VCB-SCP-001 att 09a	*SGI* HOSTAGE SITUATION - Rev00 - Preparation	2016-11-22	2016-11-30	2016-11-16	2016-11-21	N1	NPS	True	True	False	False	True	True
881	 VCB-SCP-001 att 10a	*SGI* DETECTION OF ABERRANT BEHAVIOR - Rev00 - Preparation	2016-11-23	2016-12-01	2016-11-16	2016-12-06	N1	NPS	True	False	False	False	True	False
882	 VCB-SCP-001 att 11a	*SGI* SECURITY FORCE STRIKE OR UNAVAILABILITY OF SECURITY FORCE - Rev00 - Preparation	2016-11-28	2016-12-02	2016-11-21	2016-12-07	N1	NPS	True	False	False	False	True	False
883	 VCB-SCP-001 att 12a	*SGI* LOSS OF CONTACT WITH SECURITY OFFICERS - Rev00 - Preparation	2016-11-29	2016-12-05	2016-11-21	2016-12-07	N1	NPS	True	False	False	False	True	False
884	 VCB-SCP-001 att 13a	*SGI* SECURITY FORCE EMERGENCY RECALL - Rev00 - Preparation	2016-11-30	2016-12-06	2016-11-21	2016-12-07	N1	NPS	True	False	False	False	True	False
885	 VCB-SCP-001a	*SGI* Safeguards Contingency Procedure - Rev00 - Preparation	2016-11-09	2016-11-15	2016-11-07	2016-11-14	N1	NPS	True	True	False	False	True	True
886	 VCB-SCP-001b	*SGI* Safeguards Contingency Procedure - Rev00 - Draft	2016-11-16	2016-12-07	2016-11-14	2017-02-28	N1	NPS	True	False	False	False	True	False
887	 VCB-SGMP-0006c01	STEAM GENERATOR TUBE INSPECTION EDDY CURRENT DATA ANALYST GUIDELINES - Rev00 - Review	2016-11-01	2016-12-01	2016-11-01	2016-12-01	PSE19	McCorvey-PSE	True	False	False	False	True	False
888	 VCB-SGMP-0007b	DEGRADATION AND INTEGRITY ASSESSMENTS - Rev00 - Draft	2016-10-07	2016-11-01	2016-10-07	2016-11-01	PSE19	McCorvey-PSE	False	True	False	False	False	True
889	 VCB-SGMP-0007c01	DEGRADATION AND INTEGRITY ASSESSMENTS - Rev00 - Review	2016-11-04	2016-12-06	2016-11-04	2016-12-06	PSE19	McCorvey-PSE	True	False	False	False	True	False
890	 VCB-SOP-ECS-0313d	Local Switchgear Breaker Operations - Rev00 - Approval	2016-10-14	2016-11-07	2016-10-14	2016-11-10	OP	Ops Proc	False	True	False	False	False	True
891	 VCB-SPP-0200b	SECURITY PATROLS - Rev00 - Draft	2016-11-01	2016-11-14	2016-11-04	2016-11-15	N1	NPS	True	True	False	False	True	True
892	 VCB-SPP-0200c	SECURITY PATROLS - Rev00 - Review	2016-11-15	2016-12-15	2016-11-16	2016-12-16	N1	NPS	True	False	False	False	True	False
893	 VCB-SPP-0201b	PERSONNEL ACCESS - Rev00 - Draft	2016-10-17	2016-11-07	2016-10-17	2016-10-24	N1	NPS	False	False	False	True	False	False
894	 VCB-SPP-0201c	PERSONNEL ACCESS - Rev00 - Review	2016-11-01	2016-12-01	2016-11-14	2016-12-14	N1	NPS	True	False	False	False	True	False
895	 VCB-SPP-0222b	OPERATIONAL TESTING OF SECURITY SYSTEM COMPONENTS - Rev00 - Draft	2016-10-17	2016-11-07	2016-10-17	2016-11-04	N1	NPS	False	True	False	False	False	True
896	 VCB-SPP-0222c	OPERATIONAL TESTING OF SECURITY SYSTEM COMPONENTS - Rev00 - Review	2016-11-08	2016-12-08	2016-11-11	2016-12-16	N1	NPS	True	False	False	False	True	False
897	 VCB-SPP-0223b	SECURITY SURVEILLANCE SYSTEM OPERATIONAL TESTING - Rev00 - Draft	2016-11-01	2016-11-14	2016-11-04	2016-11-15	N1	NPS	True	True	False	False	True	True
898	 VCB-SPP-0223c	SECURITY SURVEILLANCE SYSTEM OPERATIONAL TESTING - Rev00 - Review	2016-11-15	2016-12-15	2016-11-17	2017-06-30	N1	NPS	True	False	False	False	True	False
899	 VCB-SPP-0224b	OPERATIONAL TESTING OF SECURITY, ACCESS CONTROL AND INTRUSION DETECTION SYSTEMS - Rev00 - Draft	2016-11-01	2016-11-14	2016-11-04	2017-01-31	N1	NPS	True	False	False	True	True	False
900	 VCB-SPP-0224c	OPERATIONAL TESTING OF SECURITY, ACCESS CONTROL AND INTRUSION DETECTION SYSTEMS - Rev00 - Review	2016-11-15	2016-12-15	2017-02-01	2017-03-01	N1	NPS	False	False	True	False	False	False
901	 VCB-SPP-0225b	PERIMETER INTRUSION DETECTION SYSTEM OPERATIONAL TESTING - Rev00 - Draft	2016-11-01	2016-11-14	2016-11-04	2017-01-31	N1	NPS	True	False	False	True	True	False
902	 VCB-SPP-0225c	PERIMETER INTRUSION DETECTION SYSTEM OPERATIONAL TESTING - Rev00 - Review	2016-11-15	2016-12-15	2017-02-01	2017-03-01	N1	NPS	False	False	True	False	False	False
903	 VCB-SPP-0226b	OPERATIONAL TESTING OF SECURITY COMMUNICATIONS SYSTEMS - Rev00 - Draft	2016-11-01	2016-11-14	2016-11-04	2017-01-31	N1	NPS	True	False	False	True	True	False
904	 VCB-SPP-0226c	OPERATIONAL TESTING OF SECURITY COMMUNICATIONS SYSTEMS - Rev00 - Review	2016-11-15	2016-12-15	2017-02-01	2017-03-01	N1	NPS	False	False	True	False	False	False
905	 VCB-SPP-0227b	SPECIAL SECURITY EQUIPMENT OPERATIONAL TESTING - Rev00 - Draft	2016-11-02	2016-11-15	2016-11-11	2016-11-21	N1	NPS	True	True	False	False	True	True
906	 VCB-SPP-0227c	SPECIAL SECURITY EQUIPMENT OPERATIONAL TESTING - Rev00 - Review	2016-11-16	2016-12-16	2016-11-22	2016-12-29	N1	NPS	True	False	False	False	True	False
907	 VCB-SPP-0997cZ	PROTECTION OF SNM DURING CONSTRUCTION Rev00 - C-Res2	2016-11-01	2016-11-09	2016-11-07	2016-11-11	N1	NPS	True	True	False	False	True	True
908	 VCB-SPP-0997d	PROTECTION OF SNM DURING CONSTRUCTION - Rev00 - Approval	2016-11-10	2016-12-12	2016-11-14	2016-11-17	N1	NPS	True	False	False	False	True	True
909	 VCB-SSP-0010b	CONTROL OF CRITICAL WORK ACTIVITIES - Rev00 - Draft	2016-06-10	2016-11-01	2016-06-10	2016-11-01	P1	POM	False	True	False	False	False	True
910	 VCB-SSP-0010c	CONTROL OF CRITICAL WORK ACTIVITIES - Rev00 - Review	2016-11-01	2016-12-01	2016-12-01	2017-01-03	DM10	DM POM	False	False	True	False	False	False
911	 VCB-STP-2128.0021a	FIRE HOSE CABINET VALVE FLOW CHECK, VISUAL INSPECTION AND HYDROSTATIC PRESSURE TEST - Rev00 - Preparation	2016-11-01	2016-11-21	2017-03-01	2017-03-21	ERU2	ERU	False	False	True	True	False	False
912	 VCB-STP-2128.0021b	FIRE HOSE CABINET VALVE FLOW CHECK, VISUAL INSPECTION AND HYDROSTATIC PRESSURE TEST - Rev00 - Draft	2016-11-22	2016-12-07	2017-03-22	2017-04-04	ERU2	ERU	False	False	True	False	False	False
913	 VCB-STP-ISI-8001CX	HYDRAULIC SNUBBER VISUAL EXAMINATION- - Rev00 - C-QR	2016-09-28	2016-11-04	2016-09-28	2016-11-17	QC	Quality Control	False	True	False	False	False	True
914	 VCB-STP-ISI-8001CY	HYDRAULIC SNUBBER VISUAL EXAMINATION- - Rev00 - C-5059	2016-09-28	2016-11-04	2016-09-28	2016-11-04	QC	Quality Control	False	True	False	False	False	True
915	 VCB-STP-ISI-8001CZ	HYDRAULIC SNUBBER VISUAL EXAMINATION- - Rev00 - C-Res2	2016-10-27	2016-11-04	2016-10-27	2016-11-04	PSE20	Post-PSE	False	True	False	False	False	True
916	 VCB-STP-ISI-8001d	HYDRAULIC SNUBBER VISUAL EXAMINATION - Rev00 - Approval	2016-11-07	2016-11-18	2016-12-01	2016-12-14	DM06	DM QS	False	False	True	True	False	False
917	 VCB-STP-IST-8002b	Hydraulic Snubber Functional Testing - Rev00 - Draft	2016-10-24	2016-11-11	2016-12-19	2017-01-11	PSE20	Post-PSE	False	False	False	True	False	False
918	 VCB-STP-IST-8002c01	Hydraulic Snubber Functional Testing - Rev00 - Review	2016-11-14	2016-12-14	2017-01-12	2017-02-09	PSE20	Post-PSE	False	False	True	False	False	False
919	 VCB-STP-IST-8002CX	Hydraulic Snubber Functional Testing - Rev00 - C-QR	2016-11-14	2016-12-05	2017-01-12	2017-01-31	QC	Quality Control	False	False	True	False	False	False
920	 VCB-STP-IST-8002CY	Hydraulic Snubber Functional Testing - Rev00 - C-5059	2016-11-14	2016-12-05	2017-01-12	2017-01-31	QC	Quality Control	False	False	True	False	False	False
921	 VCB-STP-SGS-2001b	STEAM GENERATOR TUBE INSPECTION - Rev00 - Draft	2016-11-04	2016-11-28	2016-11-04	2016-11-28	PSE19	McCorvey-PSE	True	True	False	False	True	True
922	 VCB-STP-SGS-2001c01	STEAM GENERATOR TUBE INSPECTION - Rev00 - Review	2016-11-29	2016-12-20	2016-11-29	2016-12-20	PSE19	McCorvey-PSE	True	False	False	False	True	False
923	 VCB-STP-SGS-2002a	Steam Generator Secondary Side Inspection - Rev00 - Preparation	2016-11-01	2016-11-07	2016-11-01	2016-11-07	PSE19	McCorvey-PSE	True	True	False	False	True	True
924	 VCB-STP-SGS-2002b	Steam Generator Secondary Side Inspection - Rev00 - Draft	2016-11-08	2016-11-21	2016-11-08	2016-11-21	PSE19	McCorvey-PSE	True	True	False	False	True	True
925	 VCB-STP-SGS-2002c01	Steam Generator Secondary Side Inspection - Rev00 - Review	2016-11-22	2016-12-14	2016-11-28	2016-12-16	PSE19	McCorvey-PSE	True	False	False	False	True	False
926	 VCB-TR-0007c01	PRE-FIRE PLAN LEGEND - Rev00 - Review	2016-11-01	2016-12-01	2017-06-16	2017-07-17	O2	Ops SL	False	False	True	False	False	False
927	 VCB-TR-0007CX	PRE-FIRE PLAN LEGEND - Rev00 - C-QR	2016-11-01	2016-11-18	2017-06-16	2017-07-06	OP	Ops Proc	False	False	True	True	False	False
928	 VCB-TR-0007CY	PRE-FIRE PLAN LEGEND - Rev00 - C-5059	2016-11-01	2016-11-18	2017-06-16	2017-07-06	OP	Ops Proc	False	False	True	True	False	False
929	 VCB-TR-0007CZ	PRE-FIRE PLAN LEGEND - Rev00 - C-Res2	2016-11-21	2016-12-01	2017-07-07	2017-07-13	OP	Ops Proc	False	False	True	False	False	False
930	 VCB-TR-0008b	PRE-FIRE PLAN - SITE PLAN - Rev00 - Draft	2016-11-08	2016-11-30	2017-06-01	2017-06-21	OP	Ops Proc	False	False	True	True	False	False
931	 VCB-TR-0009c01	AB366-6 NON-RCA PRE-FIRE PLAN - Rev00 - Review	2016-11-01	2016-12-01	2017-06-01	2017-06-29	O2	Ops SL	False	False	True	False	False	False
932	 VCB-TR-0009CX	AB366-6 NON-RCA PRE-FIRE PLAN - Rev00 - C-QR	2016-11-01	2016-11-18	2017-06-01	2017-06-20	OP	Ops Proc	False	False	True	True	False	False
933	 VCB-TR-0009CY	AB366-6 NON-RCA PRE-FIRE PLAN - Rev00 - C-5059	2016-11-01	2016-11-18	2017-06-01	2017-06-20	OP	Ops Proc	False	False	True	True	False	False
934	 VCB-TR-0009CZ	AB366-6 NON-RCA PRE-FIRE PLAN - Rev00 - C-Res2	2016-11-21	2016-12-01	2017-06-21	2017-06-27	OP	Ops Proc	False	False	True	False	False	False
935	 VCB-TR-0010c01	AB382-6 NON RCA PRE-FIRE PLAN - Rev00 - Review	2016-11-01	2016-12-01	2017-06-16	2017-07-17	O2	Ops SL	False	False	True	False	False	False
936	 VCB-TR-0010CX	AB382-6 NON RCA PRE-FIRE PLAN - Rev00 - C-QR	2016-11-01	2016-11-18	2017-06-16	2017-07-06	OP	Ops Proc	False	False	True	True	False	False
937	 VCB-TR-0010CY	AB382-6 NON RCA PRE-FIRE PLAN - Rev00 - C-5059	2016-11-01	2016-11-18	2017-06-16	2017-07-06	OP	Ops Proc	False	False	True	True	False	False
938	 VCB-TR-0010CZ	AB382-6 NON RCA PRE-FIRE PLAN - Rev00 - C-Res2	2016-11-21	2016-12-01	2017-07-07	2017-07-13	OP	Ops Proc	False	False	True	False	False	False
939	 VCB-TR-0011c01	AB396-6 NON RCA PRE-FIRE PLAN - Rev00 - Review	2016-11-01	2016-12-01	2017-06-16	2017-07-17	O2	Ops SL	False	False	True	False	False	False
940	 VCB-TR-0011CX	AB396-6 NON RCA PRE-FIRE PLAN - Rev00 - C-QR	2016-11-01	2016-11-18	2017-06-16	2017-07-06	OP	Ops Proc	False	False	True	True	False	False
941	 VCB-TR-0011CY	AB396-6 NON RCA PRE-FIRE PLAN - Rev00 - C-5059	2016-11-01	2016-11-18	2017-06-16	2017-07-06	OP	Ops Proc	False	False	True	True	False	False
942	 VCB-TR-0011CZ	AB396-6 NON RCA PRE-FIRE PLAN - Rev00 - C-Res2	2016-11-21	2016-12-01	2017-07-07	2017-07-13	OP	Ops Proc	False	False	True	False	False	False
943	 VCB-TR-0012c01	AB400/407-2/410 NON RCA PRE-FIRE PLAN - Rev00 - Review	2016-11-01	2016-12-01	2017-06-16	2017-07-17	O2	Ops SL	False	False	True	False	False	False
944	 VCB-TR-0012CX	AB400/407-2/410 NON RCA PRE-FIRE PLAN - Rev00 - C-QR	2016-11-01	2016-11-18	2017-06-16	2017-07-06	OP	Ops Proc	False	False	True	True	False	False
945	 VCB-TR-0012CY	AB400/407-2/410 NON RCA PRE-FIRE PLAN - Rev00 - C-5059	2016-11-01	2016-11-18	2017-06-16	2017-07-06	OP	Ops Proc	False	False	True	True	False	False
946	 VCB-TR-0012CZ	AB400/407-2/410 NON RCA PRE-FIRE PLAN - Rev00 - C-Res2	2016-11-21	2016-12-01	2017-07-07	2017-07-13	OP	Ops Proc	False	False	True	False	False	False
947	 VCB-TR-0013c01	AB417-6 NON RCA PRE-FIRE PLAN - Rev00 - Review	2016-11-01	2016-12-01	2017-06-16	2017-07-17	O2	Ops SL	False	False	True	False	False	False
948	 VCB-TR-0013CX	AB417-6 NON RCA PRE-FIRE PLAN - Rev00 - C-QR	2016-11-01	2016-11-18	2017-06-16	2017-07-06	OP	Ops Proc	False	False	True	True	False	False
949	 VCB-TR-0013CY	AB417-6 NON RCA PRE-FIRE PLAN - Rev00 - C-5059	2016-11-01	2016-11-18	2017-06-16	2017-07-06	OP	Ops Proc	False	False	True	True	False	False
950	 VCB-TR-0013CZ	AB417-6 NON RCA PRE-FIRE PLAN - Rev00 - C-Res2	2016-11-21	2016-12-01	2017-07-07	2017-07-13	OP	Ops Proc	False	False	True	False	False	False
951	 VCB-TR-0014c01	AB430 NON RCA PRE-FIRE PLAN - Rev00 - Review	2016-11-01	2016-12-01	2017-06-16	2017-07-17	O2	Ops SL	False	False	True	False	False	False
952	 VCB-TR-0014CX	AB430 NON RCA PRE-FIRE PLAN - Rev00 - C-QR	2016-11-01	2016-11-18	2017-06-16	2017-07-06	OP	Ops Proc	False	False	True	True	False	False
953	 VCB-TR-0014CY	AB430 NON RCA PRE-FIRE PLAN - Rev00 - C-5059	2016-11-01	2016-11-18	2017-06-16	2017-07-06	OP	Ops Proc	False	False	True	True	False	False
954	 VCB-TR-0014CZ	AB430 NON RCA PRE-FIRE PLAN - Rev00 - C-Res2	2016-11-21	2016-12-01	2017-07-07	2017-07-13	OP	Ops Proc	False	False	True	False	False	False
955	 VCB-TR-0015c01	AB435-3 NON RCA PRE-FIRE PLAN - Rev00 - Review	2016-11-01	2016-12-01	2017-06-16	2017-07-17	O2	Ops SL	False	False	True	False	False	False
956	 VCB-TR-0015CX	AB435-3 NON RCA PRE-FIRE PLAN - Rev00 - C-QR	2016-11-01	2016-11-18	2017-06-16	2017-07-06	OP	Ops Proc	False	False	True	True	False	False
957	 VCB-TR-0015CY	AB435-3 NON RCA PRE-FIRE PLAN - Rev00 - C-5059	2016-11-01	2016-11-18	2017-06-16	2017-07-06	OP	Ops Proc	False	False	True	True	False	False
958	 VCB-TR-0015CZ	AB435-3 NON RCA PRE-FIRE PLAN - Rev00 - C-Res2	2016-11-21	2016-12-01	2017-07-07	2017-07-13	OP	Ops Proc	False	False	True	False	False	False
959	 VCB-TR-0016b	AB453/460-6 NON RCA PRE-FIRE PLAN - Rev00 - Draft	2016-04-26	2016-11-03	2017-06-01	2017-06-21	OP	Ops Proc	False	False	False	True	False	False
960	 VCB-TR-0016c01	AB453/460-6 NON RCA PRE-FIRE PLAN - Rev00 - Review	2016-11-04	2016-12-06	2017-06-22	2017-07-21	O2	Ops SL	False	False	True	False	False	False
961	 VCB-TR-0016CX	AB453/460-6 NON RCA PRE-FIRE PLAN - Rev00 - C-QR	2016-11-04	2016-11-23	2017-06-22	2017-07-12	OP	Ops Proc	False	False	True	True	False	False
962	 VCB-TR-0016CY	AB453/460-6 NON RCA PRE-FIRE PLAN - Rev00 - C-5059	2016-11-04	2016-11-23	2017-06-22	2017-07-12	OP	Ops Proc	False	False	True	True	False	False
963	 VCB-TR-0016CZ	AB453/460-6 NON RCA PRE-FIRE PLAN - Rev00 - C-Res2	2016-11-28	2016-12-06	2017-07-13	2017-07-19	OP	Ops Proc	False	False	True	False	False	False
964	 VCB-TR-0017c01	AB460-6/480 NON RCA PRE-FIRE PLAN - Rev00 - Review	2016-11-01	2016-12-01	2017-06-16	2017-07-17	O2	Ops SL	False	False	True	False	False	False
965	 VCB-TR-0017CX	AB460-6/480 NON RCA PRE-FIRE PLAN - Rev00 - C-QR	2016-11-01	2016-11-18	2017-06-16	2017-07-06	OP	Ops Proc	False	False	True	True	False	False
966	 VCB-TR-0017CY	AB460-6/480 NON RCA PRE-FIRE PLAN - Rev00 - C-5059	2016-11-01	2016-11-18	2017-06-16	2017-07-06	OP	Ops Proc	False	False	True	True	False	False
967	 VCB-TR-0017CZ	AB460-6/480 NON RCA PRE-FIRE PLAN - Rev00 - C-Res2	2016-11-21	2016-12-01	2017-07-07	2017-07-13	OP	Ops Proc	False	False	True	False	False	False
968	 VCB-TR-0018c01	AB366-6 RCA PRE-FIRE PLAN - Rev00 - Review	2016-11-01	2016-12-01	2017-06-16	2017-07-17	O2	Ops SL	False	False	True	False	False	False
969	 VCB-TR-0018CX	AB366-6 RCA PRE-FIRE PLAN - Rev00 - C-QR	2016-11-01	2016-11-18	2017-06-16	2017-07-06	OP	Ops Proc	False	False	True	True	False	False
970	 VCB-TR-0018CY	AB366-6 RCA PRE-FIRE PLAN - Rev00 - C-5059	2016-11-01	2016-11-18	2017-06-16	2017-07-06	OP	Ops Proc	False	False	True	True	False	False
971	 VCB-TR-0018CZ	AB366-6 RCA PRE-FIRE PLAN - Rev00 - C-Res2	2016-11-21	2016-12-01	2017-07-07	2017-07-13	OP	Ops Proc	False	False	True	False	False	False
972	 VCB-TR-0019c01	AB382-6 RCA PRE-FIRE PLAN - Rev00 - Review	2016-11-01	2016-12-01	2017-06-16	2017-07-17	O2	Ops SL	False	False	True	False	False	False
973	 VCB-TR-0019CX	AB382-6 RCA PRE-FIRE PLAN - Rev00 - C-QR	2016-11-01	2016-11-18	2017-06-16	2017-07-06	OP	Ops Proc	False	False	True	True	False	False
974	 VCB-TR-0019CY	AB382-6 RCA PRE-FIRE PLAN - Rev00 - C-5059	2016-11-01	2016-11-18	2017-06-16	2017-07-06	OP	Ops Proc	False	False	True	True	False	False
975	 VCB-TR-0019CZ	AB382-6 RCA PRE-FIRE PLAN - Rev00 - C-Res2	2016-11-21	2016-12-01	2017-07-07	2017-07-13	OP	Ops Proc	False	False	True	False	False	False
976	 VCB-TR-0020c01	AB396-6 RCA PRE-FIRE PLAN - Rev00 - Review	2016-11-01	2016-12-01	2017-06-16	2017-07-17	O2	Ops SL	False	False	True	False	False	False
977	 VCB-TR-0020CX	AB396-6 RCA PRE-FIRE PLAN - Rev00 - C-QR	2016-11-01	2016-11-18	2017-06-16	2017-07-06	OP	Ops Proc	False	False	True	True	False	False
978	 VCB-TR-0020CY	AB396-6 RCA PRE-FIRE PLAN - Rev00 - C-5059	2016-11-01	2016-11-18	2017-06-16	2017-07-06	OP	Ops Proc	False	False	True	True	False	False
979	 VCB-TR-0020CZ	AB396-6 RCA PRE-FIRE PLAN - Rev00 - C-Res2	2016-11-21	2016-12-01	2017-07-07	2017-07-13	OP	Ops Proc	False	False	True	False	False	False
980	 VCB-TR-0021b	AB400/407-2/410 RCA PRE-FIRE PLAN - Rev00 - Draft	2016-05-02	2016-11-02	2017-06-01	2017-06-21	OP	Ops Proc	False	False	False	True	False	False
981	 VCB-TR-0021c01	AB400/407-2/410 RCA PRE-FIRE PLAN - Rev00 - Review	2016-11-03	2016-12-05	2017-06-22	2017-07-21	O2	Ops SL	False	False	True	False	False	False
982	 VCB-TR-0021CX	AB400/407-2/410 RCA PRE-FIRE PLAN - Rev00 - C-QR	2016-11-03	2016-11-22	2017-06-22	2017-07-12	OP	Ops Proc	False	False	True	True	False	False
983	 VCB-TR-0021CY	AB400/407-2/410 RCA PRE-FIRE PLAN - Rev00 - C-5059	2016-11-03	2016-11-22	2017-06-22	2017-07-12	OP	Ops Proc	False	False	True	True	False	False
984	 VCB-TR-0021CZ	AB400/407-2/410 RCA PRE-FIRE PLAN - Rev00 - C-Res2	2016-11-23	2016-12-05	2017-07-13	2017-07-19	OP	Ops Proc	False	False	True	False	False	False
985	 VCB-TR-0022c01	AB417-6 RCA PRE-FIRE PLAN - Rev00 - Review	2016-11-01	2016-12-01	2017-06-16	2017-07-17	O2	Ops SL	False	False	True	False	False	False
986	 VCB-TR-0022CX	AB417-6 RCA PRE-FIRE PLAN - Rev00 - C-QR	2016-11-01	2016-11-18	2017-06-16	2017-07-06	OP	Ops Proc	False	False	True	True	False	False
987	 VCB-TR-0022CY	AB417-6 RCA PRE-FIRE PLAN - Rev00 - C-5059	2016-11-01	2016-11-18	2017-06-16	2017-07-06	OP	Ops Proc	False	False	True	True	False	False
988	 VCB-TR-0022CZ	AB417-6 RCA PRE-FIRE PLAN - Rev00 - C-Res2	2016-11-21	2016-12-01	2017-07-07	2017-07-13	OP	Ops Proc	False	False	True	False	False	False
989	 VCB-TR-0024c01	AB435-3 RCA PRE-FIRE PLAN - Rev00 - Review	2016-11-01	2016-12-01	2017-06-16	2017-07-17	O2	Ops SL	False	False	True	False	False	False
990	 VCB-TR-0024CX	AB435-3 RCA PRE-FIRE PLAN - Rev00 - C-QR	2016-11-01	2016-11-18	2017-06-16	2017-07-06	OP	Ops Proc	False	False	True	True	False	False
991	 VCB-TR-0024CY	AB435-3 RCA PRE-FIRE PLAN - Rev00 - C-5059	2016-11-01	2016-11-18	2017-06-16	2017-07-06	OP	Ops Proc	False	False	True	True	False	False
992	 VCB-TR-0024CZ	AB435-3 RCA PRE-FIRE PLAN - Rev00 - C-Res2	2016-11-21	2016-12-01	2017-07-07	2017-07-13	OP	Ops Proc	False	False	True	False	False	False
993	 VCB-TR-0025b	AB453/460-6 RCA PRE-FIRE PLAN - Rev00 - Draft	2016-05-02	2016-11-03	2017-06-01	2017-06-21	OP	Ops Proc	False	False	False	True	False	False
994	 VCB-TR-0025c01	AB453/460-6 RCA PRE-FIRE PLAN - Rev00 - Review	2016-11-04	2016-12-06	2017-06-22	2017-07-21	O2	Ops SL	False	False	True	False	False	False
995	 VCB-TR-0025CX	AB453/460-6 RCA PRE-FIRE PLAN - Rev00 - C-QR	2016-11-04	2016-11-23	2017-06-22	2017-07-12	OP	Ops Proc	False	False	True	True	False	False
996	 VCB-TR-0025CY	AB453/460-6 RCA PRE-FIRE PLAN - Rev00 - C-5059	2016-11-04	2016-11-23	2017-06-22	2017-07-12	OP	Ops Proc	False	False	True	True	False	False
997	 VCB-TR-0025CZ	AB453/460-6 RCA PRE-FIRE PLAN - Rev00 - C-Res2	2016-11-28	2016-12-06	2017-07-13	2017-07-19	OP	Ops Proc	False	False	True	False	False	False
998	 VCB-TR-0026c01	AB460-6/480 RCA PRE-FIRE PLAN - Rev00 - Review	2016-11-01	2016-12-01	2017-06-16	2017-07-17	O2	Ops SL	False	False	True	False	False	False
999	 VCB-TR-0026CX	AB460-6/480 RCA PRE-FIRE PLAN - Rev00 - C-QR	2016-11-01	2016-11-18	2017-06-16	2017-07-06	OP	Ops Proc	False	False	True	True	False	False
1000	 VCB-TR-0026CY	AB460-6/480 RCA PRE-FIRE PLAN - Rev00 - C-5059	2016-11-01	2016-11-18	2017-06-16	2017-07-06	OP	Ops Proc	False	False	True	True	False	False
1001	 VCB-TR-0026CZ	AB460-6/480 RCA PRE-FIRE PLAN - Rev00 - C-Res2	2016-11-21	2016-12-01	2017-07-07	2017-07-13	OP	Ops Proc	False	False	True	False	False	False
1002	 VCB-TR-0027c01	RW400A PRE-FIRE PLAN - Rev00 - Review	2016-11-01	2016-12-01	2017-06-16	2017-07-17	O2	Ops SL	False	False	True	False	False	False
1003	 VCB-TR-0027CX	RW400A PRE-FIRE PLAN - Rev00 - C-QR	2016-11-01	2016-11-18	2017-06-16	2017-07-06	OP	Ops Proc	False	False	True	True	False	False
1004	 VCB-TR-0027CY	RW400A PRE-FIRE PLAN - Rev00 - C-5059	2016-11-01	2016-11-18	2017-06-16	2017-07-06	OP	Ops Proc	False	False	True	True	False	False
1005	 VCB-TR-0027CZ	RW400A PRE-FIRE PLAN - Rev00 - C-Res2	2016-11-21	2016-12-01	2017-07-07	2017-07-13	OP	Ops Proc	False	False	True	False	False	False
1006	 VCB-TR-0028c01	RW400B PRE-FIRE PLAN - Rev00 - Review	2016-11-01	2016-12-01	2017-06-16	2017-07-17	O2	Ops SL	False	False	True	False	False	False
1007	 VCB-TR-0028CX	RW400B PRE-FIRE PLAN - Rev00 - C-QR	2016-11-01	2016-11-18	2017-06-16	2017-07-06	OP	Ops Proc	False	False	True	True	False	False
1008	 VCB-TR-0028CY	RW400B PRE-FIRE PLAN - Rev00 - C-5059	2016-11-01	2016-11-18	2017-06-16	2017-07-06	OP	Ops Proc	False	False	True	True	False	False
1009	 VCB-TR-0028CZ	RW400B PRE-FIRE PLAN - Rev00 - C-Res2	2016-11-21	2016-12-01	2017-07-07	2017-07-13	OP	Ops Proc	False	False	True	False	False	False
1010	 VCB-TR-0029c01	RW400C PRE-FIRE PLAN - Rev00 - Review	2016-11-01	2016-12-01	2017-06-16	2017-07-17	O2	Ops SL	False	False	True	False	False	False
1011	 VCB-TR-0029CX	RW400C PRE-FIRE PLAN - Rev00 - C-QR	2016-11-01	2016-11-18	2017-06-16	2017-07-06	OP	Ops Proc	False	False	True	True	False	False
1012	 VCB-TR-0029CY	RW400C PRE-FIRE PLAN - Rev00 - C-5059	2016-11-01	2016-11-18	2017-06-16	2017-07-06	OP	Ops Proc	False	False	True	True	False	False
1013	 VCB-TR-0029CZ	RW400C PRE-FIRE PLAN - Rev00 - C-Res2	2016-11-21	2016-12-01	2017-07-07	2017-07-13	OP	Ops Proc	False	False	True	False	False	False
1014	 VCB-TR-0030c01	DG400A PRE-FIRE PLAN - Rev00 - Review	2016-11-01	2016-12-01	2017-06-16	2017-07-17	O2	Ops SL	False	False	True	False	False	False
1015	 VCB-TR-0030CX	DG400A PRE-FIRE PLAN - Rev00 - C-QR	2016-11-01	2016-11-18	2017-06-16	2017-07-06	OP	Ops Proc	False	False	True	True	False	False
1016	 VCB-TR-0030CY	DG400A PRE-FIRE PLAN - Rev00 - C-5059	2016-11-01	2016-11-18	2017-06-16	2017-07-06	OP	Ops Proc	False	False	True	True	False	False
1017	 VCB-TR-0030CZ	DG400A PRE-FIRE PLAN - Rev00 - C-Res2	2016-11-21	2016-12-01	2017-07-07	2017-07-13	OP	Ops Proc	False	False	True	False	False	False
1018	 VCB-TR-0031c01	DG400B PRE-FIRE PLAN - Rev00 - Review	2016-11-01	2016-12-01	2017-06-16	2017-07-17	O2	Ops SL	False	False	True	False	False	False
1019	 VCB-TR-0031CX	DG400B PRE-FIRE PLAN - Rev00 - C-QR	2016-11-01	2016-11-18	2017-06-16	2017-07-06	OP	Ops Proc	False	False	True	True	False	False
1020	 VCB-TR-0031CY	DG400B PRE-FIRE PLAN - Rev00 - C-5059	2016-11-01	2016-11-18	2017-06-16	2017-07-06	OP	Ops Proc	False	False	True	True	False	False
1021	 VCB-TR-0031CZ	DG400B PRE-FIRE PLAN - Rev00 - C-Res2	2016-11-21	2016-12-01	2017-07-07	2017-07-13	OP	Ops Proc	False	False	True	False	False	False
1022	 VCB-TR-0033b	AN400/407-2A PRE-FIRE PLAN - Rev00 - Draft	2016-11-08	2016-11-30	2017-06-01	2017-06-21	OP	Ops Proc	False	False	True	True	False	False
1023	 VCB-TR-0034b	AN400/407-2B PRE-FIRE PLAN - Rev00 - Draft	2016-11-08	2016-11-30	2017-06-01	2017-06-21	OP	Ops Proc	False	False	True	True	False	False
1024	 VCB-TR-0035b	AN400/407-2C PRE-FIRE PLAN - Rev00 - Draft	2016-11-08	2016-11-30	2017-06-01	2017-06-21	OP	Ops Proc	False	False	True	True	False	False
1025	 VCB-TR-0036b	AN400/407-2D PRE-FIRE PLAN - Rev00 - Draft	2016-11-08	2016-11-30	2017-06-01	2017-06-21	OP	Ops Proc	False	False	True	True	False	False
1026	 VCB-TR-0037b	AN417-6A PRE-FIRE PLAN - Rev00 - Draft	2016-11-08	2016-11-30	2017-06-01	2017-06-21	OP	Ops Proc	False	False	True	True	False	False
1027	 VCB-TR-0041b	AN435-3A PRE-FIRE PLAN - Rev00 - Draft	2016-11-08	2016-11-30	2017-06-01	2017-06-21	OP	Ops Proc	False	False	True	True	False	False
1028	 VCB-TR-0042b	AN435-3B PRE-FIRE PLAN - Rev00 - Draft	2016-11-08	2016-11-30	2017-06-01	2017-06-21	OP	Ops Proc	False	False	True	True	False	False
1029	 VCB-TR-0045c01	RB382-6 PRE-FIRE PLAN - Rev00 - Review	2016-11-01	2016-12-01	2017-06-16	2017-07-17	O2	Ops SL	False	False	True	False	False	False
1030	 VCB-TR-0045CX	RB382-6 PRE-FIRE PLAN - Rev00 - C-QR	2016-11-01	2016-11-18	2017-06-16	2017-07-06	OP	Ops Proc	False	False	True	True	False	False
1031	 VCB-TR-0045CY	RB382-6 PRE-FIRE PLAN - Rev00 - C-5059	2016-11-01	2016-11-18	2017-06-16	2017-07-06	OP	Ops Proc	False	False	True	True	False	False
1032	 VCB-TR-0045CZ	RB382-6 PRE-FIRE PLAN - Rev00 - C-Res2	2016-11-21	2016-12-01	2017-07-07	2017-07-13	OP	Ops Proc	False	False	True	False	False	False
1033	 VCB-TR-0046c01	RB396-6 PRE-FIRE PLAN - Rev00 - Review	2016-11-01	2016-12-01	2017-06-16	2017-07-17	O2	Ops SL	False	False	True	False	False	False
1034	 VCB-TR-0046CX	RB396-6 PRE-FIRE PLAN - Rev00 - C-QR	2016-11-01	2016-11-18	2017-06-16	2017-07-06	OP	Ops Proc	False	False	True	True	False	False
1035	 VCB-TR-0046CY	RB396-6 PRE-FIRE PLAN - Rev00 - C-5059	2016-11-01	2016-11-18	2017-06-16	2017-07-06	OP	Ops Proc	False	False	True	True	False	False
1036	 VCB-TR-0046CZ	RB396-6 PRE-FIRE PLAN - Rev00 - C-Res2	2016-11-21	2016-12-01	2017-07-07	2017-07-13	OP	Ops Proc	False	False	True	False	False	False
1037	 VCB-TR-0054b	TB400D PRE-FIRE PLAN - Rev00 - Draft	2016-11-08	2016-11-30	2017-06-01	2017-06-21	OP	Ops Proc	False	False	True	True	False	False
1038	 VCB-TR-0055b	TB417-6A PRE-FIRE PLAN - Rev00 - Draft	2016-11-08	2016-11-30	2017-06-01	2017-06-21	OP	Ops Proc	False	False	True	True	False	False
1039	 VCB-TR-0057b	TB417-6C PRE-FIRE PLAN - Rev00 - Draft	2016-11-08	2016-11-30	2017-06-01	2017-06-21	OP	Ops Proc	False	False	True	True	False	False
1040	 VCB-TR-0058b	TB417-6D PRE-FIRE PLAN - Rev00 - Draft	2016-11-08	2016-11-30	2017-06-01	2017-06-21	OP	Ops Proc	False	False	True	True	False	False
1041	 VCB-TR-0063b	TB435-3E PRE-FIRE PLAN - Rev00 - Draft	2016-11-08	2016-11-30	2017-06-01	2017-06-21	OP	Ops Proc	False	False	True	True	False	False
1042	 VCB-TR-0066b	TB545/526-10 PRE-FIRE PLAN - Rev00 - Draft	2016-11-08	2016-11-30	2017-06-01	2017-06-21	OP	Ops Proc	False	False	True	True	False	False
1043	 VCB-TR-0073b	CWS INTAKE STRUCTURE SERVICE BUILDINGS PRE-FIRE PLAN - Rev00 - Draft	2016-11-08	2016-11-30	2017-06-01	2017-06-21	OP	Ops Proc	False	False	True	True	False	False
1044	 VCB-TR-0076b	H2 STORAGE TANK AREA PRE-FIRE PLAN - Rev00 - Draft	2016-11-08	2016-11-30	2017-06-01	2017-06-21	OP	Ops Proc	False	False	True	True	False	False
1045	 VCB-TR-0078b	Warehouse 68 Pre-Fire Plan - Rev00 - Draft	2016-11-08	2016-11-30	2017-06-01	2017-06-21	OP	Ops Proc	False	False	True	True	False	False
1046	 VCB-TR-0079b	Warehouse 20A Pre-Fire Plan - Rev00 - Draft	2016-11-08	2016-11-30	2017-06-01	2017-06-21	OP	Ops Proc	False	False	True	True	False	False
1047	 VCB-TR-0080b	Warehouse 20B Pre-Fire Plan - Rev00 - Draft	2016-11-08	2016-11-30	2017-06-01	2017-06-21	OP	Ops Proc	False	False	True	True	False	False
1048	 VCB-TR-0081b	Warehouse 57 Pre-Fire Plan - Rev00 - Draft	2016-11-08	2016-11-30	2017-06-01	2017-06-21	OP	Ops Proc	False	False	True	True	False	False
1049	 VCB-TR-0085b	LOLA Pre-Plan PRE-FIRE PLAN - Rev00 - Draft	2016-11-08	2016-11-30	2017-06-01	2017-06-21	OP	Ops Proc	False	False	True	True	False	False
1050	 VCB-TR-0086b	Personnel Entry Building Pre-Fire Plan - Rev00 - Draft	2016-11-08	2016-11-30	2017-06-01	2017-06-21	OP	Ops Proc	False	False	True	True	False	False
1051	 VCB-WM-0100c01	WELDING PROCEDURE MANUAL - Rev00 - Review	2016-10-24	2016-11-21	2016-10-24	2016-11-21	MMP	Mech proc	False	True	False	False	False	True
1052	 VCB-WM-0100CW	WELDING PROCEDURE MANUAL - Rev00 - C-Res1	2016-11-22	2016-12-02	2016-11-22	2016-12-02	MMP	Mech proc	True	False	False	False	True	False
1053	 VCB-WM-0101c01	WELDING, BRAZING PERFORMANCE QUALIFICATION - Rev00 - Review	2016-10-12	2016-11-09	2016-10-12	2016-11-09	MMP	Mech proc	False	True	False	False	False	True
1054	 VCB-WM-0101CW	WELDING, BRAZING PERFORMANCE QUALIFICATION - Rev00 - C-Res1	2016-11-10	2016-11-18	2016-11-10	2016-11-18	MMP	Mech proc	True	True	False	False	True	True
1055	 VCB-WM-0101CX	WELDING, BRAZING PERFORMANCE QUALIFICATION - Rev00 - C-QR	2016-11-21	2016-12-12	2016-11-18	2016-12-09	MMR	Mech supv	True	False	False	False	True	False
1056	 VCB-WM-0101CY	WELDING, BRAZING PERFORMANCE QUALIFICATION - Rev00 - C-5059	2016-11-21	2016-11-21	2016-11-18	2016-11-18	MMR	Mech supv	True	True	False	False	True	True
1057	 VCB-WM-0200c01	WELDING MATERIALS PROCEDURE - Rev00 - Review	2016-10-12	2016-11-09	2016-10-12	2016-11-09	MMP	Mech proc	False	True	False	False	False	True
1058	 VCB-WM-0200CW	WELDING MATERIALS PROCEDURE - Rev00 - C-Res1	2016-11-10	2016-11-18	2016-11-10	2016-11-18	MMP	Mech proc	True	True	False	False	True	True
1059	 VCB-WM-0200CX	WELDING MATERIALS PROCEDURE - Rev00 - C-QR	2016-11-21	2016-12-12	2016-11-18	2016-12-09	MMR	Mech supv	True	False	False	False	True	False
1060	 VCB-WM-0200CY	WELDING MATERIALS PROCEDURE - Rev00 - C-5059	2016-11-21	2016-11-21	2016-11-18	2016-11-18	MMR	Mech supv	True	True	False	False	True	True
1061	 VCB-WM-0300c01	WELDING SAFETY MANUAL - Rev00 - Review	2016-10-12	2016-11-09	2016-10-12	2016-11-09	MMP	Mech proc	False	True	False	False	False	True
1062	 VCB-WM-0300CW	WELDING SAFETY MANUAL - Rev00 - C-Res1	2016-11-10	2016-11-18	2016-11-10	2016-11-18	MMP	Mech proc	True	True	False	False	True	True
1063	 VCB-WM-0300CX	WELDING SAFETY MANUAL - Rev00 - C-QR	2016-11-21	2016-12-12	2016-11-18	2016-12-09	MMR	Mech supv	True	False	False	False	True	False
1064	 VCB-WM-0300CY	WELDING SAFETY MANUAL - Rev00 - C-5059	2016-11-21	2016-11-21	2016-11-18	2016-11-18	MMR	Mech supv	True	True	False	False	True	True
1065	 VCB-WM-0301c01	WELDING MANUAL PROCEDURE SAFETY INERT GAS BACK-PURGING - Rev00 - Review	2016-10-24	2016-11-21	2016-10-24	2016-11-21	MMP	Mech proc	False	True	False	False	False	True
1066	 VCB-WM-0301CW	WELDING MANUAL PROCEDURE SAFETY INERT GAS BACK-PURGING - Rev00 - C-Res1	2016-11-22	2016-12-02	2016-11-22	2016-12-02	MMP	Mech proc	True	False	False	False	True	False
1067	 VCB-WM-0400c01	POST WELD HEAT TREATMENT - Rev00 - Review	2016-10-24	2016-11-21	2016-10-24	2016-11-21	MMP	Mech proc	False	True	False	False	False	True
1068	 VCB-WM-0400CW	POST WELD HEAT TREATMENT - Rev00 - C-Res1	2016-11-22	2016-12-02	2016-11-22	2016-12-02	MMP	Mech proc	True	False	False	False	True	False
1069	 VCB-WM-0500c01	BRAZING PROCEDURE - Rev00 - Review	2016-10-24	2016-11-21	2016-10-24	2016-11-21	MMP	Mech proc	False	True	False	False	False	True
1070	 VCB-WM-0500CW	BRAZING PROCEDURE - Rev00 - C-Res1	2016-11-22	2016-12-02	2016-11-22	2016-12-02	MMP	Mech proc	True	False	False	False	True	False
1071	 VCS-EPAP-0106d	ESD Performance Indicator Procedure - Rev00 - Approval	2016-10-24	2016-11-11	2016-10-24	2016-12-08	EP2	EP	False	False	False	True	False	False
1072	 VCS-EPMP-0103b	Emergency Equipment Checklist - Rev00 - Draft	2016-10-21	2016-11-10	2016-10-21	2016-11-10	EP2	EP	False	True	False	False	False	True
1073	 VCS-EPMP-0103c01	Emergency Equipment Checklist - Rev00 - Review	2016-11-11	2016-12-13	2016-11-28	2016-12-28	EP2	EP	True	False	False	False	True	False
1074	 VCS-EPMP-0104b	Verification of Communications Operability - Rev00 - Draft	2016-10-21	2016-11-10	2016-10-21	2016-12-01	EP2	EP	False	False	False	True	False	False
1075	 VCS-EPMP-0104c01	Verification of Communications Operability - Rev00 - Review	2016-11-11	2016-12-13	2016-12-02	2017-01-04	EP2	EP	False	False	True	False	False	False
1076	 VCS-EPP-0005b	Dose Projections And Calculations - Rev00 - Draft	2016-11-14	2016-11-29	2017-09-18	2017-09-29	EP2	EP	False	False	True	True	False	False
1077	 VCS-EPP-0005c01	Dose Projections And Calculations - Rev00 - Review	2016-11-30	2016-12-30	2017-10-02	2017-10-30	EP2	EP	False	False	True	False	False	False
1078	 VCS-EPP-0006b	Transportation Accidents Involving Radioactive Material - Rev00 - Draft	2016-10-21	2016-11-03	2016-10-21	2017-02-09	EP2	EP	False	False	False	True	False	False
1079	 VCS-EPP-0006c01	Transportation Accidents Involving Radioactive Material - Rev00 - Review	2016-11-04	2016-12-06	2017-02-10	2017-03-10	EP2	EP	False	False	True	False	False	False
1080	 VCS-EPP-0023c01	Technical Support Center - Rev00 - Review	2016-10-26	2016-11-15	2016-10-26	2016-12-08	EP2	EP	False	False	False	True	False	False
1081	 VCS-EPP-0023d	Technical Support Center - Rev00 - Approval	2016-11-29	2016-12-05	2016-12-09	2016-12-15	EP2	EP	False	False	True	False	False	False
1082	 VCS-EPP-0028c01	Operational Support Centers - Units 1, 2, & 3 - Rev00 - Review	2016-10-26	2016-11-16	2016-10-26	2016-12-08	EP2	EP	False	False	False	True	False	False
1083	 VCS-EPP-0028d	Operational Support Centers - Units 1, 2, & 3 - Rev00 - Approval	2016-11-29	2016-12-05	2016-12-09	2016-12-15	EP2	EP	False	False	True	False	False	False
1084	 VCS-EPP-0030d	Remote Technical Support Center - Rev00 - Approval	2016-10-26	2016-11-18	2016-10-26	2016-12-08	EP2	EP	False	False	False	True	False	False
1085	 VCS-EPP-0031ca	Remote Operational Support Center - Rev00 - Approval			2016-11-28	2016-12-05	EP2	EP	False	False	False	False	True	False
1086	 VCS-EPP-0031d	Remote Operational Support Center - Rev00 - Approval	2016-11-28	2016-12-16	2016-12-06	2016-12-28	EP2	EP	False	False	True	False	False	False
1087	 VCS-EPP-0051ca	Emergency Operations Facility - Rev00 - Approval			2016-11-28	2016-12-05	EP2	EP	False	False	False	False	True	False
1088	 VCS-EPP-0051d	Emergency Operations Facility - Rev00 - Approval	2016-11-28	2016-12-16	2016-12-06	2016-12-28	EP2	EP	False	False	True	False	False	False
1089	 VCS-EPP-0105b	Radiological Drills and Exercises - Rev00 - Draft	2016-09-30	2016-11-10	2016-09-30	2016-11-22	EP2	EP	False	True	False	False	False	True
1090	 VCS-EPP-0105c01	Radiological Drills and Exercises - Rev00 - Review	2016-11-11	2016-12-13	2016-11-28	2016-12-28	EP2	EP	True	False	False	False	True	False
1091	 VCS-ERP-0005a	CONFINED SPACE AND TACTICAL RESCUE EMERGENCIES - Rev00 - Preparation	2016-11-01	2016-11-11	2017-03-01	2017-03-13	ERU2	ERU	False	False	True	True	False	False
1092	 VCS-ERP-0005b	CONFINED SPACE AND TACTICAL RESCUE EMERGENCIES - Rev00 - Draft	2016-11-14	2016-12-06	2017-03-14	2017-04-03	ERU2	ERU	False	False	True	False	False	False
1093	 VCS-ES-0324c	ESTABLISHMENT OF SHELF LIFE CRITERIA - Rev00 - Review	2016-11-01	2016-12-01	2016-11-11	2016-11-22	A1	M&P	True	False	False	False	True	True
1094	 VCS-ES-0324cW	ESTABLISHMENT OF SHELF LIFE CRITERIA - Rev00 - C-Res1	2016-12-02	2016-12-12	2016-11-23	2016-12-05	A1	M&P	False	False	False	False	True	False
1095	 VCS-ES-0340d	SAFEGUARD INFORMATION PROTECTION AUDIT AND REPORT PREPARATION - Rev00 - Approval	2016-10-27	2016-11-11	2016-10-27	2016-11-11	A1	M&P	False	True	False	False	False	True
1096	 VCS-ES-0344d	SUPPLIER SURVEILLANCE - Rev00 - Approval	2016-10-27	2016-11-11	2016-10-27	2016-11-11	A1	M&P	False	True	False	False	False	True
1097	 VCS-ES-0346CY	SUPPLIER EVALUATIONS - Rev00 - C-5059	2016-10-19	2016-11-22	2016-10-19	2016-11-22	A1	M&P	False	True	False	False	False	True
1098	 VCS-ES-0346d	SUPPLIER EVALUATIONS - Rev00 - Approval	2016-11-01	2016-11-14	2016-11-11	2016-11-17	A1	M&P	True	True	False	False	True	True
1099	 VCS-ES-0361CZ	RECEIVING INSPECTION - Rev00 - C-Res2	2016-11-01	2016-11-09	2016-11-01	2016-11-09	A1	M&P	True	True	False	False	True	True
1100	 VCS-ES-0361d	RECEIVING INSPECTION - Rev00 - Approval	2016-11-10	2016-11-23	2016-11-09	2016-11-22	A1	M&P	True	True	False	False	True	True
1101	 VCS-ES-0362CZ	RADIOACTIVE MATERIAL SHIPPING INSPECTION - Rev00 - C-Res2	2016-11-01	2016-11-09	2016-11-01	2016-11-09	A1	M&P	True	True	False	False	True	True
1102	 VCS-ES-0362d	RADIOACTIVE MATERIAL SHIPPING INSPECTION - Rev00 - Approval	2016-11-10	2016-11-23	2016-11-10	2016-11-23	A1	M&P	True	True	False	False	True	True
1103	 VCS-ES-0364c01	NONDESTRUCTIVE HARDNESS TESTING OF METALS - Rev00 - Review	2016-08-29	2016-11-04	2016-08-29	2016-11-11	A1	M&P	False	True	False	False	False	True
1104	 VCS-ES-0364CW	NONDESTRUCTIVE HARDNESS TESTING OF METALS - Rev00 - C-Res1	2016-12-06	2016-12-14	2016-11-21	2016-11-23	A1	M&P	False	False	False	False	True	True
1105	 VCS-ES-0364CX	NONDESTRUCTIVE HARDNESS TESTING OF METALS - Rev00 - C-QR	2016-12-15	2017-01-06	2016-11-23	2016-11-25	A1	M&P	False	False	False	False	True	True
1106	 VCS-ES-0364CY	NONDESTRUCTIVE HARDNESS TESTING OF METALS - Rev00 - C-5059	2016-12-15	2017-01-06	2016-11-23	2016-11-25	A1	M&P	False	False	False	False	True	True
1107	 VCS-ES-0364CZ	NONDESTRUCTIVE HARDNESS TESTING OF METALS - Rev00 - C-Res2	2017-01-09	2017-01-17	2016-11-25	2016-11-28	A1	M&P	False	False	False	False	True	True
1108	 VCS-ES-0364d	NONDESTRUCTIVE HARDNESS TESTING OF METALS - Rev00 - Approval	2017-01-18	2017-01-31	2016-11-29	2016-11-30	A1	M&P	False	False	False	False	True	True
1109	 VCS-ES-0365c01	Non-destructive testing of non-metallic materials using REX durometers models 1700 A&D, 1600 type 00 Rev00 - Review	2016-08-29	2016-11-04	2016-08-29	2016-11-11	A1	M&P	False	True	False	False	False	True
1110	 VCS-ES-0365CW	Non-destructive testing of non-metallic materials using REX durometers models 1700 A&D, 1600 type 00 - Rev00 - C-Res1	2016-11-07	2016-11-15	2016-11-11	2016-11-17	A1	M&P	True	True	False	False	True	True
1111	 VCS-ES-0365CX	Non-destructive testing of non-metallic materials using REX durometers models 1700 A&D, 1600 type 00 Rev00 - C-QR	2016-11-16	2016-12-07	2016-11-16	2016-11-17	A1	M&P	True	False	False	False	True	True
1112	 VCS-ES-0365CY	Non-destructive testing of non-metallic materials using REX durometers models 1700 A&D, 1600 type 00 Rev00 - C-5059	2016-11-16	2016-12-07	2016-11-16	2016-11-17	A1	M&P	True	False	False	False	True	True
1113	 VCS-ES-0365CZ	Non-destructive testing of non-metallic materials using REX durometers models 1700 A&D, 1600 type 00 Rev00 - C-Res2	2016-12-08	2016-12-16	2016-11-18	2016-11-23	A1	M&P	False	False	False	False	True	True
1114	 VCS-ES-0365d	Non-destructive testing of non-metallic materials using REX durometers models 1700 A&D, 1600 type 00 Rev00 - Approval	2016-12-19	2017-01-04	2016-11-28	2016-11-28	A1	M&P	False	False	False	False	True	True
1115	 VCS-ES-0366CZ	RECEIVING INSPECTION EQUIPMENT CONTROL - Rev00 - C-Res2	2016-11-01	2016-11-09	2016-11-01	2016-11-09	A1	M&P	True	True	False	False	True	True
1116	 VCS-ES-0366d	RECEIVING INSPECTION EQUIPMENT CONTROL - Rev00 - Approval	2016-11-10	2016-11-23	2016-11-10	2016-11-23	A1	M&P	True	True	False	False	True	True
1117	 VCS-ES-0367CZ	TESTING OF MATERIALS USING THE 910-36 UNIVERSAL TEST MACHINE - Rev00 - C-Res2	2016-11-01	2016-11-09	2016-11-01	2016-11-09	A1	M&P	True	True	False	False	True	True
1118	 VCS-ES-0367d	TESTING OF MATERIALS USING THE 910-36 UNIVERSAL TEST MACHINE - Rev00 - Approval	2016-11-10	2016-11-23	2016-11-10	2016-11-23	A1	M&P	True	True	False	False	True	True
1119	 VCS-ES-0368CZ	REQUEST FOR DISPOSITION - Rev00 - C-Res2	2016-11-01	2016-11-09	2016-11-01	2016-11-09	A1	M&P	True	True	False	False	True	True
1120	 VCS-ES-0368d	REQUEST FOR DISPOSITION - Rev00 - Approval	2016-11-10	2016-11-23	2016-11-10	2016-11-23	A1	M&P	True	True	False	False	True	True
1121	 VCS-ES-0381CZ	MATERIALS MANAGEMENT - Rev00 - C-Res2	2016-11-01	2016-11-09	2016-11-01	2016-11-09	A1	M&P	True	True	False	False	True	True
1122	 VCS-ES-0381d	MATERIALS MANAGEMENT - Rev00 - Approval	2016-11-10	2016-11-23	2016-11-10	2016-11-23	A1	M&P	True	True	False	False	True	True
1123	 VCS-ES-0382CZ	INVENTORY MANAGEMENT - Rev00 - C-Res2	2016-08-25	2016-11-03	2016-08-25	2016-11-03	A1	M&P	False	True	False	False	False	True
1124	 VCS-ES-0382d	INVENTORY MANAGEMENT - Rev00 - Approval	2016-11-04	2016-12-16	2016-11-04	2016-11-30	A1	M&P	True	False	False	False	True	True
1125	 VCS-ES-0385c01	Enhanced Procurement Process - Rev00 - Review	2016-10-10	2016-11-07	2016-10-10	2016-11-14	A1	M&P	False	True	False	False	False	True
1126	 VCS-ES-0385CW	Enhanced Procurement Process - Rev00 - C-Res1	2016-11-08	2016-11-16	2016-11-11	2016-11-17	A1	M&P	True	True	False	False	True	True
1127	 VCS-ES-0385CX	Enhanced Procurement Process - Rev00 - C-QR	2016-11-17	2016-12-08	2016-11-18	2016-12-08	A1	M&P	True	False	False	False	True	False
1128	 VCS-ES-0385CY	Enhanced Procurement Process - Rev00 - C-5059	2016-11-17	2016-12-08	2016-11-18	2016-12-08	A1	M&P	True	False	False	False	True	False
1129	 VCS-FHP-0601cW	REFUELING ORGANIZATION - Rev00 - C-Res1	2016-10-31	2016-11-14	2016-10-31	2016-11-28	E56	Castellino-F&A	False	True	False	False	False	True
1130	 VCS-FHP-0601cX	REFUELING ORGANIZATION - Rev00 - C-QR	2016-11-17	2016-12-08	2016-11-28	2016-12-15	E56	Castellino-F&A	True	False	False	False	True	False
1131	 VCS-FHP-0601cY	REFUELING ORGANIZATION - Rev00 - C-5059	2016-11-17	2016-12-08	2016-11-28	2016-12-15	E56	Castellino-F&A	True	False	False	False	True	False
1132	 VCS-FHP-0602cW	LIMITATIONS AND PRECAUTIONS FOR HANDLING NEW AND PARTIALLY SPENT FUEL ASSEMBLIES - Rev00 - C-Res1	2016-10-31	2016-11-14	2016-10-31	2016-11-28	E56	Castellino-F&A	False	True	False	False	False	True
1133	 VCS-FHP-0602cX	LIMITATIONS AND PRECAUTIONS FOR HANDLING NEW AND PARTIALLY SPENT FUEL ASSEMBLIES - Rev00 - C-QR	2016-11-17	2016-12-08	2016-11-28	2016-12-15	E56	Castellino-F&A	True	False	False	False	True	False
1134	 VCS-FHP-0602cY	LIMITATIONS AND PRECAUTIONS FOR HANDLING NEW AND PARTIALLY SPENT FUEL ASSEMBLIES - Rev00 - C-5059	2016-11-17	2016-12-08	2016-11-28	2016-12-15	E56	Castellino-F&A	True	False	False	False	True	False
1135	 VCS-HPP-0162b	Neutron Exposure Accountability - Rev00 - Draft	2016-10-13	2016-11-23	2016-10-13	2016-11-07	HP	HP	False	True	False	False	False	True
1136	 VCS-HPP-0162c	Neutron Exposure Accountability - Rev00 - Review	2016-11-28	2016-12-28	2016-11-28	2016-11-30	HP	HP	True	False	False	False	True	True
1137	 VCS-HPP-0162cW	Neutron Exposure Accountability - Rev00 - C-Res1	2016-12-29	2017-01-09	2016-11-15	2017-01-09	HP	HP	False	False	False	False	True	False
1138	 VCS-HPP-0241cX	Health Physics Periodic Trend Reports - Rev00 - C-QR	2016-10-26	2016-11-21	2016-10-26	2016-11-07	HP	HP	False	True	False	False	False	True
1139	 VCS-HPP-0241cY	Health Physics Periodic Trend Reports - Rev00 - C-5059	2016-10-25	2016-11-21	2016-10-25	2016-11-07	HP	HP	False	True	False	False	False	True
1140	 VCS-HPP-0241cZ	Health Physics Periodic Trend Reports - Rev00 - C-Res2	2016-11-22	2016-12-02	2016-11-07	2016-12-05	HP	HP	True	False	False	False	True	False
1141	 VCS-HPP-0247b	Administrative Communication Guidelines - Rev00 - Draft	2016-10-13	2016-11-23	2016-10-13	2016-11-10	HP	HP	False	True	False	False	False	True
1142	 VCS-HPP-0247c	Administrative Communication Guidelines - Rev00 - Review	2016-11-28	2016-12-28	2016-11-11	2016-11-15	HP	HP	True	False	False	False	True	True
1143	 VCS-HPP-0247cW	Administrative Communication Guidelines - Rev00 - C-Res1	2016-12-29	2017-01-09	2016-11-15	2016-12-07	HP	HP	False	False	False	False	True	False
1144	 VCS-HPP-0247cX	Administrative Communication Guidelines - Rev00 - C-QR	2017-01-10	2017-01-27	2016-12-01	2016-12-06	HP	HP	False	False	False	False	False	False
1145	 VCS-HPP-0249b	Health Physics Guidelines for Evaluating Operating Experience - Rev00 - Draft	2016-10-17	2016-11-28	2016-10-17	2016-11-01	HP	HP	False	True	False	False	False	True
1146	 VCS-HPP-0249c	Health Physics Guidelines for Evaluating Operating Experience - Rev00 - Review	2016-11-29	2016-12-29	2016-11-01	2016-11-11	HP	HP	True	False	False	False	True	True
1147	 VCS-HPP-0249cW	Health Physics Guidelines for Evaluating Operating Experience - Rev00 - C-Res1	2016-12-30	2017-01-10	2016-11-11	2016-11-16	HP	HP	False	False	False	False	True	True
1148	 VCS-HPP-0249cX	Health Physics Guidelines for Evaluating Operating Experience - Rev00 - C-QR	2017-01-11	2017-01-30	2016-11-11	2016-12-02	HP	HP	False	False	False	False	True	False
1149	 VCS-HPP-0249cY	Health Physics Guidelines for Evaluating Operating Experience - Rev00 - C-5059	2017-01-11	2017-01-30	2016-11-28	2016-12-15	HP	HP	False	False	False	False	True	False
1150	 VCS-HPP-0401.001b	Planning and Maintaining RWPS - Rev00 - Draft	2016-11-01	2016-12-14	2016-11-01	2016-12-14	HP	HP	True	False	False	False	True	False
1151	 VCS-HPP-0401.002b	Creating,Revising and Terminating RWPS Using Sentinel - Rev00 - Draft	2016-11-01	2016-12-14	2016-11-01	2016-12-14	HP	HP	True	False	False	False	True	False
1152	 VCS-HPP-0401.003b	Performing RWP Pre Job Briefings - Rev00 - Draft	2016-11-01	2016-12-14	2016-11-01	2016-12-14	HP	HP	True	False	False	False	True	False
1153	 VCS-HPP-0411b	Monitoring Exposure with Multibadging - Rev00 - Draft	2016-11-01	2016-12-14	2016-11-01	2016-12-14	HP	HP	True	False	False	False	True	False
1154	 VCS-HPP-0415cX	Operation of Trinuke filtration system and the Scavenger SS-100 remote Underwater Cleaning&Insp Vehicle - Rev00 -C-QR	2016-10-20	2016-11-18	2016-11-09	2016-11-15	HP	HP	False	True	False	False	True	True
1155	 VCS-HPP-0415cY	Operation of Trinuke filtration system and the Scavenger SS-100 remote Underwater Cleaning&Insp Vehicle - Rev00 -C-5059	2016-10-20	2016-11-18	2016-11-09	2016-11-15	HP	HP	False	True	False	False	True	True
1156	 VCS-HPP-0415cZ	Operation of Trinuke filtration system and the Scavenger SS-100 remote Underwater Cleaning&Insp Vehicle - Rev00 -C-Res2	2016-11-21	2016-12-01	2016-11-15	2016-12-05	HP	HP	True	False	False	False	True	False
1157	 VCS-HPP-0505b	Issuance and Termination of Personnel Dosimetry - Rev00 - Draft	2016-11-01	2016-12-14	2016-11-01	2016-12-14	HP	HP	True	False	False	False	True	False
1158	 VCS-HPP-0518b	Exposure Documentation Control - Rev00 - Draft	2016-11-01	2016-12-14	2016-11-01	2016-12-14	HP	HP	True	False	False	False	True	False
1159	 VCS-HPP-0633e	Inspection, maintenance and Storage of Respiratory Protective Devices - Rev00 - Validate	2016-10-25	2016-11-21	2016-10-25	2016-11-28	HP	HP	False	True	False	False	False	True
1160	 VCS-HPP-0652e	Respirator Decision Logic - Rev00 - Validate	2016-10-25	2016-11-21	2016-10-25	2016-11-28	HP	HP	False	True	False	False	False	True
1161	 VCS-HPP-0711c	Unconditional release of trash and Scrap Materials - Rev00 - Review	2016-10-18	2016-11-30	2016-11-28	2016-11-30	HP	HP	False	True	False	False	True	True
1162	 VCS-HPP-0924b	Operation and Maintenance of High Pressure SCBA Compressor - Rev00 - Draft	2016-10-14	2016-11-28	2016-10-14	2016-11-15	HP	HP	False	True	False	False	False	True
1163	 VCS-HPP-0924c	Operation and Maintenance of High Pressure SCBA Compressor - Rev00 - Review	2016-11-29	2016-12-29	2016-11-15	2016-11-15	HP	HP	True	False	False	False	True	True
1164	 VCS-HPP-0924cW	Operation and Maintenance of High Pressure SCBA Compressor - Rev00 - C-Res1	2016-12-30	2017-01-10	2016-11-15	2016-12-01	HP	HP	False	False	False	False	True	False
1165	 VCS-HPP-1000b	Conduct of Environmental - Rev00 - Draft	2016-10-17	2016-11-28	2016-10-17	2016-11-28	HP	HP	False	True	False	False	False	True
1166	 VCS-HPP-1000c	Conduct of Environmental - Rev00 - Review	2016-11-29	2016-12-29	2016-11-28	2016-12-28	HP	HP	True	False	False	False	True	False
1167	 VCS-HPP-1011b	Annual Census - Rev00 - Draft	2016-11-01	2016-12-14	2016-11-01	2016-11-04	HP	HP	True	False	False	False	True	True
1168	 VCS-HPP-1011c	Annual Census - Rev00 - Review	2016-12-15	2017-01-17	2016-11-07	2016-11-09	HP	HP	False	False	False	False	True	True
1169	 VCS-HPP-1011cW	Annual Census - Rev00 - C-Res1	2017-01-18	2017-01-26	2016-11-09	2016-11-09	HP	HP	False	False	False	False	True	True
1170	 VCS-HPP-1011cX	Annual Census - Rev00 - C-QR	2017-01-27	2017-02-15	2016-11-09	2016-11-09	HP	HP	False	False	False	False	True	True
1171	 VCS-HPP-1011cY	Annual Census - Rev00 - C-5059	2017-01-27	2017-02-15	2016-11-09	2016-11-09	HP	HP	False	False	False	False	True	True
1172	 VCS-HPP-1011cZ	Annual Census - Rev00 - C-Res2	2017-02-16	2017-02-24	2016-11-09	2016-11-30	HP	HP	False	False	False	False	True	True
1173	 VCS-HPP-1011d	Annual Census - Rev00 - Approval	2017-02-27	2017-03-10	2016-11-11	2016-11-22	HP	HP	False	False	False	False	True	True
1174	 VCS-HPP-1011e	Annual Census - Rev00 - Validate	2017-05-01	2017-05-05	2016-12-01	2016-12-02	HP	HP	False	False	False	False	False	False
1175	 VCS-HPP-1033b	Environmental Tritium Counting and Activity Determination - Rev00 - Draft	2016-11-01	2016-12-14	2016-11-01	2016-12-14	HP	HP	True	False	False	False	True	False
1176	 VCS-ISP-004c	Confined Space Entry - Rev00 - Review	2016-09-01	2016-11-30	2016-09-01	2016-11-30	SA	Safety	False	True	False	False	False	True
1177	 VCS-ISP-008c	Bloodborne Pathogen Exposure Control Plan - Rev00 - Review	2016-09-01	2016-11-02	2017-05-01	2017-05-30	SA	Safety	False	False	False	True	False	False
1178	 VCS-ISP-008cW	Bloodborne Pathogen Exposure Control Plan - Rev00 - C-Res1	2016-11-03	2016-11-11	2017-05-31	2017-06-08	SA	Safety	False	False	True	True	False	False
1179	 VCS-ISP-008cX	Bloodborne Pathogen Exposure Control Plan - Rev00 - C-QR	2016-11-14	2016-12-05	2017-06-09	2017-06-28	SA	Safety	False	False	True	False	False	False
1180	 VCS-ISP-008cY	Bloodborne Pathogen Exposure Control Plan - Rev00 - C-5059	2016-11-14	2016-12-05	2017-06-09	2017-06-28	SA	Safety	False	False	True	False	False	False
1181	 VCS-ISP-028cX	Confined Space Monitor Calibration and Testing - Rev00 - C-QR	2016-10-20	2016-11-11	2016-11-07	2016-11-11	SA	Safety	False	True	False	False	True	True
1182	 VCS-ISP-028cY	Confined Space Monitor Calibration and Testing - Rev00 - C-5059	2016-10-20	2016-11-09	2016-10-20	2016-11-07	SA	Safety	False	True	False	False	False	True
1183	 VCS-ISP-028cZ	Confined Space Monitor Calibration and Testing - Rev00 - C-Res2	2016-11-14	2016-11-22	2016-11-11	2016-11-14	SA	Safety	True	True	False	False	True	True
1184	 VCS-ISP-028d	Confined Space Monitor Calibration and Testing - Rev00 - Approval	2016-11-23	2016-12-08	2016-11-15	2016-12-13	SA	Safety	True	False	False	False	True	False
1185	 VCS-ISP-029cX	Competent Person Designation and Approval Process - Rev00 - C-QR	2016-10-25	2016-11-21	2016-10-25	2016-11-17	SA	Safety	False	True	False	False	False	True
1186	 VCS-ISP-029cY	Competent Person Designation and Approval Process - Rev00 - C-5059	2016-10-25	2016-11-21	2016-10-25	2016-11-17	SA	Safety	False	True	False	False	False	True
1187	 VCS-ISP-029cZ	Competent Person Designation and Approval Process - Rev00 - C-Res2	2016-11-22	2016-12-12	2016-11-17	2016-12-07	SA	Safety	True	False	False	False	True	False
1188	 VCS-NL-121c01	REGULATORY COMMITMENT MANAGEMENT - Rev00 - Review	2016-11-01	2016-12-01	2016-11-30	2016-12-30	NL06	NL-Barwick	True	False	False	False	True	False
1189	 VCS-PRA-0001a	PRA - Fault Tree Analysis - Rev00 - Preparation	2016-11-01	2016-11-07	2016-10-31	2016-11-02	E67	Sajjad-PRA	False	True	True	False	False	True
1190	 VCS-PRA-0001b	PRA - Fault Tree Analysis - Rev00 - Draft	2016-11-08	2016-11-30	2016-11-11	2016-11-14	E67	Sajjad-PRA	True	True	False	False	True	True
1191	 VCS-PRA-0002a	PRA - Event Tree Analysis - Rev00 - Preparation	2016-11-08	2016-11-14	2016-11-11	2016-11-11	E67	Sajjad-PRA	True	True	False	False	True	True
1192	 VCS-PRA-0002b	PRA - Event Tree Analysis - Rev00 - Draft	2016-11-15	2016-12-07	2016-11-14	2016-11-14	E67	Sajjad-PRA	True	False	False	False	True	True
1193	 VCS-PRA-0003a	PRA - Quantification - Rev00 - Preparation	2016-11-15	2016-11-21	2016-11-21	2016-11-22	E67	Sajjad-PRA	True	True	False	False	True	True
1194	 VCS-PRA-0003b	PRA - Quantification - Rev00 - Draft	2016-11-22	2016-12-14	2017-05-01	2017-05-19	E67	Sajjad-PRA	False	False	True	False	False	False
1195	 VCS-PRA-0005a	PRA - Data Updates With Emphasis on Bayesian Updating - Rev00 - Preparation	2016-11-28	2016-12-02	2016-11-28	2016-12-02	E65	Tampas-PRA	True	False	False	False	True	False
1196	 VCS-PRA-0008a	PRA - Model Updates - Rev00 - Preparation	2016-11-08	2016-11-14	2016-11-21	2016-11-21	E65	Tampas-PRA	True	True	False	False	True	True
1197	 VCS-PRA-0008b	PRA - Model Updates - Rev00 - Draft	2016-11-15	2016-12-07	2017-05-01	2017-05-19	E65	Tampas-PRA	False	False	True	False	False	False
1198	 VCS-PRA-0009a	PRA - SeIect Tasks - Rev00 - Preparation	2016-11-21	2016-11-29	2016-11-15	2016-11-17	E66	Vickery-PRA	True	True	False	False	True	True
1199	 VCS-PRA-0009b	PRA - SeIect Tasks - Rev00 - Draft	2016-11-30	2016-12-20	2017-05-01	2017-05-19	E66	Vickery-PRA	False	False	True	False	False	False
1200	 VCS-PRA-0017a	PROBABILISTIC RISK ASSESSMENT ACTIVITIES - Rev00 - Preparation	2016-11-15	2016-11-21	2016-11-21	2016-11-21	E65	Tampas-PRA	True	True	False	False	True	True
1201	 VCS-PRA-0017b	PROBABILISTIC RISK ASSESSMENT ACTIVITIES - Rev00 - Draft	2016-11-22	2016-12-14	2017-05-01	2017-05-19	E65	Tampas-PRA	False	False	True	False	False	False
1202	 VCS-QSG-011b	Employee Concern Program Process - Rev00 - Draft	2016-10-21	2016-11-17	2016-10-21	2016-11-29	QA	Quality Assurance	False	True	False	False	False	True
1203	 VCS-QSG-011c01	Employee Concern Program Process - Rev00 - Review	2016-11-18	2016-12-20	2016-11-29	2017-01-05	QA	Quality Assurance	True	False	False	False	True	False
1204	 VCS-QSG-012CW	Collegial Review Process - Rev00 - C-Res1	2016-10-25	2016-11-02	2016-10-25	2016-11-29	QA	Quality Assurance	False	True	False	False	False	True
1205	 VCS-QSG-012CX	Collegial Review Process - Rev00 - C-QR	2016-11-03	2016-11-22	2016-11-30	2016-12-19	QA	Quality Assurance	True	False	False	True	True	False
1206	 VCS-QSG-012CY	Collegial Review Process - Rev00 - C-5059	2016-11-03	2016-11-22	2016-11-30	2016-12-19	QA	Quality Assurance	True	False	False	True	True	False
1207	 VCS-QSG-012CZ	Collegial Review Process - Rev00 - C-Res2	2016-11-23	2016-12-05	2016-11-30	2016-12-30	QA	Quality Assurance	True	False	False	False	True	False
1208	 VCS-QSG-013b	Audit Vulnerability Review Process - Rev00 - Draft	2016-10-21	2016-11-17	2016-10-21	2016-11-30	QA	Quality Assurance	False	True	False	False	False	True
1209	 VCS-QSG-013c01	Audit Vulnerability Review Process - Rev00 - Review	2016-11-18	2016-12-20	2016-11-30	2017-01-05	QA	Quality Assurance	True	False	False	False	True	False
1210	 VCS-QSG-014b	In-Processing of Supplemental Personnel - Rev00 - Draft	2016-10-21	2016-11-17	2016-10-21	2016-11-30	QA	Quality Assurance	False	True	False	False	False	True
1211	 VCS-QSG-014c01	In-Processing of Supplemental Personnel - Rev00 - Review	2016-11-18	2016-12-20	2016-11-30	2017-01-05	QA	Quality Assurance	True	False	False	False	True	False
1212	 VCS-QSG-015b	Audit Checklist Development - Rev00 - Draft	2016-10-21	2016-11-17	2016-10-21	2016-11-28	QA	Quality Assurance	False	True	False	False	False	True
1213	 VCS-QSG-015c01	Audit Checklist Development - Rev00 - Review	2016-11-18	2016-12-20	2016-11-29	2017-01-05	QA	Quality Assurance	True	False	False	False	True	False
1214	 VCS-QSG-028b	Duty QC Responsibilities - Rev00 - Draft	2016-11-30	2016-12-07	2016-11-18	2016-12-02	QC	Quality Control	True	False	False	False	True	False
1215	 VCS-QSG-031b	Assessor Orientation - Rev00 - Draft	2016-11-01	2016-11-14	2016-11-28	2016-11-30	QA	Quality Assurance	True	True	False	False	True	True
1216	 VCS-QSG-031c01	Assessor Orientation - Rev00 - Review	2016-11-15	2016-12-15	2016-11-29	2017-01-12	QA	Quality Assurance	True	False	False	False	True	False
1217	 VCS-QSP-005CW	Release to Work - Rev00 - C-Res1	2016-10-26	2016-11-03	2016-10-26	2016-11-29	QA	Quality Assurance	False	True	False	False	False	True
1218	 VCS-QSP-005CX	Release to Work - Rev00 - C-QR	2016-11-04	2016-11-23	2016-11-29	2016-12-20	QA	Quality Assurance	True	False	False	True	True	False
1219	 VCS-QSP-005CY	Release to Work - Rev00 - C-5059	2016-11-04	2016-11-23	2016-11-29	2016-12-20	QA	Quality Assurance	True	False	False	True	True	False
1220	 VCS-QSP-005CZ	Release to Work - Rev00 - C-Res2	2016-11-28	2016-12-06	2016-11-30	2017-01-03	QA	Quality Assurance	True	False	False	False	True	False
1221	 VCS-QSP-101CW	Stop Work - Rev00 - C-Res1	2016-10-25	2016-11-02	2016-10-25	2016-11-29	QA	Quality Assurance	False	True	False	False	False	True
1222	 VCS-QSP-101CX	Stop Work - Rev00 - C-QR	2016-11-03	2016-11-22	2016-11-30	2016-12-19	QA	Quality Assurance	True	False	False	True	True	False
1223	 VCS-QSP-101CY	Stop Work - Rev00 - C-5059	2016-11-03	2016-11-22	2016-11-30	2016-12-19	QA	Quality Assurance	True	False	False	True	True	False
1224	 VCS-QSP-101CZ	Stop Work - Rev00 - C-Res2	2016-11-23	2016-12-05	2016-11-30	2016-12-06	QA	Quality Assurance	True	False	False	False	True	False
1225	 VCS-QSP-204b	Quality Control Inspection - Rev00 - Draft	2016-09-16	2016-11-21	2016-09-16	2016-12-19	QC	Quality Control	False	False	False	True	False	False
1226	 VCS-QSP-204c01	Quality Control Inspection - Rev00 - Review	2016-11-22	2016-12-22	2016-12-20	2017-01-20	QC	Quality Control	False	False	True	False	False	False
1227	 VCS-QSP-207b	Equipment Control - Rev00 - Draft	2016-10-31	2016-11-29	2016-10-31	2016-12-22	QC	Quality Control	False	False	False	True	False	False
1228	 VCS-QSP-207c01	Equipment Control - Rev00 - Review	2016-11-30	2016-12-30	2016-12-27	2017-01-25	QC	Quality Control	False	False	True	False	False	False
1229	 VCS-QSP-212b	Guidelines For ASME Part And Component Replacement - Rev00 - Draft	2016-09-07	2016-11-11	2016-09-07	2016-12-08	QC	Quality Control	False	False	False	True	False	False
1230	 VCs-QSP-212c01	Guidelines For ASME Part And Component Replacement - Rev00 - Review	2016-11-14	2016-12-14	2016-12-09	2017-01-11	QC	Quality Control	False	False	True	False	False	False
1231	 VCS-QSP-214b	Guidelines For ASME Activities - Rev00 - Draft	2016-10-21	2016-11-16	2016-10-21	2016-12-16	QC	Quality Control	False	False	False	True	False	False
1232	 VCS-QSP-214c01	Guidelines For ASME Activities - Rev00 - Review	2016-11-17	2016-12-19	2016-12-19	2017-01-19	QC	Quality Control	False	False	True	False	False	False
1233	 VCS-QSP-215c01	Quality Control Observation Of Station Activities - Rev00 - Review	2016-08-31	2016-11-11	2016-12-09	2017-01-06	QC	Quality Control	False	False	False	True	False	False
1234	 VCS-QSP-215CW	Quality Control Observation Of Station Activities - Rev00 - C-Res1	2016-11-14	2016-11-15	2017-01-09	2017-01-10	QC	Quality Control	False	False	True	True	False	False
1235	 VCS-QSP-215CX	Quality Control Observation Of Station Activities - Rev00 - C-QR	2016-11-16	2016-11-18	2017-01-11	2017-01-13	QC	Quality Control	False	False	True	True	False	False
1236	 VCS-QSP-215CY	Quality Control Observation Of Station Activities - Rev00 - C-5059	2016-11-16	2016-11-16	2017-01-11	2017-01-11	QC	Quality Control	False	False	True	True	False	False
1237	 VCS-QSP-215CZ	Quality Control Observation Of Station Activities - Rev00 - C-Res2	2016-11-21	2016-11-22	2017-01-16	2017-01-17	QC	Quality Control	False	False	True	True	False	False
1238	 VCS-QSP-215d	Quality Control Observation Of Station Activities - Rev00 - Approval	2016-11-23	2016-11-23	2017-01-18	2017-01-18	QC	Quality Control	False	False	True	True	False	False
1239	 VCS-QSP-217b	Thermal Data Collection Program - Rev00 - Draft	2016-11-17	2016-12-13	2017-06-21	2017-07-17	QC	Quality Control	False	False	True	False	False	False
1240	 VCS-QSP-501b	Solvent Removable Liquid Penetrant - Rev00 - Draft	2016-09-02	2016-11-11	2016-09-02	2016-12-13	QC	Quality Control	False	False	False	True	False	False
1241	 VCS-QSP-501c01	Solvent Removable Liquid Penetrant - Rev00 - Review	2016-11-14	2016-12-14	2016-12-14	2017-01-16	QC	Quality Control	False	False	True	False	False	False
1242	 VCS-QSP-502b	Water Washable Or Post Emulsifiable Liquid Penetrant - Rev00 - Draft	2016-10-31	2016-11-22	2016-10-31	2016-12-19	QC	Quality Control	False	False	False	True	False	False
1243	 VCS-QSP-502c01	Water Washable Or Post Emulsifiable Liquid Penetrant - Rev00 - Review	2016-11-23	2016-12-27	2016-12-20	2017-01-20	QC	Quality Control	False	False	True	False	False	False
1244	 VCS-QSP-503b	High Temperature Liquid Penetrant Examination - Rev00 - Draft	2016-11-23	2016-12-19	2016-12-20	2017-01-16	QC	Quality Control	False	False	True	False	False	False
1245	 VCS-QSP-514c01	Qualification Of Welders And Welding Programs - Rev00 - Review	2016-08-31	2016-11-11	2016-12-09	2017-01-10	QC	Quality Control	False	False	False	True	False	False
1246	 VCS-QSP-514CW	Qualification Of Welders And Welding Programs - Rev00 - C-Res1	2016-11-14	2016-11-15	2017-01-11	2017-01-12	QC	Quality Control	False	False	True	True	False	False
1247	 VCS-QSP-514CX	Qualification Of Welders And Welding Programs - Rev00 - C-QR	2016-11-16	2016-11-21	2017-01-13	2017-01-18	QC	Quality Control	False	False	True	True	False	False
1248	 VCS-QSP-514CY	Qualification Of Welders And Welding Programs - Rev00 - C-5059	2016-11-16	2016-11-16	2017-01-13	2017-01-13	QC	Quality Control	False	False	True	True	False	False
1249	 VCS-QSP-514CZ	Qualification Of Welders And Welding Programs - Rev00 - C-Res2	2016-11-22	2016-11-23	2017-01-19	2017-01-20	QC	Quality Control	False	False	True	True	False	False
1250	 VCS-QSP-514d	Qualification Of Welders And Welding Programs - Rev00 - Approval	2016-11-28	2016-11-28	2017-01-23	2017-01-23	QC	Quality Control	False	False	True	True	False	False
1251	 VCS-REP-106.010d	REACTOR VESSEL FOREIGN OBJECT SEARCH AND RETRIEVAL - Rev00 - Approval	2016-08-01	2016-11-01	2016-08-01	2017-02-01	E56	Castellino-F&A	False	False	False	True	False	False
1252	 VCS-REP-106.017d	NON-FAILED FUEL SURVEILLANCE AND INSPECTION - Rev00 - Approval	2016-09-21	2016-11-11	2016-09-21	2017-02-01	E56	Castellino-F&A	False	False	False	True	False	False
1253	 VCS-REP-106.018d	FUEL CLADDING CORROSION AND CRUD - Rev00 - Approval	2016-09-21	2016-11-11	2016-09-21	2017-02-01	E56	Castellino-F&A	False	False	False	True	False	False
1254	 VCS-REP-106.019d	GRID TO ROD FRETTING - Rev00 - Approval	2016-09-21	2016-11-11	2016-09-21	2017-02-01	E56	Castellino-F&A	False	False	False	True	False	False
1255	 VCS-REP-106.020d	PELLET-CLADDING INTERACTION - Rev00 - Approval	2016-09-21	2016-11-11	2016-09-21	2017-02-01	E56	Castellino-F&A	False	False	False	True	False	False
1256	 VCS-REP-107.019d	CORE ALIGNMENT VERIFICATION INSPECTION - Rev00 - Approval	2016-07-26	2016-11-01	2016-07-26	2017-02-01	E56	Castellino-F&A	False	False	False	True	False	False
1257	 VCS-SAP-0139c01	DOCUMENT REVIEW AND APPROVAL PROCESS - Rev01 - Review	2016-11-01	2016-12-01	2016-12-01	2017-01-03	DM05	DM Ops	False	False	True	False	False	False
1258	 VCS-SAP-0154c01	FAILED FUEL ACTION PLAN - Rev00 - Review	2016-07-06	2016-11-07	2016-07-06	2016-11-07	E56	Castellino-F&A	False	True	False	False	False	True
1259	 VCS-SAP-0154cW	FAILED FUEL ACTION PLAN - Rev00 - C-Res1	2016-11-08	2016-11-16	2016-11-07	2016-11-08	E56	Castellino-F&A	True	True	False	False	True	True
1260	 VCS-SAP-0154cX	FAILED FUEL ACTION PLAN - Rev00 - C-QR	2016-11-17	2016-12-08	2016-11-08	2016-12-13	E56	Castellino-F&A	True	False	False	False	True	False
1261	 VCS-SAP-0154cY	FAILED FUEL ACTION PLAN - Rev00 - C-5059	2016-11-17	2016-12-08	2016-11-08	2016-12-13	E56	Castellino-F&A	True	False	False	False	True	False
1262	 VCS-SAP-0503a	Reimbursement of Confiscated Personal Clothing - Rev00 - Preparation	2017-07-03	2017-08-08	2016-11-01	2016-11-01	HP	HP	False	False	False	False	True	True
1263	 VCS-SAP-0503b	Reimbursement of Confiscated Personal Clothing - Rev00 - Draft	2017-08-09	2017-09-20	2016-11-02	2016-11-02	HP	HP	False	False	False	False	True	True
1264	 VCS-SAP-0503c	Reimbursement of Confiscated Personal Clothing - Rev00 - Review	2017-09-21	2017-10-19	2016-11-03	2016-11-03	HP	HP	False	False	False	False	True	True
1265	 VCS-SAP-0503cW	Reimbursement of Confiscated Personal Clothing - Rev00 - C-Res1	2017-10-20	2017-10-30	2016-11-04	2016-12-05	HP	HP	False	False	False	False	True	False
1266	 VCS-SAP-1102CX	Statement of Responsibilities and Expectations, Quality Systems - Rev00 - C-QR	2016-11-01	2016-11-18	2016-11-22	2016-11-30	QA	Quality Assurance	True	True	False	False	True	True
1267	 VCS-SAP-1102CY	Statement of Responsibilities and Expectations, Quality Systems - Rev00 - C-5059	2016-11-01	2016-11-18	2016-11-22	2016-12-05	QA	Quality Assurance	True	False	False	True	True	False
1268	 VCS-SAP-1102CZ	Statement of Responsibilities and Expectations, Quality Systems - Rev00 - C-Res2	2016-11-21	2016-12-01	2016-11-28	2016-12-28	QA	Quality Assurance	True	False	False	False	True	False
1269	 VCS-SAP-1162c01	NRC Inspection Preparation and Response - Rev00 - Review	2016-11-03	2016-12-05	2016-11-01	2016-12-09	NL05	NL-Sanders	True	False	False	False	True	False
1270	 VCS-SAP-1292d	NUCLEAR FUEL RELIABILITY PROGRAM - Rev00 - Approval	2016-06-28	2016-11-01	2016-06-28	2017-02-01	E56	Castellino-F&A	False	False	False	True	False	False
1271	 VCS-SAP-1306c01	EMPLOYEE CONCERNS PROGRAM - Rev00 - Review	2016-10-24	2016-11-21	2016-10-24	2016-11-29	QA	Quality Assurance	False	True	False	False	False	True
1272	 VCS-SAP-1306cW	EMPLOYEE CONCERNS PROGRAM - Rev00 - C-Res1	2016-11-22	2016-12-02	2016-11-30	2016-12-08	QA	Quality Assurance	True	False	False	False	True	False
1273	 VCS-SAP-1315d	PROCESS REQUIREMENTS FOR OBTAINING SERVICES - Rev00 - Approval	2016-10-24	2016-11-30	2016-10-24	2016-12-30	A1	M&P	False	False	False	True	False	False
1274	 VCS-SAP-1350a	SAG-01 Self Assessment Guidelines - Rev00 - Preparation	2016-10-20	2016-11-14	2016-10-20	2016-11-21	J1	OD&P	False	True	False	False	False	True
1275	 VCS-SAP-1350Aa	Self Assessment Review Board - Rev00 - Preparation	2016-10-20	2016-11-14	2016-10-20	2016-11-21	J1	OD&P	False	True	False	False	False	True
1276	 VCS-SAP-1350Ab	Self Assessment Review Board- Draft	2016-11-15	2017-01-16	2016-11-22	2017-02-23	J1	OD&P	True	False	False	False	True	False
1277	 VCS-SAP-1350b	SAG-01 Self Assessment Guidelines - Rev00 - Draft	2016-11-15	2016-12-16	2016-11-22	2017-02-23	J1	OD&P	True	False	False	False	True	False
1278	 VCS-SAP-1350Ca	Nuclear Safety Culture Monitoring - Rev00 - Preparation	2016-10-20	2016-11-14	2016-10-20	2016-11-21	J1	OD&P	False	True	False	False	False	True
1279	 VCS-SAP-1350Cb	Nuclear Safety Culture Monitoring - Rev00 - Draft	2016-11-15	2016-12-16	2016-11-22	2017-02-23	J1	OD&P	True	False	False	False	True	False
1280	 VCS-SAP-1352Aa	Station Human Performance Advisory Committee - Rev00 - Preparation	2016-10-20	2016-11-14	2016-10-20	2016-11-21	J1	OD&P	False	True	False	False	False	True
1281	 VCS-SAP-1352Ab	Station Human Performance Advisory Committee - Rev00 - Draft	2016-11-15	2016-12-16	2016-11-22	2017-02-23	J1	OD&P	True	False	False	False	True	False
1282	 VCS-SAP-1353a	Trending and Station Deficiencies - Rev00 - Preparation	2016-10-20	2016-11-03	2016-10-20	2016-11-22	J1	OD&P	False	True	False	False	False	True
1283	 VCS-SAP-1353b	Trending and Station Deficiencies - Rev00 - Draft	2016-11-04	2016-11-28	2016-11-23	2017-02-23	J1	OD&P	True	False	False	True	True	False
1284	 VCS-SAP-1353d	Trending and Station Deficiencies - Rev00 - Approval	2016-11-29	2016-12-19	2017-03-01	2017-03-29	J1	OD&P	False	False	True	False	False	False
1285	 VCS-SAP-1354a	Management, Observation and worker interface - Rev00 - Preparation	2016-10-20	2016-11-03	2016-10-20	2016-11-22	J1	OD&P	False	True	False	False	False	True
1286	 VCS-SAP-1354b	Management, Observation and worker interface - Rev00 - Draft	2016-11-04	2016-11-28	2016-11-23	2017-02-23	J1	OD&P	True	False	False	True	True	False
1287	 VCS-SAP-1354d	Management, Observation and worker interface - Rev00 - Approval	2016-11-29	2016-12-19	2017-03-01	2017-03-29	J1	OD&P	False	False	True	False	False	False
1288	 VCS-SAP-1355a	Benchmarking Process - Rev00 - Preparation	2016-10-20	2016-11-14	2016-10-20	2016-11-21	J1	OD&P	False	True	False	False	False	True
1289	 VCS-SAP-1355b	Benchmarking Process - Rev00 - Draft	2016-11-15	2016-12-16	2016-11-22	2017-02-23	J1	OD&P	True	False	False	False	True	False
1290	 VCS-SAP-1357a	CHANGE MANAGEMENT PROGRAM - Rev00 - Preparation	2016-10-20	2016-11-03	2016-10-20	2016-11-22	J1	OD&P	False	True	False	False	False	True
1291	 VCS-SAP-1357b	CHANGE MANAGEMENT PROGRAM - Rev00 - Draft	2016-11-04	2016-11-28	2016-11-23	2017-02-23	J1	OD&P	True	False	False	True	True	False
1292	 VCS-SAP-1357d	CHANGE MANAGEMENT PROGRAM - Rev00 - Approval	2016-11-29	2016-12-19	2017-03-01	2017-03-29	J1	OD&P	False	False	True	False	False	False
1293	 VCS-SAP-1358a	V.C. Summer Station Performance Improvement Process - Rev00 - Preparation	2016-10-20	2016-11-03	2016-10-20	2016-11-22	J1	OD&P	False	True	False	False	False	True
1294	 VCS-SAP-1358b	V.C. Summer Station Performance Improvement Process - Rev00 - Draft	2016-11-04	2016-11-28	2016-11-23	2017-02-23	J1	OD&P	True	False	False	True	True	False
1295	 VCS-SAP-1358d	V.C. Summer Station Performance Improvement Process - Rev00 - Approval	2016-11-29	2016-12-19	2017-03-01	2017-03-29	J1	OD&P	False	False	True	False	False	False
1296	 VCS-SAP-1359a	Preparation for INPO Plant Evaluations - Rev00 - Preparation	2016-10-20	2016-11-03	2016-10-20	2016-11-22	J1	OD&P	False	True	False	False	False	True
1297	 VCS-SAP-1359b	Preparation for INPO Plant Evaluations - Rev00 - Draft	2016-11-04	2016-11-28	2016-11-23	2017-02-23	J1	OD&P	True	False	False	True	True	False
1298	 VCS-SAP-1359d	Preparation for INPO Plant Evaluations - Rev00 - Approval	2016-11-29	2016-12-19	2017-03-01	2017-03-29	J1	OD&P	False	False	True	False	False	False
1299	 VCS-SAP-1360a	NRC and INPO WANO Performance Indicators - Rev00 - Preparation	2016-10-20	2016-11-03	2016-10-20	2016-11-22	J1	OD&P	False	True	False	False	False	True
1300	 VCS-SAP-1360b	NRC and INPO WANO Performance Indicators - Rev00 - Draft	2016-11-04	2016-11-28	2016-11-23	2017-02-23	J1	OD&P	True	False	False	True	True	False
1301	 VCS-SAP-1360d	NRC and INPO WANO Performance Indicators - Rev00 - Approval	2016-11-29	2016-12-19	2017-03-01	2017-03-29	J1	OD&P	False	False	True	False	False	False
1302	 VCS-SAP-1600cW	Nuclear Safety Review Committee - Rev00 - C-Res1	2016-11-01	2016-11-09	2016-11-28	2016-12-06	QA	Quality Assurance	True	False	False	True	True	False
1303	 VCS-SAP-1600cX	Nuclear Safety Review Committee - Rev00 - C-QR	2016-11-10	2016-12-01	2016-11-29	2016-12-28	QA	Quality Assurance	True	False	False	False	True	False
1304	 VCS-SAP-1600cY	Nuclear Safety Review Committee - Rev00 - C-5059	2016-11-10	2016-12-01	2016-11-29	2016-12-28	QA	Quality Assurance	True	False	False	False	True	False
1305	 VCS-SPP-0006b	RECORDS CONTROL - Rev00 - Draft	2016-10-17	2016-11-07	2016-10-17	2016-11-04	N1	NPS	False	True	False	False	False	True
1306	 VCS-SPP-0006c	RECORDS CONTROL - Rev00 - Review	2016-11-08	2016-12-08	2016-11-11	2016-12-13	N1	NPS	True	False	False	False	True	False
1307	 VCS-SPP-0008b	CONDUCT OF SECURITY MAINTENANCE ACTIVITIES - Rev00 - Draft	2016-11-01	2016-11-14	2017-03-01	2017-03-01	N1	NPS	False	False	True	True	False	False
1308	 VCS-SPP-0008c	CONDUCT OF SECURITY MAINTENANCE ACTIVITIES - Rev00 - Review	2016-11-15	2016-12-15	2017-03-02	2017-03-30	N1	NPS	False	False	True	False	False	False
1309	 VCS-SPP-0012c	10CFR50.54 (P) EVALUATION PROCESS - Rev00 - Review	2016-11-01	2016-12-01	2016-11-07	2016-12-21	N1	NPS	True	False	False	False	True	False
1310	 VCS-SPP-0013b	10CFR73.58 SCREENING AND EVALUATIONS - Rev00 - Draft	2016-10-17	2016-11-07	2016-10-17	2016-10-24	N1	NPS	False	False	False	True	False	False
1311	 VCS-SPP-0013c	10CFR73.58 SCREENING AND EVALUATIONS - Rev00 - Review	2016-11-08	2016-12-08	2016-11-07	2016-12-21	N1	NPS	True	False	False	False	True	False
1312	 VCS-SPP-0014b	CONTROL OF NUCLEAR SECURITY GUIDELINES - Rev00 - Draft	2016-11-01	2016-11-14	2016-11-07	2016-11-08	N1	NPS	True	True	False	False	True	True
1313	 VCS-SPP-0014c	CONTROL OF NUCLEAR SECURITY GUIDELINES - Rev00 - Review	2016-11-15	2016-12-15	2016-11-15	2016-12-15	N1	NPS	True	False	False	False	True	False
1314	 VCS-SPP-0015b	Use of Force - Rev00 - Draft	2016-10-03	2017-01-12	2016-10-03	2016-11-14	N1	NPS	False	False	False	False	False	True
1315	 VCS-SPP-0015c	Use of Force - Rev00 - Review	2017-01-13	2017-02-10	2016-11-15	2016-12-15	N1	NPS	False	False	False	False	True	False
1316	 VCS-SPP-0120b	REPORTING PHYSICAL PROTECTION CORNERSTONE INDICATORS - Rev00 - Draft	2016-10-17	2016-11-07	2016-10-17	2016-11-07	N1	NPS	False	True	False	False	False	True
1317	 VCS-SPP-0120c	REPORTING PHYSICAL PROTECTION CORNERSTONE INDICATORS - Rev00 - Review	2016-11-08	2016-12-08	2016-11-11	2016-12-13	N1	NPS	True	False	False	False	True	False
1318	 VCS-SPP-0122b	SECURITY INTERFACE WITH LOCAL LAW ENFORCEMENT AGENCIES - Rev00 - Draft	2016-10-17	2016-11-07	2016-10-17	2016-11-07	N1	NPS	False	True	False	False	False	True
1319	 VCS-SPP-0122c	SECURITY INTERFACE WITH LOCAL LAW ENFORCEMENT AGENCIES - Rev00 - Review	2016-11-08	2016-12-08	2016-11-11	2016-12-13	N1	NPS	True	False	False	False	True	False
1320	 VCS-SPP-0123b	Collection, evaluation & diissemination of security related operational experience / open source info - Rev00 - Draft	2016-10-17	2016-11-07	2016-10-17	2016-11-07	N1	NPS	False	True	False	False	False	True
1321	 VCS-SPP-0123c	Collection, evaluation & diissemination of security related operational experience / open source info - Rev00 - Review	2016-11-08	2016-12-08	2016-11-07	2016-12-20	N1	NPS	True	False	False	False	True	False
1322	 VCS-SPP-0124b	TARGET SET DEVELOPMENT PROCESS TECHNICAL GUIDELINE - Rev00 - Draft	2016-11-01	2016-11-14	2017-01-31	2017-01-31	N1	NPS	False	False	True	True	False	False
1323	 VCS-SPP-0124c	TARGET SET DEVELOPMENT PROCESS TECHNICAL GUIDELINE - Rev00 - Review	2016-11-15	2016-12-15	2017-02-01	2017-03-01	N1	NPS	False	False	True	False	False	False
1324	 VCS-SPP-0203Aa	OFF SITE MATERIALS SEARCH AND SEAL REQUIREMENTS  - Rev00 - Preparation	2016-11-01	2016-11-07	2016-11-01	2016-11-07	N1	NPS	True	True	False	False	True	True
1325	 VCS-SPP-0203Ab	OFF SITE MATERIALS SEARCH AND SEAL REQUIREMENTS - Rev00 - Draft	2016-11-08	2016-11-21	2016-11-08	2016-11-14	N1	NPS	True	True	False	False	True	True
1326	 VCS-SPP-0203Ac	OFF SITE MATERIALS SEARCH AND SEAL REQUIREMENTS - Rev00 - Review	2016-11-22	2016-12-22	2016-11-15	2016-12-15	N1	NPS	True	False	False	False	True	False
1327	 VCS-SPP-0203c01	PERSONNEL, VEHICLE, AND MATERIALS SEARCH REQUIREMENTS - Rev00 - Review	2016-11-01	2016-12-01	2016-11-11	2016-12-13	N1	NPS	True	False	False	False	True	False
1328	 VCS-SPP-0205c	DUTIES AND RESPONSIBILITIES OF SECURITY FORCE PERSONNEL - Rev00 - Review	2016-11-01	2016-12-01	2016-11-11	2016-12-13	N1	NPS	True	False	False	False	True	False
1329	 VCS-SPP-0208c01	POTENTIAL SABOTAGE TAMPERING AND VANDALISM - Rev00 - Review	2016-11-01	2016-12-01	2016-11-11	2016-12-13	N1	NPS	True	False	False	False	True	False
1330	 VCS-SPP-0210b	SECURITY LOCK AND KEY CONTROL - Rev00 - Draft	2016-10-17	2016-11-07	2016-10-17	2016-11-07	N1	NPS	False	True	False	False	False	True
1331	 VCS-SPP-0210c	SECURITY LOCK AND KEY CONTROL - Rev00 - Review	2016-11-08	2016-12-08	2016-11-11	2016-12-13	N1	NPS	True	False	False	False	True	False
1332	 VCS-SPP-0216a	SECURITY AREA DESIGNATION CHANGE - Rev00 - Preparation	2016-10-17	2016-11-07	2016-10-17	2016-11-09	N1	NPS	False	True	False	False	False	True
1333	 VCS-SPP-0216b	SECURITY AREA DESIGNATION CHANGE - Rev00 - Draft	2016-11-08	2016-11-21	2016-11-07	2016-11-07	N1	NPS	True	True	False	False	True	True
1334	 VCS-SPP-0216c	SECURITY AREA DESIGNATION CHANGE - Rev00 - Review	2016-11-22	2016-12-22	2016-11-11	2016-12-13	N1	NPS	True	False	False	False	True	False
1335	 VCS-SPP-0234c	CONTROLLED USE OF CAMERAS IN THE OWNER CONTROLLED/PROTE AREAS - Rev00 - Review	2016-11-01	2016-12-01	2016-11-07	2016-12-07	N1	NPS	True	False	False	False	True	False
1336	 VCS-SPP-0238c	SECURITY EQUIPMENT ACCOUNTABILITY - Rev00 - Review	2016-11-01	2016-12-01	2016-11-11	2016-12-13	N1	NPS	True	False	False	False	True	False
1337	 VCS-SPP-0239c	FIREARMS CONTROL AND ACCOUNTABILITY - Rev00 - Review	2016-11-01	2016-12-01	2016-11-11	2016-12-13	N1	NPS	True	False	False	False	True	False
1338	 VCS-SPP-0240c	FIREARMS CLEANING, MAINTENANCE, AND REPAIR - Rev00 - Review	2016-11-01	2016-12-01	2016-11-11	2016-12-13	N1	NPS	True	False	False	False	True	False
1339	 VCS-SPP-0242c	NON-LETHAL WEAPONS TESTING, CLEANING, MAINTENANCE, AND REPAIR - Rev00 - Review	2016-11-01	2016-12-01	2016-11-11	2016-12-13	N1	NPS	True	False	False	False	True	False
1340	 VCS-SPP-0300c	SECURITY TRAINING AND QUALIFICATION PROGRAM: TRAINING - Rev00 - Review	2016-11-01	2016-12-01	2016-11-11	2016-12-13	N1	NPS	True	False	False	False	True	False
1341	 VCS-SPP-0301c	SECURITY TRAINING AND QUALIFICATION PROGRAM: QUALIFICATION - Rev00 - Review	2016-11-01	2016-12-01	2016-11-11	2016-12-13	N1	NPS	True	False	False	False	True	False
1342	 VCS-SPP-0302c	SECURITY DRILL AND EXERCISE PROGRAM - Rev00 - Review	2016-11-01	2016-12-01	2016-11-11	2016-12-13	N1	NPS	True	False	False	False	True	False
1343	 VCS-SPP-0303c	SECURITY OJT AND TPE QUALIFICATION AND GUIDANCE - Rev00 - Review	2016-11-01	2016-12-01	2016-11-11	2016-12-13	N1	NPS	True	False	False	False	True	False
1344	 VCS-SPP-0304a	SECURITY COMPOSITE ADVERSARY TEAM  - Rev00 - Preparation	2016-11-01	2016-11-07	2016-11-01	2016-11-02	N1	NPS	True	True	False	False	True	True
1345	 VCS-SPP-0304b	SECURITY COMPOSITE ADVERSARY TEAM - Rev00 - Draft	2016-11-08	2016-11-21	2016-11-03	2016-12-07	N1	NPS	True	False	False	True	True	False
1346	 VCS-SPP-0304c	SECURITY COMPOSITE ADVERSARY TEAM - Rev00 - Review	2016-11-22	2016-12-22	2016-11-15	2016-12-15	N1	NPS	True	False	False	False	True	False
1347	 VCS-TQP-0707b	Engineering Personnel Training Program - Rev01 - Draft	2016-09-09	2016-11-07	2016-09-09	2016-12-07	DM18	Supv Ops Trn	False	False	False	True	False	False
1348	 VCS-TQP-0707c01	Engineering Personnel Training Program - Rev01 - Review	2016-11-08	2016-12-08	2016-12-08	2017-01-10	DM18	Supv Ops Trn	False	False	True	False	False	False
1349	 VISA Rev 2	VISA Updated from Version 1 to Version 2	2016-09-06	2016-11-10	2016-09-06	2017-01-18	PSE05	Simmons	False	False	False	True	False	False
1350	 VS2ITAAC210107iD	U2  - SCE&G Transmit ICN for ITAAC 2.1.01.07.i FHS Fuel Storage Racks_K-eff - Draft and Submit to NRC	2016-11-21	2016-12-20	2017-01-16	2017-01-27	PSEITAAC	ITAAC-PSE	False	False	True	False	False	False
1351	 VS2ITAAC210107iiiD	U2  - SCE&G Transmit ICN for ITAAC 2.1.01.07.iii FHS Fuel Storage Racks_K-eff Seismic - Draft and Submit to NRC	2016-11-21	2016-12-20	2017-01-16	2017-01-27	PSEITAAC	ITAAC-PSE	False	False	True	False	False	False
1352	 VS2ITAAC210107ivD	U2  - SCE&G Transmit ICN for ITAAC 2.1.01.07.iv Fuel Storage Racks_K-eff Dropped - Draft and Submit to NRC	2016-11-21	2016-12-20	2017-01-16	2017-01-27	PSEITAAC	ITAAC-PSE	False	False	True	False	False	False
1353	 VS2ITAAC210208dviiD	U2  - SCE&G Transmit ICN for ITAAC 2.1.02.08d.vii RCS ADS Sparger_Flow Area - Draft and Submit to NRC	2016-12-09	2017-01-10	2016-11-10	2016-11-16	DEITAAC	ITAAC-DE	False	False	False	False	True	True
1354	 VS2ITAAC210309aiD	U2  - SCE&G Transmit ICN for ITAAC 2.1.03.09a.i RXS  Class 1E Equipment_Harsh Environment - Draft and Submit to NRC	2016-11-23	2016-12-22	2017-01-18	2017-01-31	PSEITAAC	ITAAC-PSE	False	False	True	False	False	False
1355	 VS2ITAAC220106diD	U2  - SCE&G Transmit ICN for ITAAC 2.2.01.06d.i CNS  Non-Class 1E Electrical Penetrations_Harsh Environment - Draft and 	2016-11-14	2016-12-13	2017-01-11	2017-01-24	PSEITAAC	ITAAC-PSE	False	False	True	False	False	False
1356	 VS2ITAAC220206aiD	U2  - SCE&G Transmit ICN for ITAAC 2.2.02.06a.i PCS  Class 1E Components_Harsh Environment - Draft and Submit to NRC	2016-11-08	2016-12-07	2017-01-11	2017-01-24	PSEITAAC	ITAAC-PSE	False	False	True	False	False	False
1357	 VS2ITAAC220309cD	U2  - SCE&G Transmit ICN for ITAAC 2.2.03.09c PXS Thermal Lag - Draft and Submit to NRC	2016-11-14	2016-12-13	2017-01-11	2017-01-24	PSEITAAC	ITAAC-PSE	False	False	True	False	False	False
1358	 VS2ITAAC230502iiD	U2  - SCE&G Transmit ICN for ITAAC 2.3.05.02.ii MHS  Seismic Category I Equipment_Design Basis Loads - Draft and Submit 	2016-11-29	2016-12-28	2017-07-12	2017-07-25	PSEITAAC	ITAAC-PSE	False	False	True	False	False	False
1359	 VS2ITAAC230503aiD	U2  - SCE&G Transmit ICN for ITAAC 2.3.05.03a.i MHS Polar Crane is Single Failure Proof - Draft and Submit to NRC	2016-11-29	2016-12-28	2017-06-13	2017-06-26	PSEITAAC	ITAAC-PSE	False	False	True	False	False	False
1360	 VS2ITAAC230503ciD	U2  - SCE&G Transmit ICN for ITAAC 2.3.05.03c.i MHS Equipment Hatch Hoist is Single Failure Proof - Draft and Submit to 	2016-11-29	2016-12-28	2017-06-13	2017-06-26	PSEITAAC	ITAAC-PSE	False	False	True	False	False	False
1361	 VS2ITAAC230503diD	U2  - SCE&G Transmit ICN for ITAAC 2.3.05.03d.i MHS Maintenance Hatch Hoist is Single Failure Proof - Draft and Submit t	2016-11-29	2016-12-28	2017-06-13	2017-06-26	PSEITAAC	ITAAC-PSE	False	False	True	False	False	False
1362	 VS2ITAAC230609aiD	U2  - SCE&G Transmit ICN for ITAAC 2.3.06.09a.i RNS LTOP Relief Valve_Capacity - Draft and Submit to NRC	2016-11-18	2016-12-19	2016-11-01	2016-11-08	DEITAAC	ITAAC-DE	True	False	False	False	True	True
1363	 VS2ITAAC230609aiiD	U2  - SCE&G Transmit ICN for ITAAC 2.3.06.09a.ii RNS LTOP Relief Valve_Set Pressure - Draft and Submit to NRC	2016-11-18	2016-12-19	2016-11-01	2016-11-08	DEITAAC	ITAAC-DE	True	False	False	False	True	True
1364	 VS2ITAAC231102iiiD	U2  - SCE&G Transmit ICN for ITAAC 2.3.11.02.iii WGS  Seismic Cat 1 Eqpmt and Anchorage Bounded - Draft and Submit to NR	2016-11-10	2016-12-09	2017-01-18	2017-01-31	PSEITAAC	ITAAC-PSE	False	False	True	False	False	False
1365	 VS2ITAAC231306aiD	U2  - SCE&G Transmit ICN for ITAAC 2.3.13.06a.i PSS  Class 1E Equipment_Harsh Environment - Draft and Submit to NRC	2016-11-08	2016-12-07	2017-01-11	2017-01-24	PSEITAAC	ITAAC-PSE	False	False	True	False	False	False
1366	 VS2ITAAC250207cD	U2  - SCE&G Transmit ICN for ITAAC 2.5.02.07c PMS Data Communication Does Not Inhibit Safety Function - Draft and Submit	2016-11-30	2016-12-29	2017-01-03	2017-01-16	PSEITAAC	ITAAC-PSE	False	False	True	False	False	False
1367	 VS2ITAAC250207dD	U2  - SCE&G Transmit ICN for ITAAC 2.5.02.07d PMS Control Priority - Draft and Submit to NRC	2016-11-30	2016-12-29	2017-01-03	2017-01-16	PSEITAAC	ITAAC-PSE	False	False	True	False	False	False
1368	 VS2ITAAC250207eD	U2 - SCE&G Transmit ICN for ITAAC 2.5.02.07e PMS Prevention of Credible Faults From Non-Safety Signals - Draft and Submi	2016-11-30	2016-12-29	2016-11-28	2016-11-30	PSEITAAC	ITAAC-PSE	True	False	False	False	True	True
1369	 VS2ITAAC320001bD	U2  - SCE&G Transmit ICN for ITAAC 3.2.00.01b HFE Human Factors Engineering_Design Verification - Draft and Submit to NR	2016-11-30	2016-12-29	2017-01-18	2017-01-31	PSEITAAC	ITAAC-PSE	False	False	True	False	False	False
1370	 VS2ITAAC320001ciiD	U2  - SCE&G Transmit ICN for ITAAC 3.2.00.01c.ii HFE Integrated System Validation_Test Scenarios - Draft and Submit to N	2016-11-21	2016-12-20	2018-04-17	2018-04-30	PSEITAAC	ITAAC-PSE	False	False	True	False	False	False
1371	 VS2ITAAC320008D	U2  - SCE&G Transmit ICN for ITAAC 3.2.00.08 HFE Remote Shutdown Workstation_Achieveable Shutdown - Draft and Submit to 	2016-11-21	2016-12-20	2016-12-07	2016-12-20	PSEITAAC	ITAAC-PSE	False	False	True	False	False	False
1372	 VS3ITAAC210107iD	U3 - SCE&G Transmit ICN for ITAAC 2.1.01.07.i FHS Fuel Storage Racks_K-eff - Draft and Submit to NRC	2016-11-21	2016-12-20	2017-01-16	2017-01-27	PSEITAAC	ITAAC-PSE	False	False	True	False	False	False
1373	 VS3ITAAC210107iiiD	U3 - SCE&G Transmit ICN for ITAAC 2.1.01.07.iii FHS Fuel Storage Racks_K-eff Seismic - Draft and Submit to NRC	2016-11-21	2016-12-20	2017-01-16	2017-01-27	PSEITAAC	ITAAC-PSE	False	False	True	False	False	False
1374	 VS3ITAAC210309aiD	U3 - SCE&G Transmit ICN for ITAAC 2.1.03.09a.i RXS  Class 1E Equipment_Harsh Environment - Draft and Submit to NRC	2016-11-23	2016-12-22	2017-02-03	2017-02-16	PSEITAAC	ITAAC-PSE	False	False	True	False	False	False
1375	 VS3ITAAC220106diD	U3 - SCE&G Transmit ICN for ITAAC 2.2.01.06d.i CNS  Non-Class 1E Electrical Penetrations_Harsh Environment - Draft and S	2016-11-14	2016-12-13	2017-02-03	2017-02-16	PSEITAAC	ITAAC-PSE	False	False	True	False	False	False
1376	 VS3ITAAC220206aiD	U3 - SCE&G Transmit ICN for ITAAC 2.2.02.06a.i PCS  Class 1E Components_Harsh Environment - Draft and Submit to NRC	2016-11-07	2016-11-18	2017-02-03	2017-02-16	PSEITAAC	ITAAC-PSE	False	False	True	True	False	False
1377	 VS3ITAAC220309cD	U3 - SCE&G Transmit ICN for ITAAC 2.2.03.09c PXS Thermal Lag - Draft and Submit to NRC	2016-11-14	2016-12-13	2017-05-30	2017-06-12	PSEITAAC	ITAAC-PSE	False	False	True	False	False	False
1378	 VS3ITAAC230609biD	U3 - SCE&G Transmit ICN for ITAAC 2.3.06.09a.ii RNS LTOP Relief Valve_Set Pressure - Draft and Submit to NRC	2016-11-14	2016-11-29	2016-11-01	2016-11-04	PSEITAAC	ITAAC-PSE	True	True	False	False	True	True
1379	 VS3ITAAC231102iiiD	U3 - SCE&G Transmit ICN for ITAAC 2.3.11.02.iii WGS  Seismic Cat 1 Eqpmt and Anchorage Bounded - Draft and Submit to NRC	2016-11-10	2016-12-09	2017-01-11	2017-01-24	PSEITAAC	ITAAC-PSE	False	False	True	False	False	False
1380	 VS3ITAAC231306aiD	U3 - SCE&G Transmit ICN for ITAAC 2.3.13.06a.i PSS  Class 1E Equipment_Harsh Environment - Draft and Submit to NRC	2016-11-08	2016-12-07	2017-02-03	2017-02-16	PSEITAAC	ITAAC-PSE	False	False	True	False	False	False
1381	 VS3ITAAC320001ciiD	U3 - SCE&G Transmit ICN for ITAAC 3.2.00.01c.ii HFE Integrated System Validation_Test Scenarios - Draft and Submit to NR	2016-11-21	2016-12-20	2018-04-17	2018-04-30	PSEITAAC	ITAAC-PSE	False	False	True	False	False	False
1382	 VS3ITAAC320008D	U3 - SCE&G Transmit ICN for ITAAC 3.2.00.08 HFE Remote Shutdown Workstation_Achieveable Shutdown - Draft and Submit to N	2016-11-21	2016-12-20	2016-12-07	2016-12-20	PSEITAAC	ITAAC-PSE	False	False	True	False	False	False
1383	 VUSFEG1030	SCE&G Initial Review of FEG Mapping	2016-11-09	2016-11-15	2016-11-14	2016-11-18	DM05	DM Ops	True	True	False	False	True	True
1384	 VUSFEG1040	FEG Review Comment Incorporation	2016-11-17	2016-11-23	2016-11-21	2016-11-29	PSE-34	Dao-PSE FEG	True	True	False	False	True	True
1385	 VUSFID130	SCE&G Component Classification	2016-11-10	2016-11-23	2016-11-10	2016-12-15	PSE-36	Yang-PSE ER	True	False	False	True	True	False
1386	 VUSFID147	SCE&G  Review and Resolve Comments for SNC Component Classification	2016-11-28	2016-11-29	2016-12-16	2016-12-19	PSE-36	Yang-PSE ER	False	False	True	True	False	False
1387	 VUSMR1230	SCE&G MR  Expert Panel Review	2016-10-26	2016-11-04	2016-10-26	2016-11-04	PSE-37	Sonnett-PSE PM/MR	False	True	False	False	False	True
1388	 VUSMR1290	SCE&G  MR Expert Panel Meeting	2016-11-07	2016-11-07	2016-12-01	2016-12-01	PSE-37	Sonnett-PSE PM/MR	False	False	True	True	False	False
1389	 VUSMR1330	MR Performance Criteria Expert Panel Comment Resolution	2016-11-15	2016-11-21	2016-12-09	2016-12-15	PSE-37	Sonnett-PSE PM/MR	False	False	True	True	False	False
1390	 VUSSPV1041	SCE&G SPV Identification (Fault Tree Analysis)	2016-11-30	2016-12-13	2016-12-20	2017-01-05	DM05	DM Ops	False	False	True	False	False	False
1391	 WEC Admin V	NRC/NEIL Administrative Requirements for FPP have been Met	2016-11-07	2016-11-07	2016-12-01	2016-12-01	PSE08	Earnest-PSE	False	False	True	True	False	False
1392	 WEC FPP Ready	WEC FPP Ready for NRC Inspection, NEIL Admin Req's Met	2016-11-07	2016-11-07	2016-12-01	2016-12-01	PSE08	Earnest-PSE	False	False	True	True	False	False
1393	 WSSFID115	Load Work-In-Progress Equipment List into Database	2016-11-21	2016-11-21	2016-11-28	2016-11-28	PSE-36	Yang-PSE ER	True	True	False	False	True	True
1394	 ZAS Imp 1	Software Installed and Tested (Perception)	2016-10-03	2016-11-10	2016-10-03	2017-02-23	PSE05	Simmons	False	False	False	True	False	False
1395	 ZBSMR1030	Provide System PRA Data	2016-11-04	2016-11-11	2016-11-28	2016-11-28	E67	Sajjad-PRA	True	True	False	False	True	True
1396	 ZBSMR1220	SCE&G MR Safety Significance Determination	2016-10-31	2016-11-04	2016-11-28	2016-12-01	PSE-37	Sonnett-PSE PM/MR	False	False	False	True	True	False
1397	 ZBSMR1230	SCE&G MR  Expert Panel Review	2016-11-18	2016-11-28	2016-12-08	2016-12-14	PSE-37	Sonnett-PSE PM/MR	False	False	True	True	False	False
1398	 ZBSMR1290	SCE&G  MR Expert Panel Meeting	2016-11-29	2016-11-29	2016-12-15	2016-12-15	PSE-37	Sonnett-PSE PM/MR	False	False	True	True	False	False
1399	 ZBSMR1330	MR Performance Criteria Expert Panel Comment Resolution	2016-11-30	2016-12-06	2016-12-16	2016-12-22	PSE-37	Sonnett-PSE PM/MR	False	False	True	False	False	False
1400	 ZBSMR1420	SCE&G MR Perf. Criteria Development	2016-11-14	2016-11-17	2016-12-02	2016-12-07	PSE-37	Sonnett-PSE PM/MR	False	False	True	True	False	False
1401	 ZRSFEG1010	FEG Data Table and Drawing Development	2016-11-01	2016-11-14	2016-11-01	2016-11-21	PSE-34	Dao-PSE FEG	True	True	False	False	True	True
1402	 ZRSMR1030	Provide System PRA Data	2016-11-02	2016-11-02	2016-11-02	2016-11-02	E67	Sajjad-PRA	True	True	False	False	True	True
1403	 ZRSMR1230	SCE&G MR  Expert Panel Review	2016-10-26	2016-11-07	2016-10-26	2016-11-07	PSE-37	Sonnett-PSE PM/MR	False	True	False	False	False	True
1404	 ZRSMR1290	SCE&G  MR Expert Panel Meeting	2016-11-08	2016-11-08	2016-12-01	2016-12-01	PSE-37	Sonnett-PSE PM/MR	False	False	True	True	False	False
1405	 ZRSMR1330	MR Performance Criteria Expert Panel Comment Resolution	2016-11-09	2016-11-15	2016-12-02	2016-12-08	PSE-37	Sonnett-PSE PM/MR	False	False	True	True	False	False
1406	 ZVSFID147	SCE&G  Review and Resolve Comments for SNC Component Classification	2016-10-21	2016-11-01	2016-10-21	2016-11-01	PSE-36	Yang-PSE ER	False	True	False	False	False	True
1407	 ZVSSPV1040	SCE&G Review of SNC SPV Fault Tree	2016-11-18	2016-11-28	2016-11-18	2016-11-28	PSE-36	Yang-PSE ER	True	True	False	False	True	True
1408	 ZVSSPV1041	SCE&G SPV Identification (Fault Tree Analysis)	2016-11-04	2016-11-17	2016-11-04	2016-11-17	DM05	DM Ops	True	True	False	False	True	True
1409	 ZVSSPV1110	Update Component Classification with New SPV's	2016-11-29	2016-11-30	2016-11-29	2016-11-30	PSE-36	Yang-PSE ER	True	True	False	False	True	True
